# UJD_VN_Project_Schedule

How a schedule from MS Project changed from version to version. A marks actual dates.

## Version 1 (saved 2014-05-31)

| ID | WBS | Task | Duration | Start | Finish | Predecessors | Total float |
| --- | --- | --- | --- | --- | --- | --- | --- |
| 1 | 1 | **UJD_VN** | 78d | 2014-05-12 | 2014-08-27 |  |  |
| 2 | 1.1 | **Initiation** | 15d | 2014-05-12 | 2014-05-30 |  | 0d |
| 3 |  | Develop project Idea | 1d | 2014-05-12 | 2014-05-12 |  |  |
| 4 |  | Prepare project | 0.5d | 2014-05-13 | 2014-05-13 | 3 |  |
| 5 | 1.1.3 | **Develop report no.1: Introduction** | 5d | 2014-05-13 | 2014-05-19 |  |  |
| 6 |  | System feasible study | 1d | 2014-05-13 | 2014-05-13 | 3 |  |
| 7 |  | Define business situation | 1d | 2014-05-13 | 2014-05-13 | 3 |  |
| 8 |  | Define project and system scope | 1d | 2014-05-14 | 2014-05-14 | 6, 7 |  |
| 9 |  | Review & update report no.1 : Draft vesion | 0.5d | 2014-05-15 | 2014-05-15 | 8 |  |
| 10 |  | Submit report no.1 first version | 0.5d | 2014-05-15 | 2014-05-15 | 9 |  |
| 11 |  | Revise after got comments for report no.1 | 1d | 2014-05-16 | 2014-05-16 | 10 |  |
| 12 |  | Submit report no.1 final version | 1d | 2014-05-19 | 2014-05-19 | 11 |  |
| 13 |  | Kick-off meeting | 0.25d | 2014-05-20 | 2014-05-20 | 12 |  |
| 14 |  | Q & A Management | 0.5d | 2014-05-20 | 2014-05-20 | 13 |  |
| 15 | 1.1.6 | **Technologies** | 9d | 2014-05-15 | 2014-05-27 |  |  |
| 16 |  | Research development technology | 2d | 2014-05-15 | 2014-05-16 | 8 |  |
| 17 |  | Install and configuration PHP with Xampp | 0.5d | 2014-05-19 | 2014-05-19 | 16 |  |
| 18 |  | Study Xampp and MYSQL | 6d | 2014-05-19 | 2014-05-27 | 17 |  |
| 19 | 1.1.7 | **Requirements** | 9d | 2014-05-20 | 2014-05-30 |  |  |
| 20 |  | Collect business requirements and processes | 1d | 2014-05-20 | 2014-05-20 | 12 |  |
| 21 |  | Create draft screen prototypes | 6d | 2014-05-21 | 2014-05-28 | 20 |  |
| 22 |  | Complete first screen prototypes | 0d | 2014-05-29 | 2014-05-29 | 21 |  |
| 23 |  | Review and edit sceen prototypes | 2d | 2014-05-29 | 2014-05-30 | 22 |  |
| 24 | 1.1.8 | **Develop Project Plan** | 9d | 2014-05-20 | 2014-05-30 |  |  |
| 25 |  | Develop project definition | 1d | 2014-05-20 | 2014-05-21 | 13 |  |
| 26 |  | Work BreakDown Structure | 0.5d | 2014-05-22 | 2014-05-22 | 25 |  |
| 27 |  | Create project schedule | 1d | 2014-05-23 | 2014-05-23 | 26 |  |
| 28 | 1.1.8.4 | **Develop report no.2: Project management Plan** | 6d | 2014-05-24 | 2014-05-30 |  |  |
| 29 |  | Create Project plan first version | 2d | 2014-05-24 | 2014-05-26 | 27 |  |
| 30 |  | Submit report no.2 first version | 0d | 2014-05-27 | 2014-05-27 | 29 |  |
| 31 |  | Revise after got comments for report no.2 | 2d | 2014-05-28 | 2014-05-29 | 30 |  |
| 32 |  | Submit report no.2 final version | 0d | 2014-05-30 | 2014-05-30 | 31 |  |
| 33 | 1.2 | **Solution** | 22d | 2014-06-02 | 2014-07-01 |  |  |
| 34 | 1.2.1 | **Project Management** | 3d | 2014-06-02 | 2014-06-04 |  |  |
| 35 |  | Refine project plan | 2d | 2014-06-02 | 2014-06-03 | 32 |  |
| 36 | 1.2.2 | **Technologies** | 7d | 2014-06-02 | 2014-06-10 |  |  |
| 37 |  | Design database models | 1d | 2014-06-02 | 2014-06-02 | 32 |  |
| 38 |  | Coding prototypes | 6d | 2014-06-03 | 2014-06-10 | 37 |  |
| 39 | 1.2.3 | **User Requirements Specification** | 5d | 2014-06-02 | 2014-06-06 |  |  |
| 40 |  | Create draft requirements | 2d | 2014-06-02 | 2014-06-03 | 32 |  |
| 41 |  | Complete draft requirements | 0d | 2014-06-04 | 2014-06-04 | 40 |  |
| 42 |  | Develop Use-case model | 1d | 2014-06-04 | 2014-06-04 | 41 |  |
| 43 |  | Develop main functions and processes | 2d | 2014-06-05 | 2014-06-06 | 42 |  |
| 44 | 1.2.4 | **Software Requirements Specification** | 12d | 2014-06-09 | 2014-06-24 |  |  |
| 45 | 1.2.4.1 | **Functional Requirement Specification** | 8d | 2014-06-09 | 2014-06-18 |  |  |
| 46 | 1.2.4.1.1 | **Phase 1** | 6d | 2014-06-09 | 2014-06-14 |  |  |
| 47 |  | Homepage Module | 1d | 2014-06-09 | 2014-06-09 | 39 |  |
| 48 | 1.2.4.1.1.2 | **Admin Module** | 4d | 2014-06-10 | 2014-06-13 |  |  |
| 49 |  | Admin Manage Account Module | 0.5d | 2014-06-10 | 2014-06-10 | 47 |  |
| 50 |  | Member's account management Module | 0.5d | 2014-06-10 | 2014-06-10 | 49 |  |
| 51 |  | Contribute Opinion, Database Management Module | 1d | 2014-06-11 | 2014-06-11 | 50 |  |
| 52 |  | Data Management Module | 1.5d | 2014-06-12 | 2014-06-13 | 51 |  |
| 53 | 1.2.4.1.1.3 | **Search Module** | 3d | 2014-06-10 | 2014-06-12 |  |  |
| 54 |  | Search Sentences Module | 0.5d | 2014-06-10 | 2014-06-10 | 47 |  |
| 55 |  | Search Conversation Module | 0.5d | 2014-06-10 | 2014-06-10 | 54 |  |
| 56 |  | Search Video Module | 0.5d | 2014-06-11 | 2014-06-11 | 55 |  |
| 57 |  | Search Grammar Module | 0.5d | 2014-06-11 | 2014-06-11 | 56 |  |
| 58 |  | Search Specialized Japanese Module | 0.5d | 2014-06-12 | 2014-06-12 | 57 |  |
| 59 |  | Login/Logout Module | 1d | 2014-06-12 | 2014-06-13 | 58 |  |
| 60 |  | Register Account Module | 1d | 2014-06-13 | 2014-06-14 | 59 |  |
| 61 |  | Contribute Opinion, Database Module | 1d | 2014-06-13 | 2014-06-14 | 52 |  |
| 62 | 1.2.4.1.2 | **Phase 2** | 3d | 2014-06-16 | 2014-06-18 |  |  |
| 63 |  | Change Password Module | 1d | 2014-06-16 | 2014-06-16 | 61 |  |
| 64 |  | Forgot Password Module | 0.5d | 2014-06-17 | 2014-06-17 | 63 |  |
| 65 |  | Reading Document Module | 1d | 2014-06-16 | 2014-06-16 | 60 |  |
| 66 |  | Training Listening Module | 0.5d | 2014-06-17 | 2014-06-17 | 65 |  |
| 67 |  | Listening Conversation Module | 0.5d | 2014-06-17 | 2014-06-17 | 66 |  |
| 68 |  | Doing Test Module | 1d | 2014-06-18 | 2014-06-18 | 67 |  |
| 69 | 1.2.4.2 | **Non-functional Requirements Specification** | 4d | 2014-06-19 | 2014-06-24 |  |  |
| 70 |  | Develop User Interface requirements | 1d | 2014-06-19 | 2014-06-19 | 45 |  |

| ID | WBS | Task | Duration | Start | Finish | Predecessors | Total float |
| --- | --- | --- | --- | --- | --- | --- | --- |
| 71 |  | Develop Performance requirements | 1d | 2014-06-20 | 2014-06-20 | 70 |  |
| 72 |  | Submit report no.3 First version | 0d | 2014-06-21 | 2014-06-21 | 71 |  |
| 73 |  | Revise after got comments of Report no.3 | 1d | 2014-06-23 | 2014-06-23 | 72 |  |
| 74 |  | Submit report no.3 final version | 0d | 2014-06-24 | 2014-06-24 | 73 |  |
| 75 | 1.2.5 | **Design** | 17d | 2014-06-09 | 2014-07-01 |  |  |
| 76 |  | Create Design Overview | 1d | 2014-06-09 | 2014-06-09 | 39 |  |
| 77 | 1.2.5.2 | **System Architectural Design** | 4d | 2014-06-09 | 2014-06-12 | 39 |  |
| 78 |  | Define the system structure and collect system features | 1d | 2014-06-09 | 2014-06-09 |  |  |
| 79 |  | Study the common System Architeture | 1d | 2014-06-10 | 2014-06-10 | 78 |  |
| 80 |  | Choice of System Architeture | 0.5d | 2014-06-11 | 2014-06-11 | 79 |  |
| 81 |  | Discussion of Alternative Design | 1d | 2014-06-11 | 2014-06-12 | 80 |  |
| 82 | 1.2.5.3 | **Detailed Design** | 16d | 2014-06-09 | 2014-06-30 |  |  |
| 83 | 1.2.5.3.1 | **Component Diagram** | 3d | 2014-06-09 | 2014-06-11 |  |  |
| 84 |  | Define the component | 1d | 2014-06-09 | 2014-06-09 | 39 |  |
| 85 |  | General component diagram | 0.5d | 2014-06-10 | 2014-06-10 | 84 |  |
| 86 |  | Detail component diagram | 0.5d | 2014-06-10 | 2014-06-10 | 85 |  |
| 87 |  | Detail Database Design | 1d | 2014-06-11 | 2014-06-11 | 86 |  |
| 88 | 1.2.5.3.2 | **User Interface Design** | 14d | 2014-06-11 | 2014-06-30 |  |  |
| 89 | 1.2.5.3.2.1 | **Phase 1** | 8d | 2014-06-11 | 2014-06-20 |  |  |
| 90 |  | Homepage Module | 1d | 2014-06-12 | 2014-06-12 | 87 |  |
| 91 | 1.2.5.3.2.1.2 | **Admin Module** | 4d | 2014-06-13 | 2014-06-18 |  |  |
| 92 |  | Admin Manage Account Module | 1d | 2014-06-13 | 2014-06-13 | 90 |  |
| 93 |  | Member's account management Module | 1d | 2014-06-16 | 2014-06-16 | 92 |  |
| 94 |  | Contribute Opinion, Database Management Module | 1d | 2014-06-17 | 2014-06-17 | 93 |  |
| 95 |  | Data Management Module | 1d | 2014-06-18 | 2014-06-18 | 94 |  |
| 96 | 1.2.5.3.2.1.3 | **Search Module** | 6d | 2014-06-13 | 2014-06-20 |  |  |
| 97 |  | Search Sentences Module | 1d | 2014-06-13 | 2014-06-13 | 90 |  |
| 98 |  | Search Conversation Module | 1d | 2014-06-16 | 2014-06-16 | 97 |  |
| 99 |  | Search Video Module | 1d | 2014-06-17 | 2014-06-17 | 98 |  |
| 100 |  | Search Grammar Module | 1d | 2014-06-18 | 2014-06-18 | 99 |  |
| 101 |  | Search Specialized Japanese Module | 1d | 2014-06-19 | 2014-06-19 | 100 |  |
| 102 |  | Login/Logout Module | 0.5d | 2014-06-20 | 2014-06-20 | 101 |  |
| 103 |  | Register Account Module | 0.5d | 2014-06-20 | 2014-06-20 | 102 |  |
| 104 |  | Contribute Opinion, Database Module | 1d | 2014-06-19 | 2014-06-19 | 95 |  |
| 105 | 1.2.5.3.2.2 | **Phase 2** | 7d | 2014-06-21 | 2014-06-28 |  |  |
| 106 |  | Change Password Module | 0.5d | 2014-06-21 | 2014-06-21 | 104 |  |
| 107 |  | Forgot Password Module | 0.5d | 2014-06-23 | 2014-06-23 | 106 |  |
| 108 |  | Reading Document Module | 1d | 2014-06-23 | 2014-06-23 | 103 |  |
| 109 |  | Training Listening Module | 1d | 2014-06-24 | 2014-06-24 | 108 |  |
| 110 |  | Listening Conversation Module | 1d | 2014-06-25 | 2014-06-25 | 109 |  |
| 111 |  | Doing Test Module | 2d | 2014-06-26 | 2014-06-27 | 110 |  |
| 112 |  | Submit report no.4 First version | 0d | 2014-06-28 | 2014-06-28 | 111 |  |
| 113 |  | Review and update comments report #4 | 1d | 2014-06-30 | 2014-06-30 | 112 |  |
| 114 |  | Submit report no.4 final version | 0d | 2014-07-01 | 2014-07-01 | 113 |  |
| 115 | 1.3 | **Construction** | 35d | 2014-07-01 | 2014-08-18 |  |  |
| 116 | 1.3.1 | **Requirements & Design** | 2d | 2014-07-02 | 2014-07-03 |  |  |
| 117 |  | Refine requirement documents | 1d | 2014-07-02 | 2014-07-02 | 33 |  |
| 118 |  | Refine design documents | 0.5d | 2014-07-03 | 2014-07-03 | 117 |  |
| 119 | 1.3.2 | **Coding & Unit Test** | 19d | 2014-07-03 | 2014-07-29 |  |  |
| 120 | 1.3.2.1 | **Phase 1** | 12.5d | 2014-07-03 | 2014-07-21 |  | 0d |
| 121 |  | Homepage Module | 1.5d | 2014-07-03 | 2014-07-04 | 118 |  |
| 122 | 1.3.2.1.2 | **Admin Module** | 10d | 2014-07-05 | 2014-07-17 |  |  |
| 123 |  | Admin Manage Account Module | 2d | 2014-07-05 | 2014-07-07 | 121 |  |
| 124 |  | Member's account management Module | 2d | 2014-07-08 | 2014-07-09 | 123 |  |
| 125 |  | Contribute Opinion, Database Management Module | 1d | 2014-07-10 | 2014-07-10 | 124 |  |
| 126 |  | Data Management Module | 5d | 2014-07-11 | 2014-07-17 | 125 |  |
| 127 | 1.3.2.1.3 | **Search Module** | 9d | 2014-07-05 | 2014-07-16 |  |  |
| 128 |  | Search Sentences Module | 2d | 2014-07-05 | 2014-07-07 | 121 |  |
| 129 |  | Search Conversation Module | 2d | 2014-07-08 | 2014-07-09 | 128 |  |
| 130 |  | Search Video Module | 1d | 2014-07-10 | 2014-07-10 | 129 |  |
| 131 |  | Search Grammar Module | 2d | 2014-07-11 | 2014-07-14 | 130 |  |
| 132 |  | Search Specialized Japanese Module | 2d | 2014-07-15 | 2014-07-16 | 131 |  |
| 133 |  | Login/Logout Module | 1d | 2014-07-18 | 2014-07-18 | 126 |  |
| 134 |  | Register Account Module | 1d | 2014-07-21 | 2014-07-21 | 133 |  |
| 135 |  | Contribute Opinion, Database Module | 2d | 2014-07-17 | 2014-07-18 | 132 |  |
| 136 | 1.3.2.2 | **Phase 2** | 7d | 2014-07-21 | 2014-07-29 |  |  |
| 137 |  | Change Password Module | 1d | 2014-07-22 | 2014-07-22 | 134 |  |
| 138 |  | Forgot Password Module | 1d | 2014-07-23 | 2014-07-23 | 137 |  |
| 139 |  | Reading Document Module | 2d | 2014-07-21 | 2014-07-22 | 135 |  |
| 140 |  | Training Listening Module | 1d | 2014-07-23 | 2014-07-23 | 139 |  |

| ID | WBS | Task | Duration | Start | Finish | Predecessors |
| --- | --- | --- | --- | --- | --- | --- |
| 141 |  | Listening Conversation Module | 1d | 2014-07-24 | 2014-07-24 | 140 |
| 142 |  | Doing Test Module | 3d | 2014-07-25 | 2014-07-29 | 141 |
| 143 | 1.3.3 | **Testing** | 45d | 2014-06-16 | 2014-08-15 |  |
| 144 | 1.3.3.1 | **Create test documents (Report 5)** | 26d | 2014-06-16 | 2014-07-19 |  |
| 145 |  | Create test plan | 6d | 2014-06-16 | 2014-06-23 | 46 |
| 146 |  | Review and update Test Plan | 1d | 2014-06-24 | 2014-06-24 | 145 |
| 147 | 1.3.3.1.3 | **Create test cases** | 13d | 2014-06-25 | 2014-07-11 |  |
| 148 |  | Create Unit Test Case | 7d | 2014-06-25 | 2014-07-03 | 146 |
| 149 |  | Create Integration Test Case | 2d | 2014-07-04 | 2014-07-07 | 148 |
| 150 |  | Create System Test Case | 1d | 2014-07-08 | 2014-07-08 | 149 |
| 151 |  | Create test checklist | 2d | 2014-07-09 | 2014-07-10 | 150 |
| 152 |  | Review test documents | 1d | 2014-07-11 | 2014-07-11 | 151 |
| 153 |  | Submit report no.5 First version | 0d | 2014-07-14 | 2014-07-14 | 152 |
| 154 |  | Review report no.5 | 1d | 2014-07-15 | 2014-07-15 | 153 |
| 155 |  | Submit report no.5 final version | 0d | 2014-07-16 | 2014-07-16 | 154 |
| 156 | 1.3.3.2 | **Execute test** | 15d | 2014-07-21 | 2014-08-08 |  |
| 157 | 1.3.3.2.1 | **Execute Test Phase 1** | 8d | 2014-07-21 | 2014-07-30 |  |
| 158 |  | Execute Unit Test | 5d | 2014-07-21 | 2014-07-25 | 155 |
| 159 |  | Fix bug Unit Test | 1d | 2014-07-28 | 2014-07-28 | 158 |
| 160 |  | Execute Integration Test | 1d | 2014-07-29 | 2014-07-29 | 159 |
| 161 |  | Fix bug Integration Test | 1d | 2014-07-30 | 2014-07-30 | 160 |
| 162 | 1.3.3.2.2 | **Execute Test Phase 2** | 8d | 2014-07-30 | 2014-08-08 |  |
| 163 |  | Execute Unit Test | 4d | 2014-07-31 | 2014-08-05 | 161 |
| 164 |  | Fix bug Unit Test | 1d | 2014-08-06 | 2014-08-06 | 163 |
| 165 |  | Execute Integration Test | 1d | 2014-08-07 | 2014-08-07 | 164 |
| 166 |  | Fix bug Integration Test | 0.5d | 2014-08-08 | 2014-08-08 | 165 |
| 167 |  | Execute System Test | 0.5d | 2014-08-08 | 2014-08-08 | 166 |
| 168 |  | Create report no.6 -Software User's Manual | 3d | 2014-08-11 | 2014-08-13 | 167 |
| 169 |  | Submit report no.6 First version | 0d | 2014-08-14 | 2014-08-14 | 168 |
| 170 |  | Review & update report no.6 | 1d | 2014-08-14 | 2014-08-14 | 169 |
| 171 |  | Submit report no.6 final version | 0d | 2014-08-15 | 2014-08-15 | 170 |
| 172 | 1.4 | **Transition** | 9d | 2014-08-15 | 2014-08-27 |  |
| 173 | 1.4.1 | **Preclosing** | 8d | 2014-08-15 | 2014-08-26 |  |
| 174 |  | Conduct project review-lessons learned | 2d | 2014-08-15 | 2014-08-17 | 171 |
| 175 |  | Complete program and documents | 4d | 2014-08-18 | 2014-08-21 | 174 |
| 176 |  | Submit the last document and CD source code | 0d | 2014-08-22 | 2014-08-22 | 175 |
| 177 | 1.4.2 | **Closing** | 4d | 2014-08-24 | 2014-08-27 |  |
| 178 |  | Prepare for presentation | 2d | 2014-08-22 | 2014-08-24 | 176 |
| 179 |  | Represent capstone project | 2d | 2014-08-25 | 2014-08-26 | 178 |
| 180 |  | Project completed | 0d | 2014-08-27 | 2014-08-27 | 179 |

## Version 2 (saved 2014-06-06)

Last finish stays 2014-08-27.

Added:

| ID | Task | Duration | Start | Finish | Predecessors | Resources |
| --- | --- | --- | --- | --- | --- | --- |
| 14 | Progress Report 1 | 1d | 2014-05-19 | 2014-05-19 | 12 | TuanNN |
| 24 | Complete screen prototype | 0d | 2014-05-30 | 2014-05-30 | 23 |  |
| 33 | Progress Report | 1d? | 2014-05-24 | 2014-05-24 |  |  |
| 55 | Reading Document Management Module | 0.5d | 2014-06-12 | 2014-06-12 | 54 | NamLD |
| 56 | Conversation management Module | 0.5d | 2014-06-12 | 2014-06-12 | 55 | NamLD |
| 57 | Video Management Module | 0.5d | 2014-06-13 | 2014-06-13 | 56 | NamLD |
| 58 | Listening Article Management Module | 0.5d | 2014-06-13 | 2014-06-13 | 57 | NamLD |
| 59 | Doing test management Module | 0.5d | 2014-06-16 | 2014-06-16 | 58 | NamLD |
| 60 | Contact's content management Module | 0.5d | 2014-06-16 | 2014-06-16 | 59 | NamLD |
| 82 | Progress Report 3 | 1d | 2014-06-20 | 2014-06-20 | 47 | TuanNN |

Removed: 22 Complete first screen prototypes; 76 Create Design Overview

Changed:

| ID | Task | Start | Finish | Duration | Predecessors | Other |
| --- | --- | --- | --- | --- | --- | --- |
| 5 | Q & A Management | 2014-05-20 → 2014-05-13 (-7d) | 2014-05-20 → 2014-05-13 (-7d) |  | 13 → 4 |  |
| 6 | **Develop report no.1: Introduction** |  | 2014-05-19 → 2014-05-20 (+1d) | 5d → 6d |  |  |
| 13 | Kick-off meeting | 2014-05-20 → 2014-05-19 (-1d) | 2014-05-20 → 2014-05-19 (-1d) | 0.25d → 0d | 15 → 12 |  |
| 15 | Submit report no.1 final version | 2014-05-19 → 2014-05-20 (+1d) | 2014-05-19 → 2014-05-20 (+1d) | 1d → 0d | 12 → 13 |  |
| 23 | Review and edit screen prototypes |  | 2014-05-30 → 2014-05-29 (-1d) | 2d → 1d | Complete first screen prototypes → 22 | was named Review and edit sceen prototypes |
| 32 | Revise after got comments for report no.2 |  |  |  |  | resources NamLD → NamLD; MinhPT |
| 42 | Create draft requirements |  |  |  |  | resources MinhPT; NamLD → MinhPT; TuanNN |
| 46 | **Software Requirements Specification** |  | 2014-06-24 → 2014-06-20 (-4d) | 12d → 10d |  |  |
| 47 | **Functional Requirement Specification** |  | 2014-06-18 → 2014-06-19 (+1d) | 8d → 9d |  |  |
| 48 | **Phase 1** |  | 2014-06-14 → 2014-06-16 (+2d) |  |  |  |
| 50 | **Admin Module** |  | 2014-06-13 → 2014-06-16 (+3d) | 4d → 5d |  |  |
| 51 | Admin’s account management Module |  |  |  |  | was named Admin Manage Account Module |
| 52 | Management Member’s account Module |  |  |  |  | was named Member's account management Module |
| 53 | Vocabulary Management Module |  |  | 1d → 0.5d |  | was named Contribute Opinion, Database Management Module |
| 54 | Grammar Management Module | 2014-06-12 → 2014-06-11 (-1d) | 2014-06-13 → 2014-06-11 (-2d) | 1.5d → 0.5d |  | was named Data Management Module |
| 67 | Login/Logout Module |  | 2014-06-13 → 2014-06-12 (-1d) | 1d → 0.5d |  |  |
| 68 | Register Account Module |  | 2014-06-14 → 2014-06-13 (-1d) | 1d → 0.5d |  |  |
| 69 | Edit Profile Module |  | 2014-06-14 → 2014-06-13 (-1d) | 1d → 0.5d | 54 → 68 | was named Contribute Opinion, Database Module; resources NamLD → DatPT |
| 70 | Forgot Password Module | 2014-06-17 → 2014-06-16 (-1d) | 2014-06-17 → 2014-06-16 (-1d) |  | 72 → 69 | resources NamLD → DatPT |
| 71 | **Phase 2** |  | 2014-06-18 → 2014-06-19 (+1d) | 3d → 4d |  |  |
| 72 | Contact Admin Module |  | 2014-06-16 → 2014-06-18 (+2d) | 1d → 2.5d | 69 → 70 | was named Change Password Module |
| 73 | Doing Test Module | 2014-06-18 → 2014-06-19 (+1d) | 2014-06-18 → 2014-06-19 (+1d) | 1d → 0.5d | 76 → 72 | resources DatPT → NamLD |
| 74 | Reading Document Module |  | 2014-06-16 → 2014-06-17 (+1d) |  | 68 → 70 |  |
| 75 | Training Listening Module | 2014-06-17 → 2014-06-18 (+1d) | 2014-06-17 → 2014-06-18 (+1d) | 0.5d → 1d |  |  |
| 76 | Listening Conversation Module | 2014-06-17 → 2014-06-19 (+2d) | 2014-06-17 → 2014-06-19 (+2d) |  |  |  |
| 77 | **Non-functional Requirements Specification** | 2014-06-19 → 2014-06-09 (-10d) | 2014-06-24 → 2014-06-10 (-14d) | 4d → 2d |  |  |
| 78 | Develop User Interface requirements | 2014-06-19 → 2014-06-09 (-10d) | 2014-06-19 → 2014-06-10 (-9d) | 1d → 2d | 47 → 41 |  |
| 79 | Develop Performance requirements | 2014-06-20 → 2014-06-09 (-11d) | 2014-06-20 → 2014-06-09 (-11d) |  | 78 → 41 |  |
| 80 | Submit report no.3 First version | 2014-06-21 → 2014-06-20 (-1d) | 2014-06-21 → 2014-06-20 (-1d) |  | 79 → 47 | resources NamLD → MinhPT |
| 81 | Revise after got comments of Report no.3 | 2014-06-23 → 2014-06-20 (-3d) | 2014-06-23 → 2014-06-20 (-3d) | 1d → 0.5d |  | resources NamLD; MinhPT; TuanNN → MinhPT |
| 83 | Submit report no.3 final version | 2014-06-24 → 2014-06-20 (-4d) | 2014-06-24 → 2014-06-20 (-4d) |  |  | resources NamLD → MinhPT |
| 153 | Create test plan |  |  |  | 48 → none |  |

## Version 3 (saved 2014-06-11)

Last finish stays 2014-08-27.

Added:

| ID | Task | Duration | Start | Finish | Predecessors | Resources |
| --- | --- | --- | --- | --- | --- | --- |
| 97 | **Part 1** | 6d | 2014-06-12 08:00 | 2014-06-19 17:00 |  |  |
| 104 | Reading Document Management Module | 0.5d | 2014-06-17 08:00 | 2014-06-17 12:00 | 103 | NamLD |
| 105 | Conversation management Module | 0.5d | 2014-06-17 13:00 | 2014-06-17 17:00 | 104 | NamLD |
| 106 | Video Management Module | 0.5d | 2014-06-18 08:00 | 2014-06-18 12:00 | 105 | NamLD |
| 107 | Listening Article Management Module | 0.5d | 2014-06-18 13:00 | 2014-06-18 17:00 | 106 | NamLD |
| 108 | Doing test management Module | 0.5d | 2014-06-19 08:00 | 2014-06-19 12:00 | 107 | NamLD |
| 109 | Contact's content management Module | 0.5d | 2014-06-19 13:00 | 2014-06-19 17:00 | 108 | NamLD |
| 119 | Forgot Password Module | 0.5d | 2014-06-19 08:00 | 2014-06-19 12:00 | 118 | DatPT |
| 129 | Progress Report 4 | 0.5d | 2014-06-30 10:00 | 2014-06-30 15:00 | 128 | TuanNN |
| 131 | **Coding** | 8d | 2014-06-20 08:00 | 2014-07-01 17:00 |  |  |
| 132 | **Part 1** | 8d | 2014-06-20 08:00 | 2014-07-01 17:00 |  |  |
| 133 | Admin’s account management Module | 1d | 2014-06-20 08:00 | 2014-06-20 17:00 | 99 | NamLD |
| 134 | Management Member’s account Module | 1d | 2014-06-23 08:00 | 2014-06-23 17:00 | 133 | NamLD |
| 135 | Vocabulary Management Module | 0.5d | 2014-06-24 08:00 | 2014-06-24 12:00 | 134 | NamLD |
| 136 | Grammar Management Module | 0.5d | 2014-06-24 13:00 | 2014-06-24 17:00 | 135 | NamLD |
| 137 | Reading Document Management Module | 1d | 2014-06-25 08:00 | 2014-06-25 17:00 | 136 | NamLD |
| 138 | Conversation management Module | 1d | 2014-06-26 08:00 | 2014-06-26 17:00 | 137 | NamLD |
| 139 | Video Management Module | 0.5d | 2014-06-27 08:00 | 2014-06-27 12:00 | 138 | NamLD |
| 140 | Listening Article Management Module | 0.5d | 2014-06-27 13:00 | 2014-06-27 17:00 | 139 | NamLD |
| 141 | Doing test management Module | 1d | 2014-06-30 08:00 | 2014-06-30 17:00 | 140 | NamLD |
| 142 | Contact's content management Module | 1d | 2014-07-01 08:00 | 2014-07-01 17:00 | 141 | NamLD |
| 143 | **Testing** | 12d | 2014-06-16 08:00 | 2014-07-01 17:00 |  |  |
| 144 | **Create Test Document (Report 5)** | 5d | 2014-06-16 13:00 | 2014-06-23 13:00 |  |  |
| 147 | Submit Final Test Plan | 0d | 2014-06-23 13:00 | 2014-06-23 13:00 | 146 | MinhPT |
| 148 | **Create Test Case** | 6d | 2014-06-23 08:00 | 2014-06-28 17:00 |  |  |
| 166 | Forgot Password Module | 1d | 2014-07-10 08:00 | 2014-07-10 17:00 | 165 | NamLD |
| 185 | Progress Report 5 | 0.5d | 2014-07-09 13:00 | 2014-07-09 17:00 | 183 | TuanNN |
| 192 | Execute System Test | 0.5d | 2014-07-22 08:00 | 2014-07-22 12:00 | 191 | MinhPT; TuanNN |
| 193 | Fix bug System Test | 0.5d | 2014-07-22 13:00 | 2014-07-22 17:00 | 192 | NamLD |
| 199 | Fix bug System Test | 0.5d | 2014-08-04 08:00 | 2014-08-04 12:00 | 198 | NamLD |
| 200 | Complete Testing | 0d | 2014-08-04 08:00 | 2014-08-04 08:00 | 198 | Project Team |
| 204 | Progress Report 6 | 0.5d | 2014-08-08 08:00 | 2014-08-08 12:00 | 203 | TuanNN |

Removed: 97 Phase 1; 130 Admin Module; 131 Admin Manage Account Module; 132 Member's account management Module; 133 Contribute Opinion, Database Management Module; 134 Data Management Module

Changed:

| ID | Task | Start | Finish | Duration | Predecessors | Other |
| --- | --- | --- | --- | --- | --- | --- |
| 1 | **UJD_VN** | 2014-05-12 → 2014-05-12 08:00 | 2014-08-27 → 2014-08-27 17:00 |  |  |  |
| 2 | **Initiation** | 2014-05-12 → 2014-05-12 08:00 | 2014-05-30 → 2014-05-30 17:00 |  |  |  |
| 3 | Develop project Idea | 2014-05-12 → 2014-05-12 08:00 | 2014-05-12 → 2014-05-12 17:00 |  |  |  |
| 4 | Prepare project | 2014-05-13 → 2014-05-13 08:00 | 2014-05-13 → 2014-05-13 12:00 |  |  |  |
| 5 | Q & A Management | 2014-05-13 → 2014-05-13 13:00 | 2014-05-13 → 2014-05-13 17:00 |  |  |  |
| 6 | **Develop report no.1: Introduction** | 2014-05-13 → 2014-05-13 08:00 | 2014-05-20 → 2014-05-20 17:00 |  |  |  |
| 7 | System feasible study | 2014-05-13 → 2014-05-13 08:00 | 2014-05-13 → 2014-05-13 17:00 |  |  |  |
| 8 | Define business situation | 2014-05-13 → 2014-05-13 08:00 | 2014-05-13 → 2014-05-13 17:00 |  |  |  |
| 9 | Define project and system scope | 2014-05-14 → 2014-05-14 08:00 | 2014-05-14 → 2014-05-14 17:00 |  |  |  |
| 10 | Review & update report no.1 : Draft vesion | 2014-05-15 → 2014-05-15 08:00 | 2014-05-15 → 2014-05-15 12:00 |  |  | resources NamLD → MinhPT; TuanNN |
| 11 | Submit report no.1 first version | 2014-05-15 → 2014-05-15 13:00 | 2014-05-15 → 2014-05-15 17:00 |  |  | resources NamLD → MinhPT; TuanNN |
| 12 | Revise after got comments for report no.1 | 2014-05-16 → 2014-05-16 08:00 | 2014-05-16 → 2014-05-16 17:00 |  |  | resources NamLD → MinhPT; TuanNN |
| 13 | Kick-off meeting | 2014-05-19 → 2014-05-19 08:00 | 2014-05-19 → 2014-05-19 08:00 |  |  |  |
| 14 | Progress Report 1 | 2014-05-19 → 2014-05-19 08:00 | 2014-05-19 → 2014-05-19 17:00 |  |  |  |
| 15 | Submit report no.1 final version | 2014-05-20 → 2014-05-20 08:00 | 2014-05-20 → 2014-05-20 08:00 |  |  | resources NamLD → MinhPT |
| 16 | **Technologies** | 2014-05-15 → 2014-05-15 08:00 | 2014-05-27 → 2014-05-27 17:00 |  |  |  |
| 17 | Research development technology | 2014-05-15 → 2014-05-15 08:00 | 2014-05-16 → 2014-05-16 17:00 |  |  |  |
| 18 | Install and configuration PHP with Xampp | 2014-05-19 → 2014-05-19 08:00 | 2014-05-19 → 2014-05-19 12:00 |  |  | resources NamLD → NamLD; DatPT |
| 19 | Study Xampp and MYSQL | 2014-05-19 → 2014-05-19 13:00 | 2014-05-27 → 2014-05-27 12:00 |  |  |  |
| 20 | **Requirements** | 2014-05-20 → 2014-05-20 08:00 | 2014-05-30 → 2014-05-30 17:00 |  |  |  |
| 21 | Collect business requirements and processes | 2014-05-20 → 2014-05-20 08:00 | 2014-05-20 → 2014-05-20 17:00 |  |  | resources MinhPT; NamLD → MinhPT; TuanNN |
| 22 | Create draft screen prototypes | 2014-05-21 → 2014-05-21 08:00 | 2014-05-28 → 2014-05-28 17:00 |  |  |  |
| 23 | Review and edit screen prototypes | 2014-05-29 → 2014-05-29 08:00 | 2014-05-29 → 2014-05-29 17:00 |  |  |  |
| 24 | Complete screen prototype | 2014-05-30 → 2014-05-30 08:00 | 2014-05-30 → 2014-05-30 08:00 |  |  | resources none → DatPT; TuanNN |
| 25 | **Develop Project Plan** | 2014-05-20 → 2014-05-20 08:00 | 2014-05-30 → 2014-05-30 17:00 |  |  |  |
| 26 | Develop project definition | 2014-05-20 → 2014-05-20 10:00 | 2014-05-21 → 2014-05-21 10:00 |  |  |  |
| 27 | Work BreakDown Structure | 2014-05-22 → 2014-05-22 08:00 | 2014-05-22 → 2014-05-22 12:00 |  |  |  |
| 28 | Create project schedule | 2014-05-23 → 2014-05-23 08:00 | 2014-05-23 → 2014-05-23 17:00 |  |  |  |
| 29 | **Develop report no.2: Project management Plan** | 2014-05-24 → 2014-05-24 08:00 | 2014-05-30 → 2014-05-30 17:00 |  |  |  |
| 30 | Create Project plan first version | 2014-05-24 → 2014-05-24 08:00 | 2014-05-26 → 2014-05-26 17:00 |  |  |  |
| 31 | Submit report no.2 first version | 2014-05-27 → 2014-05-27 08:00 | 2014-05-27 → 2014-05-27 08:00 |  |  |  |
| 32 | Revise after got comments for report no.2 | 2014-05-28 → 2014-05-28 08:00 | 2014-05-29 → 2014-05-28 17:00 (-1d) | 2d → 1d |  |  |
| 33 | Progress Report 2 | 2014-05-24 → 2014-05-29 08:00 (+5d) | 2014-05-24 → 2014-05-29 17:00 (+5d) | 1d? → 1d | none → 32 | was named Progress Report; resources none → TuanNN |
| 34 | Submit report no.2 final version | 2014-05-30 → 2014-05-30 08:00 | 2014-05-30 → 2014-05-30 08:00 |  |  |  |
| 35 | **Solution** | 2014-06-02 → 2014-06-02 08:00 | 2014-07-01 → 2014-07-01 17:00 |  |  |  |
| 36 | **Project Management** | 2014-06-02 → 2014-06-02 08:00 | 2014-06-04 → 2014-06-04 17:00 |  |  |  |
| 37 | Refine project plan | 2014-06-02 → 2014-06-02 08:00 | 2014-06-03 → 2014-06-03 17:00 |  |  |  |
| 38 | **Technologies** | 2014-06-02 → 2014-06-02 08:00 | 2014-06-10 → 2014-06-10 17:00 |  |  |  |
| 39 | Design database models | 2014-06-02 → 2014-06-02 08:00 | 2014-06-02 → 2014-06-02 17:00 |  |  |  |
| 40 | Coding prototypes | 2014-06-03 → 2014-06-03 08:00 | 2014-06-10 → 2014-06-10 17:00 |  |  |  |
| 41 | **User Requirements Specification** | 2014-06-02 → 2014-06-02 08:00 | 2014-06-06 → 2014-06-06 17:00 |  |  |  |
| 42 | Create draft requirements | 2014-06-02 → 2014-06-02 08:00 | 2014-06-03 → 2014-06-03 17:00 |  |  |  |
| 43 | Complete draft requirements | 2014-06-04 → 2014-06-04 08:00 | 2014-06-04 → 2014-06-04 08:00 |  |  |  |
| 44 | Develop Use-case model | 2014-06-04 → 2014-06-04 08:00 | 2014-06-04 → 2014-06-04 17:00 |  |  |  |
| 45 | Develop main functions and processes | 2014-06-05 → 2014-06-05 08:00 | 2014-06-06 → 2014-06-06 17:00 |  |  |  |
| 46 | **Software Requirements Specification** | 2014-06-09 → 2014-06-09 08:00 | 2014-06-20 → 2014-06-20 17:00 |  |  |  |
| 47 | **Functional Requirement Specification** | 2014-06-09 → 2014-06-09 08:00 | 2014-06-19 → 2014-06-20 17:00 (+1d) | 9d → 10d |  |  |
| 48 | **Part 1** | 2014-06-09 → 2014-06-09 08:00 | 2014-06-16 → 2014-06-16 17:00 |  |  | was named Phase 1 |
| 49 | Homepage Module | 2014-06-09 → 2014-06-09 08:00 | 2014-06-09 → 2014-06-09 17:00 |  |  | resources NamLD; DatPT → TuanNN |
| 50 | **Admin Module** | 2014-06-10 → 2014-06-10 08:00 | 2014-06-16 → 2014-06-16 17:00 |  |  |  |
| 51 | Admin’s account management Module | 2014-06-10 → 2014-06-10 08:00 | 2014-06-10 → 2014-06-10 12:00 |  |  | resources NamLD → TuanNN |
| 52 | Management Member’s account Module | 2014-06-10 → 2014-06-10 13:00 | 2014-06-10 → 2014-06-10 17:00 |  |  | resources NamLD → TuanNN |
| 53 | Vocabulary Management Module | 2014-06-11 → 2014-06-11 08:00 | 2014-06-11 → 2014-06-11 12:00 |  |  | resources NamLD → TuanNN |
| 54 | Grammar Management Module | 2014-06-11 → 2014-06-11 13:00 | 2014-06-11 → 2014-06-11 17:00 |  |  | resources NamLD → TuanNN |
| 55 | Reading Document Management Module | 2014-06-12 → 2014-06-12 08:00 | 2014-06-12 → 2014-06-12 12:00 |  |  | resources NamLD → TuanNN |
| 56 | Conversation management Module | 2014-06-12 → 2014-06-12 13:00 | 2014-06-12 → 2014-06-12 17:00 |  |  | resources NamLD → TuanNN |
| 57 | Video Management Module | 2014-06-13 → 2014-06-13 08:00 | 2014-06-13 → 2014-06-13 12:00 |  |  | resources NamLD → TuanNN |
| 58 | Listening Article Management Module | 2014-06-13 → 2014-06-13 13:00 | 2014-06-13 → 2014-06-13 17:00 |  |  | resources NamLD → TuanNN |
| 59 | Doing test management Module | 2014-06-16 → 2014-06-16 08:00 | 2014-06-16 → 2014-06-16 12:00 |  |  | resources NamLD → TuanNN |
| 60 | Contact's content management Module | 2014-06-16 → 2014-06-16 13:00 | 2014-06-16 → 2014-06-16 17:00 |  |  | resources NamLD → TuanNN |
| 61 | **Search Module** | 2014-06-10 → 2014-06-10 08:00 | 2014-06-12 → 2014-06-12 17:00 |  |  |  |
| 62 | Search Sentences Module | 2014-06-10 → 2014-06-10 08:00 | 2014-06-10 → 2014-06-10 12:00 |  |  | resources DatPT → MinhPT |
| 63 | Search Conversation Module | 2014-06-10 → 2014-06-10 13:00 | 2014-06-10 → 2014-06-10 17:00 |  |  | resources DatPT → MinhPT |
| 64 | Search Video Module | 2014-06-11 → 2014-06-11 08:00 | 2014-06-11 → 2014-06-11 12:00 |  |  | resources DatPT → MinhPT |
| 65 | Search Grammar Module | 2014-06-11 → 2014-06-11 13:00 | 2014-06-11 → 2014-06-11 17:00 |  |  | resources DatPT → MinhPT |
| 66 | Search Specialized Japanese Module | 2014-06-12 → 2014-06-12 08:00 | 2014-06-12 → 2014-06-12 12:00 |  |  | resources DatPT → MinhPT |
| 67 | Login/Logout Module | 2014-06-12 → 2014-06-12 13:00 | 2014-06-12 → 2014-06-12 17:00 |  |  | resources DatPT → MinhPT |
| 68 | Register Account Module | 2014-06-13 → 2014-06-13 08:00 | 2014-06-13 → 2014-06-13 12:00 |  |  | resources DatPT → MinhPT |
| 69 | Edit Profile Module | 2014-06-13 → 2014-06-13 13:00 | 2014-06-13 → 2014-06-13 17:00 |  |  | resources DatPT → MinhPT |
| 70 | Forgot Password Module | 2014-06-16 → 2014-06-16 08:00 | 2014-06-16 → 2014-06-16 12:00 |  |  | resources DatPT → MinhPT |

| ID | Task | Start | Finish | Duration | Total float | Predecessors | Other |
| --- | --- | --- | --- | --- | --- | --- | --- |
| 71 | **Part 2** | 2014-06-16 → 2014-06-16 08:00 | 2014-06-19 → 2014-06-20 17:00 (+1d) | 4d → 5d |  |  | was named Phase 2 |
| 72 | Contact Admin Module | 2014-06-16 → 2014-06-17 08:00 (+1d) | 2014-06-18 → 2014-06-18 12:00 | 2.5d → 1.5d |  | 70 → 60 | resources NamLD → TuanNN |
| 73 | Doing Test Module | 2014-06-19 → 2014-06-18 13:00 (-1d) | 2014-06-19 → 2014-06-18 17:00 (-1d) |  |  |  | resources NamLD → TuanNN |
| 74 | Reading Document Module | 2014-06-16 → 2014-06-19 08:00 (+3d) | 2014-06-17 → 2014-06-19 12:00 (+2d) | 1d → 0.5d |  | 70 → 73 | resources DatPT → TuanNN |
| 75 | Training Listening Module | 2014-06-18 → 2014-06-19 13:00 (+1d) | 2014-06-18 → 2014-06-19 17:00 (+1d) | 1d → 0.5d |  |  | resources DatPT → TuanNN |
| 76 | Listening Conversation Module | 2014-06-19 → 2014-06-20 08:00 (+1d) | 2014-06-19 → 2014-06-20 10:00 (+1d) | 0.5d → 0.25d |  |  | resources DatPT → TuanNN |
| 77 | **Non-functional Requirements Specification** | 2014-06-09 → 2014-06-09 08:00 | 2014-06-10 → 2014-06-09 17:00 (-1d) | 2d → 1d |  |  |  |
| 78 | Develop User Interface requirements | 2014-06-09 → 2014-06-09 08:00 | 2014-06-10 → 2014-06-09 17:00 (-1d) | 2d → 1d |  | 41 → 45 | resources MinhPT → DatPT |
| 79 | Develop Performance requirements | 2014-06-09 → 2014-06-09 08:00 | 2014-06-09 → 2014-06-09 17:00 |  |  | 41 → 44 | resources TuanNN → MinhPT |
| 80 | Submit report no.3 First version | 2014-06-20 → 2014-06-20 10:00 | 2014-06-20 → 2014-06-20 10:00 |  |  | 47 → 76 | resources MinhPT → TuanNN |
| 81 | Revise after got comments of Report no.3 | 2014-06-20 → 2014-06-20 10:00 | 2014-06-20 → 2014-06-20 12:00 | 0.5d → 0.25d |  |  | resources MinhPT → TuanNN |
| 82 | Progress Report 3 | 2014-06-20 → 2014-06-20 13:00 | 2014-06-20 → 2014-06-20 15:00 | 1d → 0.25d |  | 47 → 81 |  |
| 83 | Submit report no.3 final version | 2014-06-20 → 2014-06-20 15:00 | 2014-06-20 → 2014-06-20 15:00 |  |  | 81 → 82 | resources MinhPT → TuanNN |
| 84 | **Design** | 2014-06-09 → 2014-06-09 08:00 | 2014-07-01 → 2014-07-01 17:00 |  |  |  |  |
| 85 | **System Architectural Design** | 2014-06-09 → 2014-06-09 08:00 | 2014-06-12 → 2014-06-12 17:00 |  |  |  |  |
| 86 | Define the system structure and collect system features | 2014-06-09 → 2014-06-09 08:00 | 2014-06-09 → 2014-06-09 17:00 |  |  | none → 45 | resources DatPT; NamLD → NamLD |
| 87 | Study the common System Architeture | 2014-06-10 → 2014-06-10 08:00 | 2014-06-10 → 2014-06-10 17:00 |  |  |  | resources DatPT; NamLD → NamLD |
| 88 | Choice of System Architeture | 2014-06-11 → 2014-06-11 08:00 | 2014-06-11 → 2014-06-11 17:00 | 0.5d → 1d |  |  |  |
| 89 | Discussion of Alternative Design | 2014-06-11 → 2014-06-12 08:00 (+1d) | 2014-06-12 → 2014-06-12 17:00 |  |  |  | resources DatPT → NamLD |
| 90 | **Detailed Design** | 2014-06-09 → 2014-06-10 08:00 (+1d) | 2014-06-30 → 2014-07-01 17:00 (+1d) |  |  |  |  |
| 91 | **Component Diagram** | 2014-06-09 → 2014-06-10 08:00 (+1d) | 2014-06-11 → 2014-06-11 17:00 | 3d → 2d |  |  |  |
| 92 | Define the component | 2014-06-09 → 2014-06-10 08:00 (+1d) | 2014-06-09 → 2014-06-10 12:00 (+1d) | 1d → 0.5d |  | 41 → 78 | resources DatPT; NamLD → DatPT |
| 93 | General component diagram | 2014-06-10 → 2014-06-10 13:00 | 2014-06-10 → 2014-06-10 17:00 |  |  |  | resources NamLD → DatPT |
| 94 | Detail component diagram | 2014-06-10 → 2014-06-11 08:00 (+1d) | 2014-06-10 → 2014-06-11 12:00 (+1d) |  |  |  | resources NamLD → DatPT |
| 95 | Detail Database Design | 2014-06-11 → 2014-06-11 13:00 | 2014-06-11 → 2014-06-11 17:00 | 1d → 0.5d |  |  | resources DatPT; NamLD → DatPT |
| 96 | **User Interface Design** | 2014-06-11 → 2014-06-12 08:00 (+1d) | 2014-06-30 → 2014-06-26 17:00 (-4d) | 14d → 11d | none → 0d |  |  |
| 98 | Homepage Module | 2014-06-12 → 2014-06-12 08:00 | 2014-06-12 → 2014-06-12 17:00 |  |  |  | resources NamLD; DatPT → DatPT |
| 99 | **Admin Module** | 2014-06-13 → 2014-06-13 08:00 | 2014-06-18 → 2014-06-19 17:00 (+1d) | 4d → 5d |  |  |  |
| 100 | Admin’s account management Module | 2014-06-13 → 2014-06-13 08:00 | 2014-06-13 → 2014-06-13 12:00 | 1d → 0.5d |  | 98 → 89 | was named Admin Manage Account Module |
| 101 | Management Member’s account Module | 2014-06-16 → 2014-06-13 13:00 (-3d) | 2014-06-16 → 2014-06-13 17:00 (-3d) | 1d → 0.5d |  |  | was named Member's account management Module |
| 102 | Vocabulary Management Module | 2014-06-17 → 2014-06-16 08:00 (-1d) | 2014-06-17 → 2014-06-16 12:00 (-1d) | 1d → 0.5d |  |  | was named Contribute Opinion, Database Management Module |
| 103 | Grammar Management Module | 2014-06-18 → 2014-06-16 13:00 (-2d) | 2014-06-18 → 2014-06-16 17:00 (-2d) | 1d → 0.5d |  |  | was named Data Management Module |
| 110 | **Search Module** | 2014-06-13 → 2014-06-13 08:00 | 2014-06-20 → 2014-06-19 17:00 (-1d) | 6d → 5d |  |  |  |
| 111 | Search Sentences Module | 2014-06-13 → 2014-06-13 08:00 | 2014-06-13 → 2014-06-13 12:00 | 1d → 0.5d |  |  |  |
| 112 | Search Conversation Module | 2014-06-16 → 2014-06-13 13:00 (-3d) | 2014-06-16 → 2014-06-13 17:00 (-3d) | 1d → 0.5d |  |  |  |
| 113 | Search Video Module | 2014-06-17 → 2014-06-16 08:00 (-1d) | 2014-06-17 → 2014-06-16 12:00 (-1d) | 1d → 0.5d |  |  |  |
| 114 | Search Grammar Module | 2014-06-18 → 2014-06-16 13:00 (-2d) | 2014-06-18 → 2014-06-16 17:00 (-2d) | 1d → 0.5d |  |  |  |
| 115 | Search Specialized Japanese Module | 2014-06-19 → 2014-06-17 08:00 (-2d) | 2014-06-19 → 2014-06-17 12:00 (-2d) | 1d → 0.5d |  |  |  |
| 116 | Login/Logout Module | 2014-06-20 → 2014-06-17 13:00 (-3d) | 2014-06-20 → 2014-06-17 17:00 (-3d) |  |  |  |  |
| 117 | Register Account Module | 2014-06-20 → 2014-06-18 08:00 (-2d) | 2014-06-20 → 2014-06-18 12:00 (-2d) |  |  |  |  |
| 118 | Edit Profile Module | 2014-06-19 → 2014-06-18 13:00 (-1d) | 2014-06-19 → 2014-06-18 17:00 (-1d) | 1d → 0.5d |  | 103 → 117 | was named Contribute Opinion, Database Module; resources NamLD → DatPT |
| 120 | **Part 2** | 2014-06-21 → 2014-06-19 08:00 (-2d) | 2014-06-28 → 2014-06-26 17:00 (-2d) | 7d → 6d |  |  | was named Phase 2 |
| 121 | Change Password Module | 2014-06-21 → 2014-06-19 13:00 (-2d) | 2014-06-21 → 2014-06-19 17:00 (-2d) |  |  | 118 → 119 | resources NamLD → DatPT |
| 122 | Forgot Password Module | 2014-06-23 → 2014-06-20 08:00 (-3d) | 2014-06-23 → 2014-06-20 12:00 (-3d) |  |  |  | resources NamLD → DatPT |
| 123 | Reading Document Module | 2014-06-23 → 2014-06-20 13:00 (-3d) | 2014-06-23 → 2014-06-23 12:00 |  |  | 117 → 122 |  |
| 124 | Training Listening Module | 2014-06-24 → 2014-06-23 13:00 (-1d) | 2014-06-24 → 2014-06-23 17:00 (-1d) | 1d → 0.5d |  |  |  |
| 125 | Listening Conversation Module | 2014-06-25 → 2014-06-24 08:00 (-1d) | 2014-06-25 → 2014-06-24 17:00 (-1d) |  |  |  |  |
| 126 | Doing Test Module | 2014-06-26 → 2014-06-25 08:00 (-1d) | 2014-06-27 → 2014-06-26 17:00 (-1d) |  |  |  |  |
| 127 | Submit report no.4 First version | 2014-06-28 → 2014-06-29 08:00 (+1d) | 2014-06-28 → 2014-06-29 08:00 (+1d) |  |  |  | resources NamLD → MinhPT |
| 128 | Review and update comments report #4 | 2014-06-30 → 2014-06-30 08:00 | 2014-06-30 → 2014-06-30 10:00 | 1d → 0.25d |  |  | resources NamLD → MinhPT |
| 130 | Submit report no.4 final version | 2014-07-01 → 2014-06-30 13:00 (-1d) | 2014-07-01 → 2014-06-30 13:00 (-1d) |  |  |  | resources NamLD → MinhPT |
| 145 | Create test plan | 2014-06-16 → 2014-06-16 13:00 | 2014-06-23 → 2014-06-20 17:00 (-3d) | 6d → 4.5d |  | none → 70 | resources MinhPT; TuanNN → MinhPT |
| 146 | Review and update Test Plan | 2014-06-24 → 2014-06-23 08:00 (-1d) | 2014-06-24 → 2014-06-23 12:00 (-1d) | 1d → 0.5d |  |  | resources MinhPT; TuanNN → MinhPT |
| 149 | Create Unit Test Case | 2014-06-25 → 2014-06-23 13:00 (-2d) | 2014-07-03 → 2014-06-28 17:00 (-5d) | 7d → 5.5d |  | 146 → 147 |  |
| 150 | **Construction** | 2014-07-01 → 2014-07-02 08:00 (+1d) | 2014-08-18 → 2014-08-08 17:00 (-10d) | 35d → 28d |  |  |  |
| 151 | **Requirements & Design** | 2014-07-02 → 2014-07-02 08:00 | 2014-07-03 → 2014-07-03 17:00 |  |  |  |  |
| 152 | Refine requirement documents | 2014-07-02 → 2014-07-02 08:00 | 2014-07-02 → 2014-07-02 17:00 |  |  |  | resources NamLD; MinhPT → MinhPT |
| 153 | Refine design documents | 2014-07-03 → 2014-07-03 08:00 | 2014-07-03 → 2014-07-03 12:00 |  |  |  | resources DatPT; NamLD → NamLD |
| 154 | **Coding & Unit Test** | 2014-07-03 → 2014-07-03 08:00 | 2014-07-29 → 2014-07-29 17:00 |  |  |  |  |
| 155 | **Part 1 (Continue)** | 2014-07-03 → 2014-07-03 13:00 | 2014-07-21 → 2014-07-14 17:00 (-7d) | 12.5d → 7.5d | 0d → none |  | was named Phase 1 |
| 156 | Homepage Module | 2014-07-03 → 2014-07-03 13:00 | 2014-07-04 → 2014-07-04 17:00 |  |  |  | resources DatPT; NamLD → NamLD |
| 157 | **Search Module** | 2014-07-05 → 2014-07-05 08:00 | 2014-07-16 → 2014-07-14 17:00 (-2d) | 9d → 7d |  |  |  |
| 158 | Search Sentences Module | 2014-07-05 → 2014-07-05 08:00 | 2014-07-07 → 2014-07-07 17:00 |  |  |  |  |
| 159 | Search Conversation Module | 2014-07-08 → 2014-07-08 08:00 | 2014-07-09 → 2014-07-08 17:00 (-1d) | 2d → 1d |  |  |  |
| 160 | Search Video Module | 2014-07-10 → 2014-07-10 08:00 | 2014-07-10 → 2014-07-10 17:00 |  |  |  |  |
| 161 | Search Grammar Module | 2014-07-11 → 2014-07-11 08:00 | 2014-07-14 → 2014-07-11 17:00 (-3d) | 2d → 1d |  |  |  |
| 162 | Search Specialized Japanese Module | 2014-07-15 → 2014-07-14 08:00 (-1d) | 2014-07-16 → 2014-07-14 17:00 (-2d) | 2d → 1d |  |  |  |
| 163 | Login/Logout Module | 2014-07-18 → 2014-07-07 08:00 (-11d) | 2014-07-18 → 2014-07-07 17:00 (-11d) |  |  | Data Management Module → 156 |  |
| 164 | Register Account Module | 2014-07-21 → 2014-07-08 08:00 (-13d) | 2014-07-21 → 2014-07-08 17:00 (-13d) |  |  |  |  |
| 165 | Edit Profile Module | 2014-07-17 → 2014-07-09 08:00 (-8d) | 2014-07-18 → 2014-07-09 17:00 (-9d) | 2d → 1d |  | 162 → 164 | was named Contribute Opinion, Database Module; resources DatPT → NamLD |

| ID | Task | Start | Finish | Duration | Predecessors | Other |
| --- | --- | --- | --- | --- | --- | --- |
| 167 | Execute Unit Test | 2014-07-21 → 2014-07-11 08:00 (-10d) | 2014-07-25 → 2014-07-16 17:00 (-9d) | 5d → 4d | 186 → 166 |  |
| 168 | **Part 2** | 2014-07-21 → 2014-07-18 08:00 (-3d) | 2014-07-29 → 2014-07-25 17:00 (-4d) | 7d → 6d |  | was named Phase 2 |
| 169 | Change Password Module | 2014-07-22 → 2014-07-18 08:00 (-4d) | 2014-07-22 → 2014-07-18 17:00 (-4d) |  | 164 → 162 | resources NamLD → DatPT |
| 170 | Forgot Password Module | 2014-07-23 → 2014-07-21 08:00 (-2d) | 2014-07-23 → 2014-07-21 17:00 (-2d) |  |  | resources NamLD → DatPT |
| 171 | Reading Document Module | 2014-07-21 → 2014-07-22 08:00 (+1d) | 2014-07-22 → 2014-07-23 12:00 (+1d) | 2d → 1.5d | 165 → 170 |  |
| 172 | Training Listening Module | 2014-07-23 → 2014-07-23 13:00 | 2014-07-23 → 2014-07-23 17:00 | 1d → 0.5d |  |  |
| 173 | Listening Conversation Module | 2014-07-24 → 2014-07-23 08:00 (-1d) | 2014-07-24 → 2014-07-23 17:00 (-1d) |  | 172 → 193 | resources DatPT → NamLD |
| 174 | Doing Test Module | 2014-07-25 → 2014-07-24 08:00 (-1d) | 2014-07-29 → 2014-07-25 12:00 (-4d) | 3d → 1.5d |  | resources DatPT → NamLD |
| 175 | Execute Unit Test | 2014-07-31 → 2014-07-25 13:00 (-6d) | 2014-08-05 → 2014-07-29 17:00 (-7d) | 4d → 2.5d | 191 → 174 |  |
| 176 | **Testing** | 2014-06-16 → 2014-07-02 08:00 (+16d) | 2014-08-15 → 2014-08-04 17:00 (-11d) | 45d → 24d |  |  |
| 177 | **Create test documents (Continue)** | 2014-06-16 → 2014-07-02 08:00 (+16d) | 2014-07-19 → 2014-07-10 17:00 (-9d) | 26d → 7d |  | was named Create test documents (Report 5) |
| 178 | **Create test cases** | 2014-06-25 → 2014-07-02 08:00 (+7d) | 2014-07-11 → 2014-07-07 17:00 (-4d) | 13d → 4d |  |  |
| 179 | Create Integration Test Case | 2014-07-04 → 2014-07-03 08:00 (-1d) | 2014-07-07 → 2014-07-04 17:00 (-3d) |  | 149 → 152 |  |
| 180 | Create System Test Case | 2014-07-08 → 2014-07-07 08:00 (-1d) | 2014-07-08 → 2014-07-07 17:00 (-1d) |  |  |  |
| 181 | Create test checklist | 2014-07-09 → 2014-07-08 08:00 (-1d) | 2014-07-10 → 2014-07-08 17:00 (-2d) | 2d → 1d |  |  |
| 182 | Review test documents | 2014-07-11 → 2014-07-09 08:00 (-2d) | 2014-07-11 → 2014-07-09 12:00 (-2d) | 1d → 0.5d |  |  |
| 183 | Submit report no.5 First version | 2014-07-14 → 2014-07-09 13:00 (-5d) | 2014-07-14 → 2014-07-09 13:00 (-5d) |  |  | resources NamLD → MinhPT |
| 184 | Review report no.5 | 2014-07-15 → 2014-07-09 13:00 (-6d) | 2014-07-15 → 2014-07-09 17:00 (-6d) | 1d → 0.5d |  |  |
| 186 | Submit report no.5 final version | 2014-07-16 → 2014-07-10 08:00 (-6d) | 2014-07-16 → 2014-07-10 08:00 (-6d) |  |  | resources NamLD → MinhPT |
| 187 | **Execute test** | 2014-07-21 → 2014-07-17 08:00 (-4d) | 2014-08-08 → 2014-08-04 17:00 (-4d) | 15d → 13d |  |  |
| 188 | **Execute Test Part 1** | 2014-07-21 → 2014-07-17 08:00 (-4d) | 2014-07-30 → 2014-07-22 17:00 (-8d) | 8d → 4d |  | was named Execute Test Phase 1 |
| 189 | Fix bug Unit Test | 2014-07-28 → 2014-07-17 08:00 (-11d) | 2014-07-28 → 2014-07-17 17:00 (-11d) |  |  |  |
| 190 | Execute Integration Test | 2014-07-29 → 2014-07-18 08:00 (-11d) | 2014-07-29 → 2014-07-18 17:00 (-11d) |  |  |  |
| 191 | Fix bug Integration Test | 2014-07-30 → 2014-07-21 08:00 (-9d) | 2014-07-30 → 2014-07-21 17:00 (-9d) |  |  | resources DatPT; NamLD → NamLD |
| 194 | **Execute Test Part 2** | 2014-07-30 → 2014-07-30 08:00 | 2014-08-08 → 2014-08-04 17:00 (-4d) | 8d → 4d |  | was named Execute Test Phase 2 |
| 195 | Fix bug Unit Test | 2014-08-06 → 2014-07-30 08:00 (-7d) | 2014-08-06 → 2014-07-30 17:00 (-7d) |  |  |  |
| 196 | Execute Integration Test | 2014-08-07 → 2014-07-31 08:00 (-7d) | 2014-08-07 → 2014-07-31 17:00 (-7d) |  |  |  |
| 197 | Fix bug Integration Test | 2014-08-08 → 2014-08-01 08:00 (-7d) | 2014-08-08 → 2014-08-01 12:00 (-7d) |  |  | resources none → DatPT; NamLD |
| 198 | Execute System Test | 2014-08-08 → 2014-08-01 13:00 (-7d) | 2014-08-08 → 2014-08-01 17:00 (-7d) |  |  |  |
| 201 | Create report no.6 -Software User's Manual | 2014-08-11 → 2014-08-05 08:00 (-6d) | 2014-08-13 → 2014-08-06 12:00 (-7d) | 3d → 1.5d |  |  |
| 202 | Submit report no.6 First version | 2014-08-14 → 2014-08-07 13:00 (-7d) | 2014-08-14 → 2014-08-07 13:00 (-7d) |  |  |  |
| 203 | Review & update report no.6 | 2014-08-14 → 2014-08-07 13:00 (-7d) | 2014-08-14 → 2014-08-07 17:00 (-7d) | 1d → 0.5d |  |  |
| 205 | Submit report no.6 final version | 2014-08-15 → 2014-08-08 08:00 (-7d) | 2014-08-15 → 2014-08-08 08:00 (-7d) |  |  |  |
| 206 | Submit the last document and CD source code | 2014-08-22 → 2014-08-08 08:00 (-14d) | 2014-08-22 → 2014-08-08 12:00 (-14d) | 0d → 0.5d | 210 → 205 |  |
| 207 | **Transition** | 2014-08-15 → 2014-08-11 08:00 (-4d) | 2014-08-27 → 2014-08-22 17:00 (-5d) | 9d → 10d |  |  |
| 208 | **Preclosing** | 2014-08-15 → 2014-08-11 08:00 (-4d) | 2014-08-26 → 2014-08-18 17:00 (-8d) | 8d → 6d |  |  |
| 209 | Conduct project review-lessons learned | 2014-08-15 → 2014-08-11 08:00 (-4d) | 2014-08-17 → 2014-08-12 17:00 (-5d) |  |  |  |
| 210 | Complete program and documents | 2014-08-18 → 2014-08-13 08:00 (-5d) | 2014-08-21 → 2014-08-18 17:00 (-3d) |  |  |  |
| 211 | **Closing** | 2014-08-24 → 2014-08-18 08:00 (-6d) | 2014-08-27 → 2014-08-22 17:00 (-5d) | 4d → 5d |  |  |
| 212 | Prepare for presentation | 2014-08-22 → 2014-08-18 08:00 (-4d) | 2014-08-24 → 2014-08-19 17:00 (-5d) |  | 206 → none |  |
| 213 | Represent capstone project | 2014-08-25 → 2014-08-20 08:00 (-5d) | 2014-08-26 → 2014-08-21 17:00 (-5d) |  |  |  |
| 214 | Project completed | 2014-08-27 → 2014-08-22 08:00 (-5d) | 2014-08-27 → 2014-08-22 08:00 (-5d) |  |  |  |
