# UJD_VN_Project_Schedule

How a schedule from MS Project changed from version to version. A marks actual dates.

## Version 1 (saved 2014-07-11)

| ID | WBS | Task | Duration | Start | Finish | Predecessors | Total float |
| --- | --- | --- | --- | --- | --- | --- | --- |
| 1 | 1 | **UJD_VN** | 75d | 2014-05-12 08:00 | 2014-08-22 17:00 |  |  |
| 2 | 1.1 | **Initiation** | 15d | 2014-05-12 08:00 | 2014-05-30 17:00 |  | 0d |
| 3 |  | Develop project Idea | 1d | 2014-05-12 08:00 | 2014-05-12 17:00 |  |  |
| 4 |  | Prepare project | 0.5d | 2014-05-13 08:00 | 2014-05-13 12:00 | 3 |  |
| 5 |  | Q & A Management | 0.5d | 2014-05-13 13:00 | 2014-05-13 17:00 | 4 |  |
| 6 | 1.1.4 | **Develop report no.1: Introduction** | 6d | 2014-05-13 08:00 | 2014-05-20 17:00 |  |  |
| 7 |  | System feasible study | 1d | 2014-05-13 08:00 | 2014-05-13 17:00 | 3 |  |
| 8 |  | Define business situation | 1d | 2014-05-13 08:00 | 2014-05-13 17:00 | 3 |  |
| 9 |  | Define project and system scope | 1d | 2014-05-14 08:00 | 2014-05-14 17:00 | 7, 8 |  |
| 10 |  | Review & update report no.1 : Draft vesion | 0.5d | 2014-05-15 08:00 | 2014-05-15 12:00 | 9 |  |
| 11 |  | Submit report no.1 first version | 0.5d | 2014-05-15 13:00 | 2014-05-15 17:00 | 10 |  |
| 12 |  | Revise after got comments for report no.1 | 1d | 2014-05-16 08:00 | 2014-05-16 17:00 | 11 |  |
| 13 |  | Kick-off meeting | 0d | 2014-05-19 08:00 | 2014-05-19 08:00 | 12 |  |
| 14 |  | Progress Report 1 | 1d | 2014-05-19 08:00 | 2014-05-19 17:00 | 12 |  |
| 15 |  | Submit report no.1 final version | 0d | 2014-05-20 08:00 | 2014-05-20 08:00 | 13 |  |
| 16 | 1.1.5 | **Technologies** | 9d | 2014-05-15 08:00 | 2014-05-27 17:00 |  |  |
| 17 |  | Research development technology | 2d | 2014-05-15 08:00 | 2014-05-16 17:00 | 9 |  |
| 18 |  | Install and configuration PHP with Xampp | 0.5d | 2014-05-19 08:00 | 2014-05-19 12:00 | 17 |  |
| 19 |  | Study Xampp and PHP, MYSQL | 6d | 2014-05-19 13:00 | 2014-05-27 12:00 | 18 |  |
| 20 | 1.1.6 | **Requirements** | 9d | 2014-05-20 08:00 | 2014-05-30 17:00 |  |  |
| 21 |  | Collect business requirements and processes | 1d | 2014-05-20 08:00 | 2014-05-20 17:00 | 15 |  |
| 22 |  | Create draft screen prototypes | 6d | 2014-05-21 08:00 | 2014-05-28 17:00 | 21 |  |
| 23 |  | Review and edit screen prototypes | 1d | 2014-05-29 08:00 | 2014-05-29 17:00 | 22 |  |
| 24 |  | Complete screen prototype | 0d | 2014-05-30 08:00 | 2014-05-30 08:00 | 23 |  |
| 25 | 1.1.7 | **Develop Project Plan** | 9d | 2014-05-20 08:00 | 2014-05-30 17:00 |  |  |
| 26 |  | Develop project definition | 1d | 2014-05-20 10:00 | 2014-05-21 10:00 | 13 |  |
| 27 |  | Work BreakDown Structure | 0.5d | 2014-05-22 08:00 | 2014-05-22 12:00 | 26 |  |
| 28 |  | Create project schedule | 1d | 2014-05-23 08:00 | 2014-05-23 17:00 | 27 |  |
| 29 | 1.1.7.4 | **Develop report no.2: Project management Plan** | 6d | 2014-05-24 08:00 | 2014-05-30 17:00 |  |  |
| 30 |  | Create Project plan first version | 2d | 2014-05-24 08:00 | 2014-05-26 17:00 | 28 |  |
| 31 |  | Submit report no.2 first version | 0d | 2014-05-27 08:00 | 2014-05-27 08:00 | 30 |  |
| 32 |  | Revise after got comments for report no.2 | 1d | 2014-05-27 08:00 | 2014-05-27 17:00 | 31 |  |
| 33 |  | Complete Project Plan Final Version | 0d | 2014-05-28 08:00 | 2014-05-28 08:00 | 32 |  |
| 34 |  | Progress Report 2 | 1d | 2014-05-29 08:00 | 2014-05-29 17:00 | 32 |  |
| 35 |  | Submit report no.2 final version | 0d | 2014-05-30 08:00 | 2014-05-30 08:00 | 32 |  |
| 36 | 1.2 | **Solution** | 22d | 2014-06-02 08:00 | 2014-07-01 17:00 |  |  |
| 37 | 1.2.1 | **Project Management** | 3d | 2014-06-02 08:00 | 2014-06-04 17:00 |  |  |
| 38 |  | Refine project plan | 2d | 2014-06-02 08:00 | 2014-06-03 17:00 | 35 |  |
| 39 | 1.2.2 | **Technologies** | 7d | 2014-06-02 08:00 | 2014-06-10 17:00 |  |  |
| 40 |  | Design database models | 1d | 2014-06-02 08:00 | 2014-06-02 17:00 | 35 |  |
| 41 |  | Coding prototypes | 6d | 2014-06-03 08:00 | 2014-06-10 17:00 | 40 |  |
| 42 | 1.2.3 | **User Requirements Specification** | 5d | 2014-06-02 08:00 | 2014-06-06 17:00 |  |  |
| 43 |  | Create draft requirements | 2d | 2014-06-02 08:00 | 2014-06-03 17:00 | 35 |  |
| 44 |  | Complete draft requirements | 0d | 2014-06-04 08:00 | 2014-06-04 08:00 | 43 |  |
| 45 |  | Develop Use-case model | 1d | 2014-06-04 08:00 | 2014-06-04 17:00 | 44 |  |
| 46 |  | Develop main functions and processes | 2d | 2014-06-05 08:00 | 2014-06-06 17:00 | 45 |  |
| 47 | 1.2.4 | **Software Requirements Specification** | 10d | 2014-06-09 08:00 | 2014-06-20 17:00 |  |  |
| 48 | 1.2.4.1 | **Functional Requirement Specification** | 10d | 2014-06-09 08:00 | 2014-06-20 17:00 |  |  |
| 49 | 1.2.4.1.1 | **Part 1** | 6d | 2014-06-09 08:00 | 2014-06-16 17:00 |  |  |
| 50 |  | Homepage Module | 1d | 2014-06-09 08:00 | 2014-06-09 17:00 | 42 |  |
| 51 | 1.2.4.1.1.2 | **Admin Module** | 5d | 2014-06-10 08:00 | 2014-06-16 17:00 |  |  |
| 52 |  | Admin’s account management Module | 0.5d | 2014-06-10 08:00 | 2014-06-10 12:00 | 50 |  |
| 53 |  | Management Member’s account Module | 0.5d | 2014-06-10 13:00 | 2014-06-10 17:00 | 52 |  |
| 54 |  | Vocabulary Management Module | 0.5d | 2014-06-11 08:00 | 2014-06-11 12:00 | 53 |  |
| 55 |  | Grammar Management Module | 0.5d | 2014-06-11 13:00 | 2014-06-11 17:00 | 54 |  |
| 56 |  | Reading Document Management Module | 0.5d | 2014-06-12 08:00 | 2014-06-12 12:00 | 55 |  |
| 57 |  | Conversation management Module | 0.5d | 2014-06-12 13:00 | 2014-06-12 17:00 | 56 |  |
| 58 |  | Video Management Module | 0.5d | 2014-06-13 08:00 | 2014-06-13 12:00 | 57 |  |
| 59 |  | Listening Article Management Module | 0.5d | 2014-06-13 13:00 | 2014-06-13 17:00 | 58 |  |
| 60 |  | Doing test management Module | 0.5d | 2014-06-16 08:00 | 2014-06-16 12:00 | 59 |  |
| 61 |  | Contact's content management Module | 0.5d | 2014-06-16 13:00 | 2014-06-16 17:00 | 60 |  |
| 62 | 1.2.4.1.1.3 | **Search Module** | 3d | 2014-06-10 08:00 | 2014-06-12 17:00 |  |  |
| 63 |  | Search Sentences Module | 0.5d | 2014-06-10 08:00 | 2014-06-10 12:00 | 50 |  |
| 64 |  | Search Conversation Module | 0.5d | 2014-06-10 13:00 | 2014-06-10 17:00 | 63 |  |
| 65 |  | Search Video Module | 0.5d | 2014-06-11 08:00 | 2014-06-11 12:00 | 64 |  |
| 66 |  | Search Grammar Module | 0.5d | 2014-06-11 13:00 | 2014-06-11 17:00 | 65 |  |
| 67 |  | Search Specialized Japanese Module | 0.5d | 2014-06-12 08:00 | 2014-06-12 12:00 | 66 |  |
| 68 |  | Login/Logout Module | 0.5d | 2014-06-12 13:00 | 2014-06-12 17:00 | 67 |  |
| 69 |  | Register Account Module | 0.5d | 2014-06-13 08:00 | 2014-06-13 12:00 | 68 |  |
| 70 |  | Edit Profile Module | 0.5d | 2014-06-13 13:00 | 2014-06-13 17:00 | 69 |  |

| ID | WBS | Task | Duration | Start | Finish | Predecessors | Total float |
| --- | --- | --- | --- | --- | --- | --- | --- |
| 71 |  | Forgot Password Module | 0.5d | 2014-06-16 08:00 | 2014-06-16 12:00 | 70 |  |
| 72 | 1.2.4.1.2 | **Part 2** | 5d | 2014-06-16 08:00 | 2014-06-20 17:00 |  |  |
| 73 |  | Contact Admin Module | 1.5d | 2014-06-17 08:00 | 2014-06-18 12:00 | 61 |  |
| 74 |  | Doing Test Module | 0.5d | 2014-06-18 13:00 | 2014-06-18 17:00 | 73 |  |
| 75 |  | Reading Document Module | 0.5d | 2014-06-19 08:00 | 2014-06-19 12:00 | 74 |  |
| 76 |  | Training Listening Module | 0.5d | 2014-06-19 13:00 | 2014-06-19 17:00 | 75 |  |
| 77 |  | Listening Conversation Module | 0.25d | 2014-06-20 08:00 | 2014-06-20 10:00 | 76 |  |
| 78 | 1.2.4.2 | **Non-functional Requirements Specification** | 1d | 2014-06-09 08:00 | 2014-06-09 17:00 |  |  |
| 79 |  | Develop User Interface requirements | 1d | 2014-06-09 08:00 | 2014-06-09 17:00 | 46 |  |
| 80 |  | Develop Performance requirements | 1d | 2014-06-09 08:00 | 2014-06-09 17:00 | 45 |  |
| 81 |  | Submit report no.3 First version | 0d | 2014-06-20 10:00 | 2014-06-20 10:00 | 77 |  |
| 82 |  | Revise after got comments of Report no.3 | 0.25d | 2014-06-20 10:00 | 2014-06-20 12:00 | 81 |  |
| 83 |  | Complete SRS Final Version | 0d | 2014-06-20 13:00 | 2014-06-20 13:00 | 82 |  |
| 84 |  | Progress Report 3 | 0.25d | 2014-06-20 13:00 | 2014-06-20 15:00 | 82 |  |
| 85 |  | Submit report no.3 final version | 0d | 2014-06-20 15:00 | 2014-06-20 15:00 | 84 |  |
| 86 | 1.2.5 | **Design** | 17d | 2014-06-09 08:00 | 2014-07-01 17:00 |  |  |
| 87 | 1.2.5.1 | **System Architectural Design** | 4d | 2014-06-09 08:00 | 2014-06-12 17:00 | 42 |  |
| 88 |  | Define the system structure and collect system features | 1d | 2014-06-09 08:00 | 2014-06-09 17:00 | 46 |  |
| 89 |  | Study the common System Architeture | 1d | 2014-06-10 08:00 | 2014-06-10 17:00 | 88 |  |
| 90 |  | Choice of System Architeture | 1d | 2014-06-11 08:00 | 2014-06-11 17:00 | 89 |  |
| 91 |  | Discussion of Alternative Design | 1d | 2014-06-12 08:00 | 2014-06-12 17:00 | 90 |  |
| 92 | 1.2.5.2 | **Detailed Design** | 16d | 2014-06-10 08:00 | 2014-07-01 17:00 |  |  |
| 93 | 1.2.5.2.1 | **Component Diagram** | 2d | 2014-06-10 08:00 | 2014-06-11 17:00 |  |  |
| 94 |  | Define the component | 0.5d | 2014-06-10 08:00 | 2014-06-10 12:00 | 79 |  |
| 95 |  | General component diagram | 0.5d | 2014-06-10 13:00 | 2014-06-10 17:00 | 94 |  |
| 96 |  | Detail component diagram | 0.5d | 2014-06-11 08:00 | 2014-06-11 12:00 | 95 |  |
| 97 |  | Detail Database Design | 0.5d | 2014-06-11 13:00 | 2014-06-11 17:00 | 96 |  |
| 98 | 1.2.5.2.2 | **User Interface Design** | 11d | 2014-06-12 08:00 | 2014-06-26 17:00 |  | 0d |
| 99 | 1.2.5.2.2.1 | **Part 1** | 6d | 2014-06-12 08:00 | 2014-06-19 17:00 |  |  |
| 100 |  | Homepage Module | 1d | 2014-06-12 08:00 | 2014-06-12 17:00 | 97 |  |
| 101 | 1.2.5.2.2.1.2 | **Admin Module** | 5d | 2014-06-13 08:00 | 2014-06-19 17:00 |  |  |
| 102 |  | Admin’s account management Module | 0.5d | 2014-06-13 08:00 | 2014-06-13 12:00 | 91 |  |
| 103 |  | Management Member’s account Module | 0.5d | 2014-06-13 13:00 | 2014-06-13 17:00 | 102 |  |
| 104 |  | Vocabulary Management Module | 0.5d | 2014-06-16 08:00 | 2014-06-16 12:00 | 103 |  |
| 105 |  | Grammar Management Module | 0.5d | 2014-06-16 13:00 | 2014-06-16 17:00 | 104 |  |
| 106 |  | Reading Document Management Module | 0.5d | 2014-06-17 08:00 | 2014-06-17 12:00 | 105 |  |
| 107 |  | Conversation management Module | 0.5d | 2014-06-17 13:00 | 2014-06-17 17:00 | 106 |  |
| 108 |  | Video Management Module | 0.5d | 2014-06-18 08:00 | 2014-06-18 12:00 | 107 |  |
| 109 |  | Listening Article Management Module | 0.5d | 2014-06-18 13:00 | 2014-06-18 17:00 | 108 |  |
| 110 |  | Doing test management Module | 0.5d | 2014-06-19 08:00 | 2014-06-19 12:00 | 109 |  |
| 111 |  | Contact's content management Module | 0.5d | 2014-06-19 13:00 | 2014-06-19 17:00 | 110 |  |
| 112 | 1.2.5.2.2.1.3 | **Search Module** | 5d | 2014-06-13 08:00 | 2014-06-19 17:00 |  |  |
| 113 |  | Search Sentences Module | 0.5d | 2014-06-13 08:00 | 2014-06-13 12:00 | 100 |  |
| 114 |  | Search Conversation Module | 0.5d | 2014-06-13 13:00 | 2014-06-13 17:00 | 113 |  |
| 115 |  | Search Video Module | 0.5d | 2014-06-16 08:00 | 2014-06-16 12:00 | 114 |  |
| 116 |  | Search Grammar Module | 0.5d | 2014-06-16 13:00 | 2014-06-16 17:00 | 115 |  |
| 117 |  | Search Specialized Japanese Module | 0.5d | 2014-06-17 08:00 | 2014-06-17 12:00 | 116 |  |
| 118 |  | Login/Logout Module | 0.5d | 2014-06-17 13:00 | 2014-06-17 17:00 | 117 |  |
| 119 |  | Register Account Module | 0.5d | 2014-06-18 08:00 | 2014-06-18 12:00 | 118 |  |
| 120 |  | Edit Profile Module | 0.5d | 2014-06-18 13:00 | 2014-06-18 17:00 | 119 |  |
| 121 |  | Forgot Password Module | 0.5d | 2014-06-19 08:00 | 2014-06-19 12:00 | 120 |  |
| 122 | 1.2.5.2.2.2 | **Part 2** | 6d | 2014-06-19 08:00 | 2014-06-26 17:00 |  |  |
| 123 |  | Change Password Module | 0.5d | 2014-06-19 13:00 | 2014-06-19 17:00 | 121 |  |
| 124 |  | Forgot Password Module | 0.5d | 2014-06-20 08:00 | 2014-06-20 12:00 | 123 |  |
| 125 |  | Reading Document Module | 1d | 2014-06-20 13:00 | 2014-06-23 12:00 | 124 |  |
| 126 |  | Training Listening Module | 0.5d | 2014-06-23 13:00 | 2014-06-23 17:00 | 125 |  |
| 127 |  | Listening Conversation Module | 1d | 2014-06-24 08:00 | 2014-06-24 17:00 | 126 |  |
| 128 |  | Doing Test Module | 2d | 2014-06-25 08:00 | 2014-06-26 17:00 | 127 |  |
| 129 |  | Submit report no.4 First version | 0d | 2014-06-29 08:00 | 2014-06-29 08:00 | 128 |  |
| 130 |  | Review and update comments report #4 | 0.25d | 2014-06-30 08:00 | 2014-06-30 10:00 | 129 |  |
| 131 |  | Progress Report 4 | 0.5d | 2014-06-30 10:00 | 2014-06-30 15:00 | 130 |  |
| 132 |  | Submit report no.4 final version | 0d | 2014-06-30 13:00 | 2014-06-30 13:00 | 130 |  |
| 133 | 1.2.6 | **Coding and Unit Test** | 8d | 2014-06-20 08:00 | 2014-07-01 17:00 |  |  |
| 134 | 1.2.6.1 | **Part 1** | 8d | 2014-06-20 08:00 | 2014-07-01 17:00 |  | 0d |
| 135 |  | Admin’s account management Module | 1d | 2014-06-20 08:00 | 2014-06-20 17:00 | 101 |  |
| 136 |  | Management Member’s account Module | 1d | 2014-06-23 08:00 | 2014-06-23 17:00 | 135 |  |
| 137 |  | Vocabulary Management Module | 0.5d | 2014-06-24 08:00 | 2014-06-24 12:00 | 136 |  |
| 138 |  | Grammar Management Module | 0.5d | 2014-06-24 13:00 | 2014-06-24 17:00 | 137 |  |
| 139 |  | Reading Document Management Module | 1d | 2014-06-25 08:00 | 2014-06-25 17:00 | 138 |  |
| 140 |  | Conversation management Module | 1d | 2014-06-26 08:00 | 2014-06-26 17:00 | 139 |  |

| ID | WBS | Task | Duration | Start | Finish | Predecessors | Total float |
| --- | --- | --- | --- | --- | --- | --- | --- |
| 141 |  | Video Management Module | 0.5d | 2014-06-27 08:00 | 2014-06-27 12:00 | 140 |  |
| 142 |  | Listening Article Management Module | 0.5d | 2014-06-27 13:00 | 2014-06-27 17:00 | 141 |  |
| 143 |  | Doing test management Module | 1d | 2014-06-30 08:00 | 2014-06-30 17:00 | 142 |  |
| 144 |  | Contact's content management Module | 1d | 2014-07-01 08:00 | 2014-07-01 17:00 | 143 |  |
| 145 | 1.2.7 | **Testing** | 12d | 2014-06-16 08:00 | 2014-07-01 17:00 |  |  |
| 146 | 1.2.7.1 | **Create Test Document (Report 5)** | 5d | 2014-06-16 13:00 | 2014-06-23 13:00 |  | 0d |
| 147 |  | Create test plan | 4.5d | 2014-06-16 13:00 | 2014-06-20 17:00 | 71 |  |
| 148 |  | Review and update Test Plan | 0.5d | 2014-06-23 08:00 | 2014-06-23 12:00 | 147 |  |
| 149 |  | Submit Final Test Plan | 0d | 2014-06-23 13:00 | 2014-06-23 13:00 | 148 |  |
| 150 | 1.2.7.2 | **Create Test Case** | 6d | 2014-06-23 08:00 | 2014-06-28 17:00 |  |  |
| 151 |  | Create Unit Test Case | 5.5d | 2014-06-23 13:00 | 2014-06-28 17:00 | 149 |  |
| 152 | 1.3 | **Construction** | 29d | 2014-07-02 08:00 | 2014-08-11 17:00 |  |  |
| 153 | 1.3.1 | **Requirements & Design** | 2d | 2014-07-02 08:00 | 2014-07-03 17:00 |  |  |
| 154 |  | Refine requirement documents | 1d | 2014-07-02 08:00 | 2014-07-02 17:00 | 36 |  |
| 155 |  | Refine design documents | 0.5d | 2014-07-03 08:00 | 2014-07-03 12:00 | 154 |  |
| 156 | 1.3.2 | **Coding & Unit Test** | 14d | 2014-07-03 08:00 | 2014-07-22 17:00 |  |  |
| 157 | 1.3.2.1 | **Part 1 (Continue)** | 7.5d | 2014-07-03 13:00 | 2014-07-14 17:00 |  |  |
| 158 |  | Homepage Module | 1.5d | 2014-07-03 13:00 | 2014-07-04 17:00 | 155 |  |
| 159 | 1.3.2.1.2 | **Search Module** | 7d | 2014-07-05 08:00 | 2014-07-14 17:00 |  |  |
| 160 |  | Search Sentences Module | 2d | 2014-07-05 08:00 | 2014-07-07 17:00 | 158 |  |
| 161 |  | Search Conversation Module | 1d | 2014-07-08 08:00 | 2014-07-08 17:00 | 160 |  |
| 162 |  | Search Video Module | 1d | 2014-07-10 08:00 | 2014-07-10 17:00 | 161 |  |
| 163 |  | Search Grammar Module | 1d | 2014-07-11 08:00 | 2014-07-11 17:00 | 162 |  |
| 164 |  | Search Specialized Japanese Module | 1d | 2014-07-14 08:00 | 2014-07-14 17:00 | 163 |  |
| 165 |  | Login/Logout Module | 1d | 2014-07-07 08:00 | 2014-07-07 17:00 | 158 |  |
| 166 |  | Register Account Module | 1d | 2014-07-08 08:00 | 2014-07-08 17:00 | 165 |  |
| 167 |  | Edit Profile Module | 1d | 2014-07-09 08:00 | 2014-07-09 17:00 | 166 |  |
| 168 |  | Forgot Password Module | 1d | 2014-07-10 08:00 | 2014-07-10 17:00 | 167 |  |
| 169 | 1.3.2.2 | **Part 2** | 6d | 2014-07-15 08:00 | 2014-07-22 17:00 |  |  |
| 170 |  | Change Password Module | 1d | 2014-07-15 08:00 | 2014-07-15 17:00 | 164 |  |
| 171 |  | Forgot Password Module | 1d | 2014-07-16 08:00 | 2014-07-16 17:00 | 170 |  |
| 172 |  | Training Reading Document Module | 1.5d | 2014-07-17 08:00 | 2014-07-18 12:00 | 171 |  |
| 173 |  | Training Listening Module | 0.5d | 2014-07-18 13:00 | 2014-07-18 17:00 | 172 |  |
| 174 |  | Listening Conversation Module | 1d | 2014-07-18 08:00 | 2014-07-18 17:00 | 193 |  |
| 175 |  | Doing Test Module | 1.5d | 2014-07-21 08:00 | 2014-07-22 12:00 | 174 |  |
| 176 |  | Complete Coding | 0d | 2014-07-22 13:00 | 2014-07-22 13:00 | 175 |  |
| 177 | 1.3.3 | **Testing** | 20d | 2014-07-02 08:00 | 2014-07-29 17:00 |  |  |
| 178 | 1.3.3.1 | **Create test documents (Continue)** | 7d | 2014-07-02 08:00 | 2014-07-10 17:00 |  |  |
| 179 | 1.3.3.1.1 | **Create test cases** | 4d | 2014-07-02 08:00 | 2014-07-07 17:00 |  |  |
| 180 |  | Create Integration Test Case | 2d | 2014-07-03 08:00 | 2014-07-04 17:00 | 154 |  |
| 181 |  | Create System Test Case | 1d | 2014-07-07 08:00 | 2014-07-07 17:00 | 180 |  |
| 182 |  | Create test checklist | 1d | 2014-07-08 08:00 | 2014-07-08 17:00 | 181 |  |
| 183 |  | Review test documents | 0.5d | 2014-07-09 08:00 | 2014-07-09 12:00 | 182 |  |
| 184 |  | Submit report no.5 First version | 0d | 2014-07-09 13:00 | 2014-07-09 13:00 | 183 |  |
| 185 |  | Review report no.5 | 0.5d | 2014-07-09 13:00 | 2014-07-09 17:00 | 184 |  |
| 186 |  | Progress Report 5 | 0.5d | 2014-07-09 13:00 | 2014-07-09 17:00 | 184 |  |
| 187 |  | Submit report no.5 final version | 0d | 2014-07-10 08:00 | 2014-07-10 08:00 | 185 |  |
| 188 | 1.3.3.2 | **Execute test** | 11d | 2014-07-15 08:00 | 2014-07-29 17:00 |  |  |
| 189 | 1.3.3.2.1 | **Execute Test Part 1** | 3d | 2014-07-15 08:00 | 2014-07-17 17:00 |  |  |
| 190 |  | Execute Integration Test | 1d | 2014-07-15 08:00 | 2014-07-15 17:00 | 157 |  |
| 191 |  | Fix bug Integration Test | 1d | 2014-07-16 08:00 | 2014-07-16 17:00 | 190 |  |
| 192 |  | Execute System Test | 0.5d | 2014-07-17 08:00 | 2014-07-17 12:00 | 191 |  |
| 193 |  | Fix bug System Test | 0.5d | 2014-07-17 13:00 | 2014-07-17 17:00 | 192 |  |
| 194 | 1.3.3.2.2 | **Execute Test Part 2** | 5d | 2014-07-23 08:00 | 2014-07-29 17:00 |  |  |
| 195 |  | Execute Integration Test | 1d | 2014-07-22 13:00 | 2014-07-23 12:00 | 176 |  |
| 196 |  | Fix bug Integration Test | 1d | 2014-07-23 13:00 | 2014-07-24 12:00 | 195 |  |
| 197 |  | Execute System Test | 1d | 2014-07-24 13:00 | 2014-07-25 12:00 | 196 |  |
| 198 |  | Fix bug System Test | 2d | 2014-07-25 13:00 | 2014-07-29 12:00 | 197 |  |
| 199 |  | Complete Testing | 0d | 2014-07-29 13:00 | 2014-07-29 13:00 | 198 |  |
| 200 |  | Create report no.6 -Software User's Manual | 2d | 2014-07-29 13:00 | 2014-07-31 12:00 | 197, 199 |  |
| 201 |  | Submit report no.6 First version | 0d | 2014-07-31 13:00 | 2014-07-31 13:00 | 200 |  |
| 202 |  | Review & update report no.6 | 1d | 2014-07-31 13:00 | 2014-08-01 12:00 | 201 |  |
| 203 |  | Progress Report 6 | 1d | 2014-08-01 13:00 | 2014-08-04 12:00 | 202 |  |
| 204 |  | Submit report no.6 final version | 0d | 2014-08-04 13:00 | 2014-08-04 13:00 | 202, 203 |  |
| 205 |  | Prepare Final Report and Source Code | 5d | 2014-08-04 13:00 | 2014-08-11 12:00 | 204 |  |
| 206 |  | Submit Final document and CD Source Code | 0.5d | 2014-08-11 13:00 | 2014-08-11 17:00 | 204, 205 |  |
| 207 | 1.4 | **Termination** | 9d | 2014-08-12 08:00 | 2014-08-22 17:00 |  |  |
| 208 | 1.4.1 | **Preclosing** | 5d | 2014-08-12 08:00 | 2014-08-18 17:00 |  |  |
| 209 |  | Conduct project review-lessons learned | 2d | 2014-08-12 08:00 | 2014-08-13 17:00 | 206 |  |
| 210 |  | Complete program and documents | 3d | 2014-08-14 08:00 | 2014-08-18 17:00 | 209 |  |

| ID | WBS | Task | Duration | Start | Finish | Predecessors |
| --- | --- | --- | --- | --- | --- | --- |
| 211 | 1.4.2 | **Closing** | 5d | 2014-08-18 08:00 | 2014-08-22 17:00 |  |
| 212 |  | Prepare for presentation | 1.5d | 2014-08-19 08:00 | 2014-08-20 12:00 | 210 |
| 213 |  | Represent capstone project | 2d | 2014-08-20 13:00 | 2014-08-22 12:00 | 212 |
| 214 |  | Project completed | 0d | 2014-08-22 13:00 | 2014-08-22 13:00 | 213 |

## Version 2 (saved 2014-08-16)

Last finish 2014-08-22 → 2014-08-29 (+7d). Complete tasks 0 → 172.

Added:

| ID | Task | Duration | Start | Finish | Predecessors | Resources |
| --- | --- | --- | --- | --- | --- | --- |
| 29 | Q & A Management (Update) | 1d | 2014-05-22 13:00 A | 2014-05-23 12:00 A | 27 | TuanNN |
| 48 | Create Configuration Plan version 1.0 | 1d | 2014-06-06 08:00 A | 2014-06-06 17:00 A | 46 | TuanNN |
| 64 | Kanji Management Module | 0.5d | 2014-06-17 08:00 A | 2014-06-17 12:00 A | 63 | TuanNN |
| 65 | Sentence Management Module | 0.5d | 2014-06-17 13:00 A | 2014-06-17 17:00 A | 64 | TuanNN |
| 85 | Q & A Management (Update) | 0.25d | 2014-06-10 08:00 A | 2014-06-10 10:00 A | 84 | TuanNN |
| 97 | Q & A Management (Update) | 0.25d | 2014-06-11 08:00 A | 2014-06-11 10:00 A | 94 | TuanNN |
| 118 | Kanji Management Module | 0.5d | 2014-06-20 08:00 A | 2014-06-20 12:00 A | 117 | NamLD |
| 119 | Sentence Management Module | 0.5d | 2014-06-20 13:00 A | 2014-06-20 17:00 A | 118 | NamLD |
| 137 | Q & A Management (Update) | 0.25d | 2014-06-27 08:00 A | 2014-06-27 10:00 A | 136 | TuanNN |
| 192 | Q & A Management (Update) | 0.5d | 2014-07-11 13:00 A | 2014-07-11 17:00 A | 191 | TuanNN |
| 209 | Create Test Report first verstion | 0.5d | 2014-07-31 08:00 A | 2014-07-31 12:00 A | 208 | MinhPT |
| 210 | Report no.5 Final (Update) | 0.5d | 2014-07-31 13:00 A | 2014-07-31 17:00 A | 209 | MinhPT |
| 211 | Q & A Management (Update) | 0.5d | 2014-07-31 08:00 A | 2014-07-31 12:00 A | 208 | TuanNN |

Removed: 155 Refine design documents; 210 Complete program and documents; 214 Project completed

Changed:

| ID | Task | Start | Finish | Duration | Complete | Total float | Other |
| --- | --- | --- | --- | --- | --- | --- | --- |
| 1 | **UJD_VN** | 2014-05-12 08:00 A | 2014-08-22 17:00 → 2014-08-29 17:00 (+7d) | 75d → 80d | 0% → 98% | none → 0d |  |
| 2 | **Initiation** | 2014-05-12 08:00 A | 2014-05-30 17:00 → 2014-05-30 08:00 | 15d → 14d | 0% → 99% | 0d → 66d |  |
| 3 | Develop project Idea | 2014-05-12 08:00 A | 2014-05-12 17:00 A |  | 0% → 100% |  |  |
| 4 | Prepare project | 2014-05-13 08:00 A | 2014-05-13 12:00 A |  | 0% → 100% |  |  |
| 5 | Q & A Management | 2014-05-13 13:00 A | 2014-05-13 17:00 A |  | 0% → 100% |  |  |
| 6 | **Develop report no.1: Introduction** | 2014-05-13 08:00 A | 2014-05-20 17:00 → 2014-05-20 08:00 A | 6d → 5d | 0% → 100% |  |  |
| 7 | System feasible study | 2014-05-13 08:00 A | 2014-05-13 17:00 A |  | 0% → 100% |  |  |
| 8 | Define business situation | 2014-05-13 08:00 A | 2014-05-13 17:00 A |  | 0% → 100% |  |  |
| 9 | Define project and system scope | 2014-05-14 08:00 A | 2014-05-14 17:00 A |  | 0% → 100% |  |  |
| 10 | Review & update report no.1 : Draft vesion | 2014-05-15 08:00 A | 2014-05-15 12:00 A |  | 0% → 100% |  |  |
| 11 | Submit report no.1 first version | 2014-05-15 13:00 A | 2014-05-15 17:00 A |  | 0% → 100% |  |  |
| 12 | Revise after got comments for report no.1 | 2014-05-16 08:00 A | 2014-05-16 17:00 A |  | 0% → 100% |  |  |
| 13 | Kick-off meeting | 2014-05-19 08:00 A | 2014-05-19 08:00 A |  | 0% → 100% |  |  |
| 14 | Progress Report 1 | 2014-05-19 08:00 A | 2014-05-19 17:00 A |  | 0% → 100% |  |  |
| 15 | Submit report no.1 final version | 2014-05-20 08:00 A | 2014-05-20 08:00 A |  | 0% → 100% |  |  |
| 16 | **Technologies** | 2014-05-15 08:00 A | 2014-05-27 17:00 → 2014-05-27 12:00 A | 9d → 8.5d | 0% → 100% |  |  |
| 17 | Research development technology | 2014-05-15 08:00 A | 2014-05-16 17:00 A |  | 0% → 100% |  |  |
| 18 | Install and configuration PHP with Xampp | 2014-05-19 08:00 A | 2014-05-19 12:00 A |  | 0% → 100% |  |  |
| 19 | Study Xampp and PHP, MYSQL | 2014-05-19 13:00 A | 2014-05-27 12:00 A |  | 0% → 100% |  |  |
| 20 | **Requirements** | 2014-05-20 08:00 A | 2014-05-30 17:00 → 2014-05-30 08:00 A | 9d → 8d | 0% → 100% |  |  |
| 21 | Collect business requirements and processes | 2014-05-20 08:00 A | 2014-05-20 17:00 A |  | 0% → 100% |  |  |
| 22 | Create draft screen prototypes | 2014-05-21 08:00 A | 2014-05-28 17:00 A |  | 0% → 100% |  |  |
| 23 | Review and edit screen prototypes | 2014-05-29 08:00 A | 2014-05-29 17:00 A |  | 0% → 100% |  |  |
| 24 | Complete screen prototype | 2014-05-30 08:00 A | 2014-05-30 08:00 A |  | 0% → 100% |  |  |
| 25 | **Develop Project Plan** | 2014-05-20 08:00 → 2014-05-20 10:00 A | 2014-05-30 17:00 → 2014-05-30 08:00 | 9d → 7.75d | 0% → 94% | none → 66d |  |
| 26 | Develop project definition | 2014-05-20 10:00 A | 2014-05-21 10:00 A |  | 0% → 100% |  |  |
| 27 | Work BreakDown Structure | 2014-05-22 08:00 A | 2014-05-22 12:00 A |  | 0% → 100% |  |  |
| 28 | Create project schedule | 2014-05-23 08:00 A | 2014-05-23 17:00 A |  | 0% → 100% |  |  |
| 30 | **Develop report no.2: Project management Plan** | 2014-05-24 08:00 → 2014-05-26 08:00 A (+2d) | 2014-05-30 17:00 → 2014-05-30 08:00 | 6d → 4d | 0% → 89% | none → 66d |  |
| 31 | Create Project plan first version | 2014-05-24 08:00 → 2014-05-26 08:00 A (+2d) | 2014-05-26 17:00 → 2014-05-27 17:00 (+1d) |  | 0% → 80% | none → 68d |  |
| 32 | Submit Report no.2 first version | 2014-05-27 08:00 → 2014-05-28 08:00 A (+1d) | 2014-05-27 08:00 → 2014-05-28 08:00 A (+1d) |  | 0% → 100% |  | was named Submit report no.2 first version |
| 33 | Revise after got comments for report no.2 | 2014-05-27 08:00 → 2014-05-28 08:00 A (+1d) | 2014-05-27 17:00 → 2014-05-28 12:00 A (+1d) | 1d → 0.5d | 0% → 100% |  |  |
| 34 | Complete Project Plan Final Version | 2014-05-28 08:00 → 2014-05-29 08:00 A (+1d) | 2014-05-28 08:00 → 2014-05-29 12:00 A (+1d) | 0d → 0.5d | 0% → 100% |  |  |
| 35 | Progress Report 2 | 2014-05-29 08:00 A | 2014-05-29 17:00 → 2014-05-29 12:00 A | 1d → 0.5d | 0% → 100% |  |  |
| 36 | Submit report no.2 final version | 2014-05-30 08:00 A | 2014-05-30 08:00 A |  | 0% → 100% |  |  |
| 37 | **Solution** | 2014-06-02 08:00 A | 2014-07-01 17:00 → 2014-07-03 12:00 (+2d) | 22d → 23.5d | 0% → 99% | none → 41.5d |  |
| 38 | **Project Management** | 2014-06-02 08:00 A | 2014-06-04 17:00 → 2014-06-03 17:00 A (-1d) | 3d → 2d | 0% → 100% |  |  |
| 39 | Refine project plan | 2014-06-02 08:00 A | 2014-06-03 17:00 A |  | 0% → 100% |  |  |
| 40 | **Technologies** | 2014-06-02 08:00 A | 2014-06-10 17:00 A |  | 0% → 100% |  |  |
| 41 | Design database models | 2014-06-02 08:00 A | 2014-06-02 17:00 A |  | 0% → 100% |  |  |
| 42 | Coding prototypes | 2014-06-03 08:00 A | 2014-06-10 17:00 A |  | 0% → 100% |  |  |
| 43 | **User Requirements Specification** | 2014-06-02 08:00 A |  |  | 0% → 97% | none → 60d |  |
| 44 | Create draft requirements | 2014-06-02 08:00 A | 2014-06-03 17:00 A |  | 0% → 100% |  |  |
| 45 | Complete draft requirements | 2014-06-04 08:00 A | 2014-06-04 08:00 A |  | 0% → 100% |  |  |
| 46 | Completed User Requirement Document | 2014-06-04 08:00 A |  |  | 0% → 80% | none → 62d | was named Develop Use-case model |
| 47 | Develop main functions and processes | 2014-06-05 08:00 A | 2014-06-06 17:00 A |  | 0% → 100% |  |  |
| 49 | **Software Requirements Specification** | 2014-06-09 08:00 A | 2014-06-20 17:00 → 2014-06-20 15:00 | 10d → 9.75d | 0% → 99% | none → 50.25d |  |
| 50 | **Functional Requirement Specification** | 2014-06-09 08:00 A | 2014-06-20 17:00 → 2014-06-20 10:00 A | 10d → 9.25d | 0% → 100% |  |  |
| 51 | **Part 1** | 2014-06-09 08:00 A | 2014-06-16 17:00 → 2014-06-17 17:00 A (+1d) | 6d → 7d | 0% → 100% |  |  |
| 52 | Homepage Module | 2014-06-09 08:00 A | 2014-06-09 17:00 A |  | 0% → 100% |  |  |
| 53 | **Admin Module** | 2014-06-10 08:00 A | 2014-06-16 17:00 → 2014-06-17 17:00 A (+1d) | 5d → 6d | 0% → 100% |  |  |
| 54 | Admin’s account management Module | 2014-06-10 08:00 A | 2014-06-10 12:00 A |  | 0% → 100% |  |  |
| 55 | Management Member’s account Module | 2014-06-10 13:00 A | 2014-06-10 17:00 A |  | 0% → 100% |  |  |
| 56 | Vocabulary Management Module | 2014-06-11 08:00 A | 2014-06-11 12:00 A |  | 0% → 100% |  |  |
| 57 | Grammar Management Module | 2014-06-11 13:00 A | 2014-06-11 17:00 A |  | 0% → 100% |  |  |
| 58 | Reading Document Management Module | 2014-06-12 08:00 A | 2014-06-12 12:00 A |  | 0% → 100% |  |  |
| 59 | Conversation management Module | 2014-06-12 13:00 A | 2014-06-12 17:00 A |  | 0% → 100% |  |  |
| 60 | Video Management Module | 2014-06-13 08:00 A | 2014-06-13 12:00 A |  | 0% → 100% |  |  |
| 61 | Training Listening Management Module | 2014-06-13 13:00 A | 2014-06-13 17:00 A |  | 0% → 100% |  | was named Listening Article Management Module |
| 62 | Test management Module | 2014-06-16 08:00 A | 2014-06-16 12:00 A |  | 0% → 100% |  | was named Doing test management Module |
| 63 | Contact's content management Module | 2014-06-16 13:00 A | 2014-06-16 17:00 A |  | 0% → 100% |  |  |
| 66 | **Search Module** | 2014-06-10 08:00 A | 2014-06-12 17:00 → 2014-06-12 12:00 A | 3d → 2.5d | 0% → 100% |  |  |
| 67 | Search Sentences Module | 2014-06-10 08:00 A | 2014-06-10 12:00 A |  | 0% → 100% |  |  |
| 68 | Search Conversation Module | 2014-06-10 13:00 A | 2014-06-10 17:00 A |  | 0% → 100% |  |  |
| 69 | Search Video Module | 2014-06-11 08:00 A | 2014-06-11 12:00 A |  | 0% → 100% |  |  |
| 70 | Search Grammar Module | 2014-06-11 13:00 A | 2014-06-11 17:00 A |  | 0% → 100% |  |  |
| 71 | Search Specialized Japanese Module | 2014-06-12 08:00 A | 2014-06-12 12:00 A |  | 0% → 100% |  |  |
| 72 | Login/Logout Module | 2014-06-12 13:00 A | 2014-06-12 17:00 A |  | 0% → 100% |  |  |
| 73 | Register Account Module | 2014-06-13 08:00 A | 2014-06-13 12:00 A |  | 0% → 100% |  |  |
| 74 | Edit Profile Module | 2014-06-13 13:00 A | 2014-06-13 17:00 A |  | 0% → 100% |  |  |

| ID | Task | Start | Finish | Duration | Complete | Total float | Other |
| --- | --- | --- | --- | --- | --- | --- | --- |
| 75 | Forgot Password Module | 2014-06-16 08:00 A | 2014-06-16 12:00 A |  | 0% → 100% |  |  |
| 76 | **Part 2** | 2014-06-16 08:00 → 2014-06-17 08:00 A (+1d) | 2014-06-20 17:00 → 2014-06-20 10:00 A | 5d → 3.25d | 0% → 100% |  |  |
| 77 | Contact Admin Module | 2014-06-17 08:00 A | 2014-06-18 12:00 A |  | 0% → 100% |  |  |
| 78 | Doing Test Module | 2014-06-18 13:00 A | 2014-06-18 17:00 A |  | 0% → 100% |  |  |
| 79 | Reading Document Module | 2014-06-19 08:00 A | 2014-06-19 12:00 A |  | 0% → 100% |  |  |
| 80 | Training Listening Module | 2014-06-19 13:00 A | 2014-06-19 17:00 A |  | 0% → 100% |  |  |
| 81 | Conversation Module | 2014-06-20 08:00 A | 2014-06-20 10:00 A |  | 0% → 100% |  | was named Listening Conversation Module |
| 82 | **Non-functional Requirements Specification** | 2014-06-09 08:00 A | 2014-06-09 17:00 A |  | 0% → 100% |  |  |
| 83 | Develop User Interface requirements | 2014-06-09 08:00 A | 2014-06-09 17:00 A |  | 0% → 100% |  |  |
| 84 | Develop Performance requirements | 2014-06-09 08:00 A | 2014-06-09 17:00 A |  | 0% → 100% |  |  |
| 86 | Submit report no.3 First version | 2014-06-20 10:00 A |  |  | 0% → 90% | none → 50.75d |  |
| 87 | Revise after got comments of Report no.3 | 2014-06-20 10:00 A | 2014-06-20 12:00 A |  | 0% → 100% |  |  |
| 88 | Complete SRS Version 1.0 | 2014-06-20 13:00 A | 2014-06-20 13:00 A |  | 0% → 100% |  | was named Complete SRS Final Version |
| 89 | Progress Report 3 | 2014-06-20 13:00 A | 2014-06-20 15:00 A |  | 0% → 100% |  |  |
| 90 | Submit report no.3 final version | 2014-06-20 15:00 A | 2014-06-20 15:00 A |  | 0% → 100% |  |  |
| 91 | **Design** | 2014-06-09 08:00 A | 2014-07-01 17:00 → 2014-06-30 15:00 A (-1d) | 17d → 15.75d | 0% → 100% |  |  |
| 92 | **System Architectural Design** | 2014-06-09 08:00 A | 2014-06-12 17:00 A |  | 0% → 100% |  |  |
| 93 | Define the system structure and collect system features | 2014-06-09 08:00 A | 2014-06-09 17:00 A |  | 0% → 100% |  |  |
| 94 | Study the common System Architeture | 2014-06-10 08:00 A | 2014-06-10 17:00 A |  | 0% → 100% |  |  |
| 95 | Choice of System Architeture | 2014-06-11 08:00 A | 2014-06-11 17:00 A |  | 0% → 100% |  |  |
| 96 | Complete Architecture Design version 1.0 | 2014-06-12 08:00 A | 2014-06-12 17:00 A |  | 0% → 100% |  | was named Discussion of Alternative Design |
| 98 | **Detailed Design** | 2014-06-10 08:00 A | 2014-07-01 17:00 → 2014-06-26 17:00 A (-5d) | 16d → 13d | 0% → 100% |  |  |
| 99 | **Component Diagram** | 2014-06-10 08:00 A | 2014-06-11 17:00 A |  | 0% → 100% |  |  |
| 100 | Define the component | 2014-06-10 08:00 A | 2014-06-10 12:00 A |  | 0% → 100% |  |  |
| 101 | Completed Screen Design version 1.0 | 2014-06-10 13:00 A | 2014-06-10 17:00 A |  | 0% → 100% |  | was named General component diagram |
| 102 | Completed Class Design version 1.0 | 2014-06-11 08:00 A | 2014-06-11 12:00 A |  | 0% → 100% |  | was named Detail component diagram |
| 103 | Detail Data Design | 2014-06-11 13:00 A | 2014-06-11 17:00 A |  | 0% → 100% |  | was named Detail Database Design |
| 104 | **User Interface Design** | 2014-06-12 08:00 A | 2014-06-26 17:00 A |  | 0% → 100% | 0d → none |  |
| 105 | **Part 1** | 2014-06-12 08:00 A | 2014-06-19 17:00 → 2014-06-20 17:00 A (+1d) | 6d → 7d | 0% → 100% |  |  |
| 106 | Homepage Module | 2014-06-12 08:00 A | 2014-06-12 17:00 A |  | 0% → 100% |  |  |
| 107 | **Admin Module** | 2014-06-13 08:00 A | 2014-06-19 17:00 → 2014-06-20 17:00 A (+1d) | 5d → 6d | 0% → 100% |  |  |
| 108 | Admin’s account management Module | 2014-06-13 08:00 A | 2014-06-13 12:00 A |  | 0% → 100% |  |  |
| 109 | Management Member’s account Module | 2014-06-13 13:00 A | 2014-06-13 17:00 A |  | 0% → 100% |  |  |
| 110 | Vocabulary Management Module | 2014-06-16 08:00 A | 2014-06-16 12:00 A |  | 0% → 100% |  |  |
| 111 | Grammar Management Module | 2014-06-16 13:00 A | 2014-06-16 17:00 A |  | 0% → 100% |  |  |
| 112 | Reading Document Management Module | 2014-06-17 08:00 A | 2014-06-17 12:00 A |  | 0% → 100% |  |  |
| 113 | Conversation management Module | 2014-06-17 13:00 A | 2014-06-17 17:00 A |  | 0% → 100% |  |  |
| 114 | Video Management Module | 2014-06-18 08:00 A | 2014-06-18 12:00 A |  | 0% → 100% |  |  |
| 115 | Listening Article Management Module | 2014-06-18 13:00 A | 2014-06-18 17:00 A |  | 0% → 100% |  |  |
| 116 | Doing test management Module | 2014-06-19 08:00 A | 2014-06-19 12:00 A |  | 0% → 100% |  |  |
| 117 | Contact's content management Module | 2014-06-19 13:00 A | 2014-06-19 17:00 A |  | 0% → 100% |  |  |
| 120 | **Search Module** | 2014-06-13 08:00 A | 2014-06-19 17:00 → 2014-06-17 12:00 A (-2d) | 5d → 2.5d | 0% → 100% |  |  |
| 121 | Search Sentences Module | 2014-06-13 08:00 A | 2014-06-13 12:00 A |  | 0% → 100% |  |  |
| 122 | Search Conversation Module | 2014-06-13 13:00 A | 2014-06-13 17:00 A |  | 0% → 100% |  |  |
| 123 | Search Video Module | 2014-06-16 08:00 A | 2014-06-16 12:00 A |  | 0% → 100% |  |  |
| 124 | Search Grammar Module | 2014-06-16 13:00 A | 2014-06-16 17:00 A |  | 0% → 100% |  |  |
| 125 | Search Specialized Japanese Module | 2014-06-17 08:00 A | 2014-06-17 12:00 A |  | 0% → 100% |  |  |
| 126 | Login/Logout Module | 2014-06-17 13:00 A | 2014-06-17 17:00 A |  | 0% → 100% |  |  |
| 127 | Register Account Module | 2014-06-18 08:00 A | 2014-06-18 12:00 A |  | 0% → 100% |  |  |
| 128 | Edit Profile Module | 2014-06-18 13:00 A | 2014-06-18 17:00 A |  | 0% → 100% |  |  |
| 129 | Forgot Password Module | 2014-06-19 08:00 A | 2014-06-19 12:00 A |  | 0% → 100% |  |  |
| 130 | **Part 2** | 2014-06-19 08:00 → 2014-06-19 13:00 A | 2014-06-26 17:00 A | 6d → 5.5d | 0% → 100% |  |  |
| 131 | Change Password Module | 2014-06-19 13:00 A | 2014-06-19 17:00 A |  | 0% → 100% |  |  |
| 132 | Forgot Password Module | 2014-06-20 08:00 A | 2014-06-20 12:00 A |  | 0% → 100% |  |  |
| 133 | Reading Document Module | 2014-06-20 13:00 A | 2014-06-23 12:00 A |  | 0% → 100% |  |  |
| 134 | Training Listening Module | 2014-06-23 13:00 A | 2014-06-23 17:00 A |  | 0% → 100% |  |  |
| 135 | Listening Conversation Module | 2014-06-24 08:00 A | 2014-06-24 17:00 A |  | 0% → 100% |  |  |
| 136 | Doing Test Module | 2014-06-25 08:00 A | 2014-06-26 17:00 A |  | 0% → 100% |  |  |
| 138 | Submit report no.4 First version | 2014-06-29 08:00 → 2014-06-27 08:00 A (-2d) | 2014-06-29 08:00 → 2014-06-27 08:00 A (-2d) |  | 0% → 100% |  |  |
| 139 | Review and update comments report #4 | 2014-06-30 08:00 A | 2014-06-30 10:00 A |  | 0% → 100% |  |  |
| 140 | Progress Report 4 | 2014-06-30 10:00 A | 2014-06-30 15:00 A |  | 0% → 100% |  |  |
| 141 | Submit report no.4 final version | 2014-06-30 13:00 A | 2014-06-30 13:00 A |  | 0% → 100% |  |  |
| 142 | **Coding and Unit Test** | 2014-06-20 08:00 → 2014-06-23 08:00 A (+3d) | 2014-07-01 17:00 → 2014-07-03 12:00 A (+2d) | 8d → 8.5d | 0% → 100% |  |  |
| 143 | **Part 1** | 2014-06-20 08:00 → 2014-06-23 08:00 A (+3d) | 2014-07-01 17:00 → 2014-07-03 12:00 A (+2d) | 8d → 8.5d | 0% → 100% | 0d → none |  |
| 144 | Admin’s account management Module | 2014-06-20 08:00 → 2014-06-23 08:00 A (+3d) | 2014-06-20 17:00 → 2014-06-23 17:00 A (+3d) |  | 0% → 100% |  |  |
| 145 | Management Member’s account Module | 2014-06-23 08:00 → 2014-06-24 08:00 A (+1d) | 2014-06-23 17:00 → 2014-06-24 17:00 A (+1d) |  | 0% → 100% |  |  |
| 146 | Vocabulary Management Module | 2014-06-24 08:00 → 2014-06-25 08:00 A (+1d) | 2014-06-24 12:00 → 2014-06-26 12:00 A (+2d) | 0.5d → 1.5d | 0% → 100% |  |  |
| 147 | Grammar Management Module | 2014-06-24 13:00 → 2014-06-26 08:00 A (+2d) | 2014-06-24 17:00 → 2014-06-26 12:00 A (+2d) |  | 0% → 100% |  |  |
| 148 | Reading Document Management Module | 2014-06-25 08:00 → 2014-06-27 08:00 A (+2d) | 2014-06-25 17:00 → 2014-06-27 17:00 A (+2d) |  | 0% → 100% |  |  |
| 149 | Conversation management Module | 2014-06-26 08:00 → 2014-06-30 08:00 A (+4d) | 2014-06-26 17:00 → 2014-06-30 17:00 A (+4d) |  | 0% → 100% |  |  |

| ID | Task | Start | Finish | Duration | Complete | Total float | Predecessors | Other |
| --- | --- | --- | --- | --- | --- | --- | --- | --- |
| 150 | Video Management Module | 2014-06-27 08:00 → 2014-07-01 08:00 A (+4d) | 2014-06-27 12:00 → 2014-07-01 12:00 A (+4d) |  | 0% → 100% |  |  |  |
| 151 | Listening Article Management Module | 2014-06-27 13:00 → 2014-07-02 08:00 A (+5d) | 2014-06-27 17:00 → 2014-07-02 12:00 A (+5d) |  | 0% → 100% |  |  |  |
| 152 | Doing test management Module | 2014-06-30 08:00 → 2014-07-03 08:00 A (+3d) | 2014-06-30 17:00 → 2014-07-03 12:00 A (+3d) | 1d → 0.5d | 0% → 100% |  |  |  |
| 153 | Contact's content management Module | 2014-07-01 08:00 → 2014-07-03 08:00 A (+2d) | 2014-07-01 17:00 → 2014-07-03 12:00 A (+2d) | 1d → 0.5d | 0% → 100% |  |  |  |
| 154 | **Testing** | 2014-06-16 08:00 → 2014-06-16 13:00 A | 2014-07-01 17:00 → 2014-06-28 17:00 (-3d) | 12d → 9.5d | 0% → 91% | none → 45d |  |  |
| 155 | **Create Test Document (Report 5)** | 2014-06-16 13:00 A |  |  | 0% → 82% | 0d → 49.5d |  |  |
| 156 | Create test plan | 2014-06-16 13:00 A |  |  | 0% → 80% | none → 50d |  |  |
| 157 | Review and update Test Plan | 2014-06-23 08:00 A | 2014-06-23 12:00 A |  | 0% → 100% |  |  |  |
| 158 | Submit Final Test Plan | 2014-06-23 13:00 A | 2014-06-23 13:00 A |  | 0% → 100% |  |  |  |
| 159 | **Create Test Case** | 2014-06-23 08:00 → 2014-06-23 13:00 A | 2014-06-28 17:00 A | 6d → 4.5d | 0% → 100% |  |  |  |
| 160 | Create Unit Test Case | 2014-06-23 13:00 A | 2014-06-28 17:00 A |  | 0% → 100% |  |  |  |
| 161 | **Construction** | 2014-07-02 08:00 → 2014-07-04 08:00 A (+2d) | 2014-08-11 17:00 → 2014-08-21 12:00 A (+10d) | 29d → 34.5d | 0% → 100% |  |  |  |
| 162 | **Requirements & Design** | 2014-07-02 08:00 → 2014-07-04 08:00 A (+2d) | 2014-07-03 17:00 → 2014-07-04 10:00 A (+1d) | 2d → 0.25d | 0% → 100% |  |  |  |
| 163 | Refine requirement & design documents | 2014-07-02 08:00 → 2014-07-04 08:00 A (+2d) | 2014-07-02 17:00 → 2014-07-04 10:00 A (+2d) | 1d → 0.25d | 0% → 100% |  |  | was named Refine requirement documents |
| 164 | **Coding & Unit Test** | 2014-07-03 08:00 → 2014-07-04 08:00 A (+1d) | 2014-07-22 17:00 → 2014-07-24 17:00 A (+2d) | 14d → 15d | 0% → 100% |  |  |  |
| 165 | **Part 1 (Continue)** | 2014-07-03 13:00 → 2014-07-04 08:00 A (+1d) | 2014-07-14 17:00 → 2014-07-15 17:00 A (+1d) | 7.5d → 8d | 0% → 100% |  |  |  |
| 166 | Homepage Module | 2014-07-03 13:00 → 2014-07-04 08:00 A (+1d) | 2014-07-04 17:00 → 2014-07-07 17:00 A (+3d) | 1.5d → 2d | 0% → 100% |  | Refine design documents → none |  |
| 167 | **Search Module** | 2014-07-05 08:00 → 2014-07-08 08:00 A (+3d) | 2014-07-14 17:00 → 2014-07-15 17:00 A (+1d) | 7d → 6d | 0% → 100% |  |  |  |
| 168 | Search Sentences Module | 2014-07-05 08:00 → 2014-07-08 08:00 A (+3d) | 2014-07-07 17:00 → 2014-07-09 17:00 A (+2d) |  | 0% → 100% |  |  |  |
| 169 | Search Conversation Module | 2014-07-08 08:00 → 2014-07-10 08:00 A (+2d) | 2014-07-08 17:00 → 2014-07-10 17:00 A (+2d) |  | 0% → 100% |  |  |  |
| 170 | Search Video Module | 2014-07-10 08:00 → 2014-07-11 08:00 A (+1d) | 2014-07-10 17:00 → 2014-07-11 17:00 A (+1d) |  | 0% → 100% |  |  |  |
| 171 | Search Grammar Module | 2014-07-11 08:00 → 2014-07-14 08:00 A (+3d) | 2014-07-11 17:00 → 2014-07-14 17:00 A (+3d) |  | 0% → 100% |  |  |  |
| 172 | Search Specialized Japanese Module | 2014-07-14 08:00 → 2014-07-15 08:00 A (+1d) | 2014-07-14 17:00 → 2014-07-15 17:00 A (+1d) |  | 0% → 100% |  |  |  |
| 173 | Login/Logout Module | 2014-07-07 08:00 → 2014-07-08 08:00 A (+1d) | 2014-07-07 17:00 → 2014-07-08 17:00 A (+1d) |  | 0% → 100% |  |  |  |
| 174 | Register Account Module | 2014-07-08 08:00 → 2014-07-09 08:00 A (+1d) | 2014-07-08 17:00 → 2014-07-09 17:00 A (+1d) |  | 0% → 100% |  |  |  |
| 175 | Edit Profile Module | 2014-07-09 08:00 → 2014-07-10 08:00 A (+1d) | 2014-07-09 17:00 → 2014-07-10 17:00 A (+1d) |  | 0% → 100% |  |  |  |
| 176 | Forgot Password Module | 2014-07-10 08:00 → 2014-07-11 08:00 A (+1d) | 2014-07-10 17:00 → 2014-07-11 17:00 A (+1d) |  | 0% → 100% |  |  |  |
| 177 | **Part 2** | 2014-07-15 08:00 → 2014-07-16 08:00 A (+1d) | 2014-07-22 17:00 → 2014-07-24 17:00 A (+2d) | 6d → 7d | 0% → 100% |  |  |  |
| 178 | Change Password Module | 2014-07-15 08:00 → 2014-07-16 08:00 A (+1d) | 2014-07-15 17:00 → 2014-07-16 17:00 A (+1d) |  | 0% → 100% |  |  |  |
| 179 | Forgot Password Module | 2014-07-16 08:00 → 2014-07-17 08:00 A (+1d) | 2014-07-16 17:00 → 2014-07-17 17:00 A (+1d) |  | 0% → 100% |  |  |  |
| 180 | Training Reading Document Module | 2014-07-17 08:00 → 2014-07-18 08:00 A (+1d) | 2014-07-18 12:00 → 2014-07-21 12:00 A (+3d) |  | 0% → 100% |  |  |  |
| 181 | Training Listening Module | 2014-07-18 13:00 → 2014-07-22 08:00 A (+4d) | 2014-07-18 17:00 → 2014-07-22 12:00 A (+4d) |  | 0% → 100% |  |  |  |
| 182 | Listening Conversation Module | 2014-07-18 08:00 → 2014-07-22 08:00 A (+4d) | 2014-07-18 17:00 → 2014-07-22 17:00 A (+4d) |  | 0% → 100% |  |  |  |
| 183 | Doing Test Module | 2014-07-21 08:00 → 2014-07-24 08:00 A (+3d) | 2014-07-22 12:00 → 2014-07-24 17:00 A (+2d) | 1.5d → 1d | 0% → 100% |  |  |  |
| 184 | Complete Coding | 2014-07-22 13:00 → 2014-07-24 08:00 A (+2d) | 2014-07-22 13:00 → 2014-07-24 08:00 A (+2d) |  | 0% → 100% |  |  |  |
| 185 | **Testing** | 2014-07-02 08:00 → 2014-07-07 08:00 A (+5d) | 2014-07-29 17:00 → 2014-07-31 17:00 A (+2d) | 20d → 19d | 0% → 100% |  |  |  |
| 186 | **Create test documents (Continue)** | 2014-07-02 08:00 → 2014-07-07 08:00 A (+5d) | 2014-07-10 17:00 → 2014-07-16 08:00 A (+6d) |  | 0% → 100% |  |  |  |
| 187 | **Create test cases** | 2014-07-02 08:00 → 2014-07-07 08:00 A (+5d) | 2014-07-07 17:00 → 2014-07-09 12:00 A (+2d) | 4d → 2.5d | 0% → 100% |  |  |  |
| 188 | Create Integration Test Case | 2014-07-03 08:00 → 2014-07-07 08:00 A (+4d) | 2014-07-04 17:00 → 2014-07-08 12:00 A (+4d) | 2d → 1.5d | 0% → 100% |  |  |  |
| 189 | Create System Test Case | 2014-07-07 08:00 → 2014-07-09 08:00 A (+2d) | 2014-07-07 17:00 → 2014-07-09 12:00 A (+2d) | 1d → 0.5d | 0% → 100% |  |  |  |
| 190 | Create test checklist | 2014-07-08 08:00 → 2014-07-10 08:00 A (+2d) | 2014-07-08 17:00 → 2014-07-10 17:00 A (+2d) |  | 0% → 100% |  |  |  |
| 191 | Review test documents | 2014-07-09 08:00 → 2014-07-11 08:00 A (+2d) | 2014-07-09 12:00 → 2014-07-11 12:00 A (+2d) |  | 0% → 100% |  |  |  |
| 193 | Submit report no.5 First version | 2014-07-09 13:00 → 2014-07-14 08:00 A (+5d) | 2014-07-09 13:00 → 2014-07-14 08:00 A (+5d) |  | 0% → 100% |  |  |  |
| 194 | Review report no.5 | 2014-07-09 13:00 → 2014-07-15 08:00 A (+6d) | 2014-07-09 17:00 → 2014-07-15 12:00 A (+6d) |  | 0% → 100% |  |  |  |
| 195 | Progress Report 5 | 2014-07-09 13:00 → 2014-07-15 08:00 A (+6d) | 2014-07-09 17:00 → 2014-07-15 12:00 A (+6d) |  | 0% → 100% |  |  |  |
| 196 | Submit report no.5 version 1.0 | 2014-07-10 08:00 → 2014-07-16 08:00 A (+6d) | 2014-07-10 08:00 → 2014-07-16 08:00 A (+6d) |  | 0% → 100% |  |  | was named Submit report no.5 final version |
| 197 | **Execute test** | 2014-07-15 08:00 → 2014-07-17 08:00 A (+2d) | 2014-07-29 17:00 → 2014-07-31 17:00 A (+2d) |  | 0% → 100% |  |  |  |
| 198 | **Execute Test Part 1** | 2014-07-15 08:00 → 2014-07-17 08:00 A (+2d) | 2014-07-17 17:00 → 2014-07-24 17:00 A (+7d) | 3d → 6d | 0% → 100% |  |  |  |
| 199 | Execute Integration Test | 2014-07-15 08:00 → 2014-07-17 08:00 A (+2d) | 2014-07-15 17:00 → 2014-07-21 17:00 A (+6d) | 1d → 3d | 0% → 100% |  |  |  |
| 200 | Fix bug Integration Test | 2014-07-16 08:00 → 2014-07-22 08:00 A (+6d) | 2014-07-16 17:00 → 2014-07-22 17:00 A (+6d) |  | 0% → 100% |  |  |  |
| 201 | Execute System Test | 2014-07-17 08:00 → 2014-07-23 08:00 A (+6d) | 2014-07-17 12:00 → 2014-07-23 17:00 A (+6d) | 0.5d → 1d | 0% → 100% |  |  |  |
| 202 | Fix bug System Test | 2014-07-17 13:00 → 2014-07-24 08:00 A (+7d) | 2014-07-17 17:00 → 2014-07-24 17:00 A (+7d) | 0.5d → 1d | 0% → 100% |  |  |  |
| 203 | **Execute Test Part 2** | 2014-07-23 08:00 → 2014-07-25 08:00 A (+2d) | 2014-07-29 17:00 → 2014-07-30 17:00 A (+1d) | 5d → 4d | 0% → 100% |  |  |  |
| 204 | Execute Integration Test | 2014-07-22 13:00 → 2014-07-25 08:00 A (+3d) | 2014-07-23 12:00 → 2014-07-25 17:00 A (+2d) |  | 0% → 100% |  |  |  |
| 205 | Fix bug Integration Test | 2014-07-23 13:00 → 2014-07-28 08:00 A (+5d) | 2014-07-24 12:00 → 2014-07-28 17:00 A (+4d) |  | 0% → 100% |  |  |  |
| 206 | Execute System Test | 2014-07-24 13:00 → 2014-07-29 08:00 A (+5d) | 2014-07-25 12:00 → 2014-07-29 17:00 A (+4d) |  | 0% → 100% |  |  |  |
| 207 | Fix bug System Test | 2014-07-25 13:00 → 2014-07-30 08:00 A (+5d) | 2014-07-29 12:00 → 2014-07-30 17:00 A (+1d) | 2d → 1d | 0% → 100% |  |  |  |
| 208 | Complete Testing | 2014-07-29 13:00 → 2014-07-31 08:00 A (+2d) | 2014-07-29 13:00 → 2014-07-31 08:00 A (+2d) |  | 0% → 100% |  |  |  |
| 212 | Create report no.6 -Software User's Manual | 2014-07-29 13:00 → 2014-08-01 08:00 A (+3d) | 2014-07-31 12:00 → 2014-08-05 17:00 A (+5d) | 2d → 3d | 0% → 100% |  |  |  |
| 213 | Submit report no.6 First version | 2014-07-31 13:00 → 2014-08-06 08:00 A (+6d) | 2014-07-31 13:00 → 2014-08-06 08:00 A (+6d) |  | 0% → 100% |  |  |  |
| 214 | Review & update report no.6 | 2014-07-31 13:00 → 2014-08-07 08:00 A (+7d) | 2014-08-01 12:00 → 2014-08-07 17:00 A (+6d) |  | 0% → 100% |  |  |  |
| 215 | Progress Report 6 | 2014-08-01 13:00 → 2014-08-08 08:00 A (+7d) | 2014-08-04 12:00 → 2014-08-08 17:00 A (+4d) |  | 0% → 100% |  |  |  |
| 216 | Submit report no.6 final version | 2014-08-04 13:00 → 2014-08-11 08:00 A (+7d) | 2014-08-04 13:00 → 2014-08-11 08:00 A (+7d) |  | 0% → 100% |  |  |  |
| 217 | Prepare Final Report and Source Code | 2014-08-04 13:00 → 2014-08-12 08:00 A (+8d) | 2014-08-11 12:00 → 2014-08-20 17:00 A (+9d) | 5d → 7d | 0% → 100% |  |  |  |
| 218 | Submit Final document and CD Source Code | 2014-08-11 13:00 → 2014-08-21 08:00 A (+10d) | 2014-08-11 17:00 → 2014-08-21 12:00 A (+10d) |  | 0% → 100% |  |  |  |
| 219 | **Termination** | 2014-08-12 08:00 → 2014-08-22 08:00 A (+10d) | 2014-08-22 17:00 → 2014-08-29 17:00 (+7d) | 9d → 6d | 0% → 83% | none → 0d |  |  |
| 220 | **Preclosing** | 2014-08-12 08:00 → 2014-08-22 08:00 A (+10d) | 2014-08-18 17:00 → 2014-08-25 17:00 A (+7d) | 5d → 2d | 0% → 100% |  |  |  |
| 221 | Conduct project review-lessons learned | 2014-08-12 08:00 → 2014-08-22 08:00 A (+10d) | 2014-08-13 17:00 → 2014-08-25 17:00 A (+12d) |  | 0% → 100% |  |  |  |
| 222 | **Closing** | 2014-08-18 08:00 → 2014-08-26 08:00 A (+8d) | 2014-08-22 17:00 → 2014-08-29 17:00 (+7d) | 5d → 4d | 0% → 75% | none → 0d |  |  |
| 223 | Prepare for presentation | 2014-08-19 08:00 → 2014-08-26 08:00 A (+7d) | 2014-08-20 12:00 → 2014-08-28 17:00 A (+8d) | 1.5d → 3d | 0% → 100% |  | Complete program and documents → none |  |

| ID | Task | Start | Finish | Duration | Total float | Other |
| --- | --- | --- | --- | --- | --- | --- |
| 224 | Represent capstone project and completed | 2014-08-20 13:00 → 2014-08-29 08:00 (+9d) | 2014-08-22 12:00 → 2014-08-29 17:00 (+7d) | 2d → 1d | none → 0d | was named Represent capstone project |

## Version 3 (saved 2014-08-16)

Last finish stays 2014-08-29. Complete tasks 172 → 171.

Added:

| ID | Task | Duration | Start | Finish | Predecessors | Resources |
| --- | --- | --- | --- | --- | --- | --- |
| 189 | Update and review Integration Test Case | 0.25d | 2014-07-08 15:00 A | 2014-07-08 17:00 A | 188 | MinhPT |

Removed: 191 Review test documents

Changed:

| ID | Task | Start | Finish | Duration | Complete | Total float | Predecessors | Other |
| --- | --- | --- | --- | --- | --- | --- | --- | --- |
| 1 | **UJD_VN** |  |  |  | 98% → 97% |  |  |  |
| 161 | **Construction** |  | 2014-08-21 12:00 A → 2014-08-21 12:00 |  | 100% → 96% | none → 6.5d |  |  |
| 185 | **Testing** |  | 2014-07-31 17:00 A → 2014-07-31 17:00 |  | 100% → 89% | none → 21d |  |  |
| 187 | **Create test cases** |  | 2014-07-09 12:00 A → 2014-07-11 12:00 A (+2d) | 2.5d → 4.5d |  |  |  |  |
| 188 | Create Integration Test Case |  | 2014-07-08 12:00 A → 2014-07-08 15:00 A | 1.5d → 1.75d |  |  |  |  |
| 190 | Create System Test Case |  | 2014-07-09 12:00 A → 2014-07-11 12:00 A (+2d) | 0.5d → 2.5d |  |  |  |  |
| 191 | Update and review System Test Case | 2014-07-10 08:00 A → 2014-07-11 08:00 A (+1d) | 2014-07-10 17:00 A → 2014-07-11 10:00 A (+1d) | 1d → 0.25d |  |  |  | was named Create test checklist |
| 192 | Q & A Management (Update) |  | 2014-07-11 17:00 A → 2014-07-11 15:00 A | 0.5d → 0.25d |  |  | Review test documents → 191 |  |
| 193 | Submit report no.5 First version |  |  |  |  |  | Review test documents → 192 |  |
| 197 | **Execute test** |  | 2014-07-31 17:00 A → 2014-07-31 17:00 |  | 100% → 83% | none → 21d |  |  |
| 198 | **Execute Test Part 1** |  | 2014-07-24 17:00 A → 2014-07-23 17:00 A (-1d) | 6d → 5d |  |  |  |  |
| 199 | Execute Integration Test |  | 2014-07-21 17:00 A → 2014-07-18 17:00 A (-3d) | 3d → 2d |  |  |  |  |
| 200 | Fix bug Integration Test | 2014-07-22 08:00 A → 2014-07-21 08:00 A (-1d) | 2014-07-22 17:00 A → 2014-07-21 17:00 A (-1d) |  |  |  |  |  |
| 201 | Execute System Test | 2014-07-23 08:00 A → 2014-07-22 08:00 A (-1d) | 2014-07-23 17:00 A → 2014-07-22 17:00 A (-1d) |  |  |  |  |  |
| 202 | Fix bug System Test | 2014-07-24 08:00 A → 2014-07-23 08:00 A (-1d) | 2014-07-24 17:00 A → 2014-07-23 17:00 A (-1d) |  |  |  |  |  |
| 203 | **Execute Test Part 2** | 2014-07-25 08:00 A → 2014-07-24 08:00 A (-1d) | 2014-07-30 17:00 A → 2014-07-30 17:00 | 4d → 5d | 100% → 64% |  |  |  |
| 204 | Execute Integration Test | 2014-07-25 08:00 A → 2014-07-24 08:00 A (-1d) | 2014-07-25 17:00 A → 2014-07-28 17:00 (+3d) | 1d → 3d | 100% → 33% | none → 24d |  | constraint none → finish no earlier than 2014-07-28 17:00 |
| 205 | Fix bug Integration Test |  | 2014-07-28 17:00 A → 2014-07-28 12:00 A | 1d → 0.5d |  |  |  |  |
| 223 | Prepare for presentation |  |  |  |  |  | none → 221 |  |

## Version 4 (saved 2014-08-17)

Last finish stays 2014-08-29. Complete tasks 171 → 181.

Added:

| ID | Task | Duration | Start | Finish | Predecessors | Resources |
| --- | --- | --- | --- | --- | --- | --- |
| 161 | Review and Update Component Test Case | 1d | 2014-06-26 13:00 A | 2014-06-27 12:00 A | 160 | MinhPT; TuanNN |
| 200 | Execute Component Test | 0.5d | 2014-07-16 08:00 A | 2014-07-16 12:00 A | 166 | MinhPT; TuanNN |
| 201 | Fix bug Component Test | 0.5d | 2014-07-16 13:00 A | 2014-07-16 17:00 A | 200 | DatPT; NamLD |
| 207 | Execute Component Test | 0.5d | 2014-07-24 08:00 A | 2014-07-24 12:00 A | 185 | MinhPT; TuanNN |
| 208 | Fix bug Component Test | 0.5d | 2014-07-24 13:00 A | 2014-07-24 17:00 A | 207 | DatPT; NamLD |

Changed:

| ID | Task | Start | Finish | Duration | Complete | Total float | Predecessors | Other |
| --- | --- | --- | --- | --- | --- | --- | --- | --- |
| 1 | **UJD_VN** |  |  |  | 97% → 99% |  |  |  |
| 2 | **Initiation** |  | 2014-05-30 08:00 A |  | 99% → 100% | 66d → none |  |  |
| 25 | **Develop Project Plan** |  | 2014-05-30 08:00 A |  | 94% → 100% | 66d → none |  |  |
| 30 | **Develop report no.2: Project management Plan** |  | 2014-05-30 08:00 A |  | 89% → 100% | 66d → none |  |  |
| 31 | Create Project plan first version |  | 2014-05-27 17:00 A |  | 80% → 100% | 68d → none |  |  |
| 37 | **Solution** |  | 2014-07-03 12:00 A |  | 99% → 100% | 41.5d → none |  |  |
| 43 | **User Requirements Specification** |  | 2014-06-06 17:00 A |  | 97% → 100% | 60d → none |  |  |
| 46 | Completed User Requirement Document |  | 2014-06-04 17:00 A |  | 80% → 100% | 62d → none |  |  |
| 49 | **Software Requirements Specification (Report 3)** |  | 2014-06-20 15:00 A |  | 99% → 100% | 50.25d → none |  | was named Software Requirements Specification |
| 86 | Submit report no.3 First version |  | 2014-06-20 10:00 A |  | 90% → 100% | 50.75d → none |  |  |
| 154 | **Testing** |  | 2014-06-28 17:00 → 2014-06-27 12:00 A (-1d) | 9.5d → 9d | 91% → 100% | 45d → none |  |  |
| 155 | **Create Test Document (Report 5)** |  | 2014-06-23 13:00 A |  | 82% → 100% | 49.5d → none |  |  |
| 156 | Create test plan |  | 2014-06-20 17:00 A |  | 80% → 100% | 50d → none |  |  |
| 159 | **Create Test Case** |  | 2014-06-28 17:00 A → 2014-06-27 12:00 A (-1d) | 4.5d → 4d |  |  |  |  |
| 160 | Create Component Test Case |  | 2014-06-28 17:00 A → 2014-06-26 12:00 A (-2d) | 5.5d → 3d |  |  |  | was named Create Unit Test Case |
| 162 | **Construction** |  | 2014-08-21 12:00 A |  | 96% → 100% | 6.5d → none |  |  |
| 179 | Contact Admin Module |  |  |  |  |  |  | was named Change Password Module |
| 186 | **Testing** |  | 2014-07-31 17:00 A |  | 89% → 100% | 21d → none |  |  |
| 198 | **Execute test** | 2014-07-17 08:00 A → 2014-07-16 08:00 A (-1d) | 2014-07-31 17:00 A | 11d → 12d | 83% → 100% | 21d → none |  |  |
| 199 | **Execute Test Part 1** | 2014-07-17 08:00 A → 2014-07-16 08:00 A (-1d) |  | 5d → 6d |  |  |  |  |
| 202 | Execute Integration Test |  | 2014-07-18 17:00 A → 2014-07-17 17:00 A (-1d) | 2d → 1d |  |  | 166 → 201 |  |
| 203 | Fix bug Integration Test | 2014-07-21 08:00 A → 2014-07-18 08:00 A (-3d) | 2014-07-21 17:00 A → 2014-07-18 17:00 A (-3d) |  |  |  |  |  |
| 204 | Execute System Test | 2014-07-22 08:00 A → 2014-07-21 08:00 A (-1d) |  | 1d → 2d |  |  |  |  |
| 206 | **Execute Test Part 2** |  | 2014-07-30 17:00 A |  | 64% → 100% |  |  |  |
| 209 | Execute Integration Test | 2014-07-24 08:00 A → 2014-07-25 08:00 A (+1d) | 2014-07-28 17:00 A | 3d → 1d | 33% → 100% | 24d → none | 185 → 208 |  |
| 211 | Execute System Test | 2014-07-29 08:00 A → 2014-07-28 08:00 A (-1d) |  | 1d → 2d |  |  |  | constraint none → finish no earlier than 2014-07-29 17:00 |
| 229 | Represent Capstone Project and Completed |  |  |  |  |  |  | was named Represent capstone project and completed |

## Version 5 (saved 2014-08-18)

Last finish stays 2014-08-29. Complete tasks 181 → 182.

Added:

| ID | Task | Duration | Start | Finish | Predecessors | Resources |
| --- | --- | --- | --- | --- | --- | --- |
| 223 | Complete Complete Presentation Slide | 2d | 2014-08-19 08:00 A | 2014-08-20 17:00 A | 222 | DatPT; MinhPT; NamLD; TuanNN |
| 226 | **Pre-Closing** | 2d | 2014-08-22 08:00 A | 2014-08-25 17:00 A |  |  |
| 227 | Training presentation | 2d | 2014-08-22 08:00 A | 2014-08-25 17:00 A | 224 | DatPT; MinhPT; NamLD; TuanNN |

Removed: 180 Forgot Password Module; 225 Preclosing

Changed:

| ID | Task | Start | Finish | Duration | Predecessors | Other |
| --- | --- | --- | --- | --- | --- | --- |
| 180 | Reading Document Module | 2014-07-18 08:00 A → 2014-07-17 08:00 A (-1d) | 2014-07-21 12:00 A → 2014-07-17 17:00 A (-4d) | 1.5d → 1d | Forgot Password Module → none | was named Training Reading Document Module |
| 181 | Training Listening Module | 2014-07-22 08:00 A → 2014-07-18 08:00 A (-4d) | 2014-07-22 12:00 A → 2014-07-21 17:00 A (-1d) | 0.5d → 2d |  |  |
| 183 | Doing Test Module | 2014-07-24 08:00 A → 2014-07-23 08:00 A (-1d) |  | 1d → 2d |  |  |
| 221 | Prepare Final Report and Source Code |  | 2014-08-20 17:00 A → 2014-08-15 17:00 A (-5d) | 7d → 4d |  |  |
| 222 | Conduct project review-lessons learned | 2014-08-22 08:00 A → 2014-08-18 08:00 A (-4d) | 2014-08-25 17:00 A → 2014-08-18 17:00 A (-7d) | 2d → 1d | 224 → 221 | baseline start 2014-08-12 08:00 → none; baseline finish 2014-08-13 17:00 → none |
| 229 | Prepare for presentation |  |  |  | 222 → none |  |
