# UJD_VN_Project_Schedule

How a schedule from MS Project changed from version to version. A marks actual dates.

## Version 1 (saved 2014-06-13)

| ID | WBS | Task | Duration | Start | Finish | Predecessors | Total float |
| --- | --- | --- | --- | --- | --- | --- | --- |
| 1 | 1 | **UJD_VN** | 78d | 2014-05-12 08:00 | 2014-08-27 17:00 |  |  |
| 2 | 1.1 | **Initiation** | 15d | 2014-05-12 08:00 | 2014-05-30 17:00 |  | 0d |
| 3 |  | Develop project Idea | 1d | 2014-05-12 08:00 | 2014-05-12 17:00 |  |  |
| 4 |  | Prepare project | 0.5d | 2014-05-13 08:00 | 2014-05-13 12:00 | 3 |  |
| 5 |  | Q & A Management | 0.5d | 2014-05-13 13:00 | 2014-05-13 17:00 | 4 |  |
| 6 | 1.1.4 | **Develop report no.1: Introduction** | 6d | 2014-05-13 08:00 | 2014-05-20 17:00 |  |  |
| 7 |  | System feasible study | 1d | 2014-05-13 08:00 | 2014-05-13 17:00 | 3 |  |
| 8 |  | Define business situation | 1d | 2014-05-13 08:00 | 2014-05-13 17:00 | 3 |  |
| 9 |  | Define project and system scope | 1d | 2014-05-14 08:00 | 2014-05-14 17:00 | 7, 8 |  |
| 10 |  | Review & update report no.1 : Draft vesion | 0.5d | 2014-05-15 08:00 | 2014-05-15 12:00 | 9 |  |
| 11 |  | Submit report no.1 first version | 0.5d | 2014-05-15 13:00 | 2014-05-15 17:00 | 10 |  |
| 12 |  | Revise after got comments for report no.1 | 1d | 2014-05-16 08:00 | 2014-05-16 17:00 | 11 |  |
| 13 |  | Kick-off meeting | 0d | 2014-05-19 08:00 | 2014-05-19 08:00 | 12 |  |
| 14 |  | Progress Report 1 | 1d | 2014-05-19 08:00 | 2014-05-19 17:00 | 12 |  |
| 15 |  | Submit report no.1 final version | 0d | 2014-05-20 08:00 | 2014-05-20 08:00 | 13 |  |
| 16 | 1.1.5 | **Technologies** | 9d | 2014-05-15 08:00 | 2014-05-27 17:00 |  |  |
| 17 |  | Research development technology | 2d | 2014-05-15 08:00 | 2014-05-16 17:00 | 9 |  |
| 18 |  | Install and configuration PHP with Xampp | 0.5d | 2014-05-19 08:00 | 2014-05-19 12:00 | 17 |  |
| 19 |  | Study Xampp and MYSQL | 6d | 2014-05-19 13:00 | 2014-05-27 12:00 | 18 |  |
| 20 | 1.1.6 | **Requirements** | 9d | 2014-05-20 08:00 | 2014-05-30 17:00 |  |  |
| 21 |  | Collect business requirements and processes | 1d | 2014-05-20 08:00 | 2014-05-20 17:00 | 15 |  |
| 22 |  | Create draft screen prototypes | 6d | 2014-05-21 08:00 | 2014-05-28 17:00 | 21 |  |
| 23 |  | Review and edit screen prototypes | 1d | 2014-05-29 08:00 | 2014-05-29 17:00 | 22 |  |
| 24 |  | Complete screen prototype | 0d | 2014-05-30 08:00 | 2014-05-30 08:00 | 23 |  |
| 25 | 1.1.7 | **Develop Project Plan** | 9d | 2014-05-20 08:00 | 2014-05-30 17:00 |  |  |
| 26 |  | Develop project definition | 1d | 2014-05-20 10:00 | 2014-05-21 10:00 | 13 |  |
| 27 |  | Work BreakDown Structure | 0.5d | 2014-05-22 08:00 | 2014-05-22 12:00 | 26 |  |
| 28 |  | Create project schedule | 1d | 2014-05-23 08:00 | 2014-05-23 17:00 | 27 |  |
| 29 | 1.1.7.4 | **Develop report no.2: Project management Plan** | 6d | 2014-05-24 08:00 | 2014-05-30 17:00 |  |  |
| 30 |  | Create Project plan first version | 2d | 2014-05-24 08:00 | 2014-05-26 17:00 | 28 |  |
| 31 |  | Submit report no.2 first version | 0d | 2014-05-27 08:00 | 2014-05-27 08:00 | 30 |  |
| 32 |  | Revise after got comments for report no.2 | 1d | 2014-05-27 08:00 | 2014-05-27 17:00 | 31 |  |
| 33 |  | Complete Project Plan Final Version | 0d | 2014-05-28 08:00 | 2014-05-28 08:00 | 32 |  |
| 34 |  | Progress Report 2 | 1d | 2014-05-29 08:00 | 2014-05-29 17:00 | 32 |  |
| 35 |  | Submit report no.2 final version | 0d | 2014-05-30 08:00 | 2014-05-30 08:00 | 32 |  |
| 36 | 1.2 | **Solution** | 22d | 2014-06-02 08:00 | 2014-07-01 17:00 |  |  |
| 37 | 1.2.1 | **Project Management** | 3d | 2014-06-02 08:00 | 2014-06-04 17:00 |  |  |
| 38 |  | Refine project plan | 2d | 2014-06-02 08:00 | 2014-06-03 17:00 | 35 |  |
| 39 | 1.2.2 | **Technologies** | 7d | 2014-06-02 08:00 | 2014-06-10 17:00 |  |  |
| 40 |  | Design database models | 1d | 2014-06-02 08:00 | 2014-06-02 17:00 | 35 |  |
| 41 |  | Coding prototypes | 6d | 2014-06-03 08:00 | 2014-06-10 17:00 | 40 |  |
| 42 | 1.2.3 | **User Requirements Specification** | 5d | 2014-06-02 08:00 | 2014-06-06 17:00 |  |  |
| 43 |  | Create draft requirements | 2d | 2014-06-02 08:00 | 2014-06-03 17:00 | 35 |  |
| 44 |  | Complete draft requirements | 0d | 2014-06-04 08:00 | 2014-06-04 08:00 | 43 |  |
| 45 |  | Develop Use-case model | 1d | 2014-06-04 08:00 | 2014-06-04 17:00 | 44 |  |
| 46 |  | Develop main functions and processes | 2d | 2014-06-05 08:00 | 2014-06-06 17:00 | 45 |  |
| 47 | 1.2.4 | **Software Requirements Specification** | 10d | 2014-06-09 08:00 | 2014-06-20 17:00 |  |  |
| 48 | 1.2.4.1 | **Functional Requirement Specification** | 10d | 2014-06-09 08:00 | 2014-06-20 17:00 |  |  |
| 49 | 1.2.4.1.1 | **Part 1** | 6d | 2014-06-09 08:00 | 2014-06-16 17:00 |  |  |
| 50 |  | Homepage Module | 1d | 2014-06-09 08:00 | 2014-06-09 17:00 | 42 |  |
| 51 | 1.2.4.1.1.2 | **Admin Module** | 5d | 2014-06-10 08:00 | 2014-06-16 17:00 |  |  |
| 52 |  | Admin’s account management Module | 0.5d | 2014-06-10 08:00 | 2014-06-10 12:00 | 50 |  |
| 53 |  | Management Member’s account Module | 0.5d | 2014-06-10 13:00 | 2014-06-10 17:00 | 52 |  |
| 54 |  | Vocabulary Management Module | 0.5d | 2014-06-11 08:00 | 2014-06-11 12:00 | 53 |  |
| 55 |  | Grammar Management Module | 0.5d | 2014-06-11 13:00 | 2014-06-11 17:00 | 54 |  |
| 56 |  | Reading Document Management Module | 0.5d | 2014-06-12 08:00 | 2014-06-12 12:00 | 55 |  |
| 57 |  | Conversation management Module | 0.5d | 2014-06-12 13:00 | 2014-06-12 17:00 | 56 |  |
| 58 |  | Video Management Module | 0.5d | 2014-06-13 08:00 | 2014-06-13 12:00 | 57 |  |
| 59 |  | Listening Article Management Module | 0.5d | 2014-06-13 13:00 | 2014-06-13 17:00 | 58 |  |
| 60 |  | Doing test management Module | 0.5d | 2014-06-16 08:00 | 2014-06-16 12:00 | 59 |  |
| 61 |  | Contact's content management Module | 0.5d | 2014-06-16 13:00 | 2014-06-16 17:00 | 60 |  |
| 62 | 1.2.4.1.1.3 | **Search Module** | 3d | 2014-06-10 08:00 | 2014-06-12 17:00 |  |  |
| 63 |  | Search Sentences Module | 0.5d | 2014-06-10 08:00 | 2014-06-10 12:00 | 50 |  |
| 64 |  | Search Conversation Module | 0.5d | 2014-06-10 13:00 | 2014-06-10 17:00 | 63 |  |
| 65 |  | Search Video Module | 0.5d | 2014-06-11 08:00 | 2014-06-11 12:00 | 64 |  |
| 66 |  | Search Grammar Module | 0.5d | 2014-06-11 13:00 | 2014-06-11 17:00 | 65 |  |
| 67 |  | Search Specialized Japanese Module | 0.5d | 2014-06-12 08:00 | 2014-06-12 12:00 | 66 |  |
| 68 |  | Login/Logout Module | 0.5d | 2014-06-12 13:00 | 2014-06-12 17:00 | 67 |  |
| 69 |  | Register Account Module | 0.5d | 2014-06-13 08:00 | 2014-06-13 12:00 | 68 |  |
| 70 |  | Edit Profile Module | 0.5d | 2014-06-13 13:00 | 2014-06-13 17:00 | 69 |  |

| ID | WBS | Task | Duration | Start | Finish | Predecessors | Total float |
| --- | --- | --- | --- | --- | --- | --- | --- |
| 71 |  | Forgot Password Module | 0.5d | 2014-06-16 08:00 | 2014-06-16 12:00 | 70 |  |
| 72 | 1.2.4.1.2 | **Part 2** | 5d | 2014-06-16 08:00 | 2014-06-20 17:00 |  |  |
| 73 |  | Contact Admin Module | 1.5d | 2014-06-17 08:00 | 2014-06-18 12:00 | 61 |  |
| 74 |  | Doing Test Module | 0.5d | 2014-06-18 13:00 | 2014-06-18 17:00 | 73 |  |
| 75 |  | Reading Document Module | 0.5d | 2014-06-19 08:00 | 2014-06-19 12:00 | 74 |  |
| 76 |  | Training Listening Module | 0.5d | 2014-06-19 13:00 | 2014-06-19 17:00 | 75 |  |
| 77 |  | Listening Conversation Module | 0.25d | 2014-06-20 08:00 | 2014-06-20 10:00 | 76 |  |
| 78 | 1.2.4.2 | **Non-functional Requirements Specification** | 1d | 2014-06-09 08:00 | 2014-06-09 17:00 |  |  |
| 79 |  | Develop User Interface requirements | 1d | 2014-06-09 08:00 | 2014-06-09 17:00 | 46 |  |
| 80 |  | Develop Performance requirements | 1d | 2014-06-09 08:00 | 2014-06-09 17:00 | 45 |  |
| 81 |  | Submit report no.3 First version | 0d | 2014-06-20 10:00 | 2014-06-20 10:00 | 77 |  |
| 82 |  | Revise after got comments of Report no.3 | 0.25d | 2014-06-20 10:00 | 2014-06-20 12:00 | 81 |  |
| 83 |  | Complete SRS Final Version | 0d | 2014-06-20 13:00 | 2014-06-20 13:00 | 82 |  |
| 84 |  | Progress Report 3 | 0.25d | 2014-06-20 13:00 | 2014-06-20 15:00 | 82 |  |
| 85 |  | Submit report no.3 final version | 0d | 2014-06-20 15:00 | 2014-06-20 15:00 | 84 |  |
| 86 | 1.2.5 | **Design** | 17d | 2014-06-09 08:00 | 2014-07-01 17:00 |  |  |
| 87 | 1.2.5.1 | **System Architectural Design** | 4d | 2014-06-09 08:00 | 2014-06-12 17:00 | 42 |  |
| 88 |  | Define the system structure and collect system features | 1d | 2014-06-09 08:00 | 2014-06-09 17:00 | 46 |  |
| 89 |  | Study the common System Architeture | 1d | 2014-06-10 08:00 | 2014-06-10 17:00 | 88 |  |
| 90 |  | Choice of System Architeture | 1d | 2014-06-11 08:00 | 2014-06-11 17:00 | 89 |  |
| 91 |  | Discussion of Alternative Design | 1d | 2014-06-12 08:00 | 2014-06-12 17:00 | 90 |  |
| 92 | 1.2.5.2 | **Detailed Design** | 16d | 2014-06-10 08:00 | 2014-07-01 17:00 |  |  |
| 93 | 1.2.5.2.1 | **Component Diagram** | 2d | 2014-06-10 08:00 | 2014-06-11 17:00 |  |  |
| 94 |  | Define the component | 0.5d | 2014-06-10 08:00 | 2014-06-10 12:00 | 79 |  |
| 95 |  | General component diagram | 0.5d | 2014-06-10 13:00 | 2014-06-10 17:00 | 94 |  |
| 96 |  | Detail component diagram | 0.5d | 2014-06-11 08:00 | 2014-06-11 12:00 | 95 |  |
| 97 |  | Detail Database Design | 0.5d | 2014-06-11 13:00 | 2014-06-11 17:00 | 96 |  |
| 98 | 1.2.5.2.2 | **User Interface Design** | 11d | 2014-06-12 08:00 | 2014-06-26 17:00 |  | 0d |
| 99 | 1.2.5.2.2.1 | **Part 1** | 6d | 2014-06-12 08:00 | 2014-06-19 17:00 |  |  |
| 100 |  | Homepage Module | 1d | 2014-06-12 08:00 | 2014-06-12 17:00 | 97 |  |
| 101 | 1.2.5.2.2.1.2 | **Admin Module** | 5d | 2014-06-13 08:00 | 2014-06-19 17:00 |  |  |
| 102 |  | Admin’s account management Module | 0.5d | 2014-06-13 08:00 | 2014-06-13 12:00 | 91 |  |
| 103 |  | Management Member’s account Module | 0.5d | 2014-06-13 13:00 | 2014-06-13 17:00 | 102 |  |
| 104 |  | Vocabulary Management Module | 0.5d | 2014-06-16 08:00 | 2014-06-16 12:00 | 103 |  |
| 105 |  | Grammar Management Module | 0.5d | 2014-06-16 13:00 | 2014-06-16 17:00 | 104 |  |
| 106 |  | Reading Document Management Module | 0.5d | 2014-06-17 08:00 | 2014-06-17 12:00 | 105 |  |
| 107 |  | Conversation management Module | 0.5d | 2014-06-17 13:00 | 2014-06-17 17:00 | 106 |  |
| 108 |  | Video Management Module | 0.5d | 2014-06-18 08:00 | 2014-06-18 12:00 | 107 |  |
| 109 |  | Listening Article Management Module | 0.5d | 2014-06-18 13:00 | 2014-06-18 17:00 | 108 |  |
| 110 |  | Doing test management Module | 0.5d | 2014-06-19 08:00 | 2014-06-19 12:00 | 109 |  |
| 111 |  | Contact's content management Module | 0.5d | 2014-06-19 13:00 | 2014-06-19 17:00 | 110 |  |
| 112 | 1.2.5.2.2.1.3 | **Search Module** | 5d | 2014-06-13 08:00 | 2014-06-19 17:00 |  |  |
| 113 |  | Search Sentences Module | 0.5d | 2014-06-13 08:00 | 2014-06-13 12:00 | 100 |  |
| 114 |  | Search Conversation Module | 0.5d | 2014-06-13 13:00 | 2014-06-13 17:00 | 113 |  |
| 115 |  | Search Video Module | 0.5d | 2014-06-16 08:00 | 2014-06-16 12:00 | 114 |  |
| 116 |  | Search Grammar Module | 0.5d | 2014-06-16 13:00 | 2014-06-16 17:00 | 115 |  |
| 117 |  | Search Specialized Japanese Module | 0.5d | 2014-06-17 08:00 | 2014-06-17 12:00 | 116 |  |
| 118 |  | Login/Logout Module | 0.5d | 2014-06-17 13:00 | 2014-06-17 17:00 | 117 |  |
| 119 |  | Register Account Module | 0.5d | 2014-06-18 08:00 | 2014-06-18 12:00 | 118 |  |
| 120 |  | Edit Profile Module | 0.5d | 2014-06-18 13:00 | 2014-06-18 17:00 | 119 |  |
| 121 |  | Forgot Password Module | 0.5d | 2014-06-19 08:00 | 2014-06-19 12:00 | 120 |  |
| 122 | 1.2.5.2.2.2 | **Part 2** | 6d | 2014-06-19 08:00 | 2014-06-26 17:00 |  |  |
| 123 |  | Change Password Module | 0.5d | 2014-06-19 13:00 | 2014-06-19 17:00 | 121 |  |
| 124 |  | Forgot Password Module | 0.5d | 2014-06-20 08:00 | 2014-06-20 12:00 | 123 |  |
| 125 |  | Reading Document Module | 1d | 2014-06-20 13:00 | 2014-06-23 12:00 | 124 |  |
| 126 |  | Training Listening Module | 0.5d | 2014-06-23 13:00 | 2014-06-23 17:00 | 125 |  |
| 127 |  | Listening Conversation Module | 1d | 2014-06-24 08:00 | 2014-06-24 17:00 | 126 |  |
| 128 |  | Doing Test Module | 2d | 2014-06-25 08:00 | 2014-06-26 17:00 | 127 |  |
| 129 |  | Submit report no.4 First version | 0d | 2014-06-29 08:00 | 2014-06-29 08:00 | 128 |  |
| 130 |  | Review and update comments report #4 | 0.25d | 2014-06-30 08:00 | 2014-06-30 10:00 | 129 |  |
| 131 |  | Progress Report 4 | 0.5d | 2014-06-30 10:00 | 2014-06-30 15:00 | 130 |  |
| 132 |  | Submit report no.4 final version | 0d | 2014-06-30 13:00 | 2014-06-30 13:00 | 130 |  |
| 133 | 1.2.6 | **Coding and Unit Test** | 8d | 2014-06-20 08:00 | 2014-07-01 17:00 |  |  |
| 134 | 1.2.6.1 | **Part 1** | 8d | 2014-06-20 08:00 | 2014-07-01 17:00 |  | 0d |
| 135 |  | Admin’s account management Module | 1d | 2014-06-20 08:00 | 2014-06-20 17:00 | 101 |  |
| 136 |  | Management Member’s account Module | 1d | 2014-06-23 08:00 | 2014-06-23 17:00 | 135 |  |
| 137 |  | Vocabulary Management Module | 0.5d | 2014-06-24 08:00 | 2014-06-24 12:00 | 136 |  |
| 138 |  | Grammar Management Module | 0.5d | 2014-06-24 13:00 | 2014-06-24 17:00 | 137 |  |
| 139 |  | Reading Document Management Module | 1d | 2014-06-25 08:00 | 2014-06-25 17:00 | 138 |  |
| 140 |  | Conversation management Module | 1d | 2014-06-26 08:00 | 2014-06-26 17:00 | 139 |  |

| ID | WBS | Task | Duration | Start | Finish | Predecessors | Total float |
| --- | --- | --- | --- | --- | --- | --- | --- |
| 141 |  | Video Management Module | 0.5d | 2014-06-27 08:00 | 2014-06-27 12:00 | 140 |  |
| 142 |  | Listening Article Management Module | 0.5d | 2014-06-27 13:00 | 2014-06-27 17:00 | 141 |  |
| 143 |  | Doing test management Module | 1d | 2014-06-30 08:00 | 2014-06-30 17:00 | 142 |  |
| 144 |  | Contact's content management Module | 1d | 2014-07-01 08:00 | 2014-07-01 17:00 | 143 |  |
| 145 | 1.2.7 | **Testing** | 12d | 2014-06-16 08:00 | 2014-07-01 17:00 |  |  |
| 146 | 1.2.7.1 | **Create Test Document (Report 5)** | 5d | 2014-06-16 13:00 | 2014-06-23 13:00 |  | 0d |
| 147 |  | Create test plan | 4.5d | 2014-06-16 13:00 | 2014-06-20 17:00 | 71 |  |
| 148 |  | Review and update Test Plan | 0.5d | 2014-06-23 08:00 | 2014-06-23 12:00 | 147 |  |
| 149 |  | Submit Final Test Plan | 0d | 2014-06-23 13:00 | 2014-06-23 13:00 | 148 |  |
| 150 | 1.2.7.2 | **Create Test Case** | 6d | 2014-06-23 08:00 | 2014-06-28 17:00 |  |  |
| 151 |  | Create Unit Test Case | 5.5d | 2014-06-23 13:00 | 2014-06-28 17:00 | 149 |  |
| 152 | 1.3 | **Construction** | 29d | 2014-07-02 08:00 | 2014-08-11 17:00 |  |  |
| 153 | 1.3.1 | **Requirements & Design** | 2d | 2014-07-02 08:00 | 2014-07-03 17:00 |  |  |
| 154 |  | Refine requirement documents | 1d | 2014-07-02 08:00 | 2014-07-02 17:00 | 36 |  |
| 155 |  | Refine design documents | 0.5d | 2014-07-03 08:00 | 2014-07-03 12:00 | 154 |  |
| 156 | 1.3.2 | **Coding & Unit Test** | 14d | 2014-07-03 08:00 | 2014-07-22 17:00 |  |  |
| 157 | 1.3.2.1 | **Part 1 (Continue)** | 7.5d | 2014-07-03 13:00 | 2014-07-14 17:00 |  |  |
| 158 |  | Homepage Module | 1.5d | 2014-07-03 13:00 | 2014-07-04 17:00 | 155 |  |
| 159 | 1.3.2.1.2 | **Search Module** | 7d | 2014-07-05 08:00 | 2014-07-14 17:00 |  |  |
| 160 |  | Search Sentences Module | 2d | 2014-07-05 08:00 | 2014-07-07 17:00 | 158 |  |
| 161 |  | Search Conversation Module | 1d | 2014-07-08 08:00 | 2014-07-08 17:00 | 160 |  |
| 162 |  | Search Video Module | 1d | 2014-07-10 08:00 | 2014-07-10 17:00 | 161 |  |
| 163 |  | Search Grammar Module | 1d | 2014-07-11 08:00 | 2014-07-11 17:00 | 162 |  |
| 164 |  | Search Specialized Japanese Module | 1d | 2014-07-14 08:00 | 2014-07-14 17:00 | 163 |  |
| 165 |  | Login/Logout Module | 1d | 2014-07-07 08:00 | 2014-07-07 17:00 | 158 |  |
| 166 |  | Register Account Module | 1d | 2014-07-08 08:00 | 2014-07-08 17:00 | 165 |  |
| 167 |  | Edit Profile Module | 1d | 2014-07-09 08:00 | 2014-07-09 17:00 | 166 |  |
| 168 |  | Forgot Password Module | 1d | 2014-07-10 08:00 | 2014-07-10 17:00 | 167 |  |
| 169 | 1.3.2.2 | **Part 2** | 6d | 2014-07-15 08:00 | 2014-07-22 17:00 |  |  |
| 170 |  | Change Password Module | 1d | 2014-07-15 08:00 | 2014-07-15 17:00 | 164 |  |
| 171 |  | Forgot Password Module | 1d | 2014-07-16 08:00 | 2014-07-16 17:00 | 170 |  |
| 172 |  | Reading Document Module | 1.5d | 2014-07-17 08:00 | 2014-07-18 12:00 | 171 |  |
| 173 |  | Training Listening Module | 0.5d | 2014-07-18 13:00 | 2014-07-18 17:00 | 172 |  |
| 174 |  | Listening Conversation Module | 1d | 2014-07-18 08:00 | 2014-07-18 17:00 | 193 |  |
| 175 |  | Doing Test Module | 1.5d | 2014-07-21 08:00 | 2014-07-22 12:00 | 174 |  |
| 176 |  | Complete Coding | 0d | 2014-07-22 13:00 | 2014-07-22 13:00 | 175 |  |
| 177 | 1.3.3 | **Testing** | 24d | 2014-07-02 08:00 | 2014-08-04 17:00 |  |  |
| 178 | 1.3.3.1 | **Create test documents (Continue)** | 7d | 2014-07-02 08:00 | 2014-07-10 17:00 |  |  |
| 179 | 1.3.3.1.1 | **Create test cases** | 4d | 2014-07-02 08:00 | 2014-07-07 17:00 |  |  |
| 180 |  | Create Integration Test Case | 2d | 2014-07-03 08:00 | 2014-07-04 17:00 | 154 |  |
| 181 |  | Create System Test Case | 1d | 2014-07-07 08:00 | 2014-07-07 17:00 | 180 |  |
| 182 |  | Create test checklist | 1d | 2014-07-08 08:00 | 2014-07-08 17:00 | 181 |  |
| 183 |  | Review test documents | 0.5d | 2014-07-09 08:00 | 2014-07-09 12:00 | 182 |  |
| 184 |  | Submit report no.5 First version | 0d | 2014-07-09 13:00 | 2014-07-09 13:00 | 183 |  |
| 185 |  | Review report no.5 | 0.5d | 2014-07-09 13:00 | 2014-07-09 17:00 | 184 |  |
| 186 |  | Progress Report 5 | 0.5d | 2014-07-09 13:00 | 2014-07-09 17:00 | 184 |  |
| 187 |  | Submit report no.5 final version | 0d | 2014-07-10 08:00 | 2014-07-10 08:00 | 185 |  |
| 188 | 1.3.3.2 | **Execute test** | 11d | 2014-07-15 08:00 | 2014-07-29 17:00 |  |  |
| 189 | 1.3.3.2.1 | **Execute Test Part 1** | 3d | 2014-07-15 08:00 | 2014-07-17 17:00 |  |  |
| 190 |  | Execute Integration Test | 1d | 2014-07-15 08:00 | 2014-07-15 17:00 | 157 |  |
| 191 |  | Fix bug Integration Test | 1d | 2014-07-16 08:00 | 2014-07-16 17:00 | 190 |  |
| 192 |  | Execute System Test | 0.5d | 2014-07-17 08:00 | 2014-07-17 12:00 | 191 |  |
| 193 |  | Fix bug System Test | 0.5d | 2014-07-17 13:00 | 2014-07-17 17:00 | 192 |  |
| 194 | 1.3.3.2.2 | **Execute Test Part 2** | 5d | 2014-07-23 08:00 | 2014-07-29 17:00 |  |  |
| 195 |  | Execute Integration Test | 1d | 2014-07-22 13:00 | 2014-07-23 12:00 | 176 |  |
| 196 |  | Fix bug Integration Test | 1d | 2014-07-23 13:00 | 2014-07-24 12:00 | 195 |  |
| 197 |  | Execute System Test | 1d | 2014-07-24 13:00 | 2014-07-25 12:00 | 196 |  |
| 198 |  | Fix bug System Test | 2d | 2014-07-25 13:00 | 2014-07-29 12:00 | 197 |  |
| 199 |  | Complete Testing | 0d | 2014-07-29 13:00 | 2014-07-29 13:00 | 198 |  |
| 200 |  | Create report no.6 -Software User's Manual | 2d | 2014-07-29 13:00 | 2014-07-31 12:00 | 197, 199 |  |
| 201 |  | Submit report no.6 First version | 0d | 2014-07-31 13:00 | 2014-07-31 13:00 | 200 |  |
| 202 |  | Review & update report no.6 | 1d | 2014-07-31 13:00 | 2014-08-01 12:00 | 201 |  |
| 203 |  | Progress Report 6 | 1d | 2014-08-01 13:00 | 2014-08-04 12:00 | 202 |  |
| 204 |  | Submit report no.6 final version | 0d | 2014-08-04 13:00 | 2014-08-04 13:00 | 202, 203 |  |
| 205 |  | Prepare Final Report and Source Code | 5d | 2014-08-04 13:00 | 2014-08-11 12:00 | 204 |  |
| 206 |  | Submit Final document and CD Source Code | 0.5d | 2014-08-11 13:00 | 2014-08-11 17:00 | 204, 205 |  |
| 207 | 1.4 | **Transition** | 10d | 2014-08-12 08:00 | 2014-08-25 17:00 |  |  |
| 208 | 1.4.1 | **Preclosing** | 5d | 2014-08-12 08:00 | 2014-08-18 17:00 |  |  |
| 209 |  | Conduct project review-lessons learned | 2d | 2014-08-12 08:00 | 2014-08-13 17:00 | 206 |  |
| 210 |  | Complete program and documents | 3d | 2014-08-14 08:00 | 2014-08-18 17:00 | 209 |  |

| ID | WBS | Task | Duration | Start | Finish | Predecessors |
| --- | --- | --- | --- | --- | --- | --- |
| 211 | 1.4.2 | **Closing** | 6d | 2014-08-18 08:00 | 2014-08-25 17:00 |  |
| 212 |  | Prepare for presentation | 2d | 2014-08-19 08:00 | 2014-08-20 17:00 | 210 |
| 213 |  | Represent capstone project | 2d | 2014-08-21 08:00 | 2014-08-22 17:00 | 212 |
| 214 |  | Project completed | 0d | 2014-08-25 08:00 | 2014-08-25 08:00 | 213 |

## Version 2 (saved 2014-06-14)

Last finish stays 2014-08-27.

Changed:

| ID | Task | Other |
| --- | --- | --- |
| 207 | **Termination** | was named Transition |
