# MS_2003_UJD_VN_Project_Schedule

How a schedule from MS Project changed from version to version. A marks actual dates.

## Version 1 (saved 2014-06-03, file MS_2003_UJD_VN_Project_Schedule.mpp)

| ID | WBS | Task | Duration | Start | Finish | Predecessors | Total float | Constraint |
| --- | --- | --- | --- | --- | --- | --- | --- | --- |
| 1 | 1 | **UJD_VN** | 79d? | 2014-05-12 | 2014-08-28 |  | 0d |  |
| 2 |  | UJD_VN | 0d? | 2014-05-12 | 2014-05-12 |  | 0d | must start on 2014-05-12 |
| 3 |  | UJD_VN | 0d? | 2014-08-27 | 2014-08-27 |  | 0d | must finish on 2014-08-27 |
| 4 | 1.3 | **Initiation** | 15d? | 2014-05-12 | 2014-05-30 |  | 1d |  |
| 5 |  | Develop project Idea | 1d | 2014-05-12 | 2014-05-12 |  | 2.25d | start no earlier than 2014-05-12 |
| 6 |  | Prepare project | 0.5d | 2014-05-13 | 2014-05-13 | 5 | 77.5d | start no earlier than 2014-05-13 |
| 7 | 1.3.3 | **Develop report no.1: Introduction** | 5d? | 2014-05-13 | 2014-05-19 |  | 0d |  |
| 8 |  | Develop report no.1: Introduction | 0d? | 2014-05-13 | 2014-05-13 |  | 0d | must start on 2014-05-13 |
| 9 |  | Develop report no.1: Introduction | 0d? | 2014-05-19 | 2014-05-19 |  | 0d | must finish on 2014-05-19 |
| 10 |  | System feasible study | 1d | 2014-05-13 | 2014-05-13 | 5 | 2.25d | start no earlier than 2014-05-13 |
| 11 |  | Define business situation | 1d | 2014-05-13 | 2014-05-13 | 5 | 2.25d | start no earlier than 2014-05-13 |
| 12 |  | Define project and system scope | 1d | 2014-05-14 | 2014-05-14 | 10, 11 | 2.25d | start no earlier than 2014-05-14 |
| 13 |  | Review & update report no.1 : Draft vesion | 0.5d | 2014-05-15 | 2014-05-15 | 12 | 2.25d | start no earlier than 2014-05-15 |
| 14 |  | Submit report no.1 first version | 0.5d | 2014-05-15 | 2014-05-15 | 13 | 2.25d | start no earlier than 2014-05-15 |
| 15 |  | Revise after got comments for report no.1 | 1d | 2014-05-16 | 2014-05-16 | 14 | 2.25d | start no earlier than 2014-05-16 |
| 16 |  | Submit report no.1 final version | 1d | 2014-05-19 | 2014-05-19 | 15 | 2.25d | start no earlier than 2014-05-19 |
| 17 |  | Kick-off meeting | 0.25d | 2014-05-20 | 2014-05-20 | 16 | 2.25d | start no earlier than 2014-05-20 |
| 18 |  | Q & A Management | 0.5d | 2014-05-20 | 2014-05-20 | 17 | 72.25d | start no earlier than 2014-05-20 |
| 19 | 1.3.6 | **Technologies** | 9d? | 2014-05-15 | 2014-05-27 |  | 0d |  |
| 20 |  | Technologies | 0d? | 2014-05-15 | 2014-05-15 |  | 0d | must start on 2014-05-15 |
| 21 |  | Technologies | 0d? | 2014-05-27 | 2014-05-27 |  | 0d | must finish on 2014-05-27 |
| 22 |  | Research development technology | 2d | 2014-05-15 | 2014-05-16 | 12 | 67.5d | start no earlier than 2014-05-15 |
| 23 |  | Install and configuration PHP with Xampp | 0.5d | 2014-05-19 | 2014-05-19 | 22 | 67.5d | start no earlier than 2014-05-19 |
| 24 |  | Study Xampp and MYSQL | 6d | 2014-05-19 | 2014-05-27 | 23 | 67.5d | start no earlier than 2014-05-19 |
| 25 | 1.3.7 | **Requirements** | 9d? | 2014-05-20 | 2014-05-30 |  | 0d |  |
| 26 |  | Requirements | 0d? | 2014-05-20 | 2014-05-20 |  | 0d | must start on 2014-05-20 |
| 27 |  | Requirements | 0d? | 2014-05-30 | 2014-05-30 |  | 0d | must finish on 2014-05-30 |
| 28 |  | Collect business requirements and processes | 1d | 2014-05-20 | 2014-05-20 | 16 | 64d | start no earlier than 2014-05-20 |
| 29 |  | Create draft screen prototypes | 6d | 2014-05-21 | 2014-05-28 | 28 | 64d | start no earlier than 2014-05-21 |
| 30 |  | Complete first screen prototypes | 0d | 2014-05-29 | 2014-05-29 | 29 | 64d | start no earlier than 2014-05-29 |
| 31 |  | Review and edit sceen prototypes | 2d | 2014-05-29 | 2014-05-30 | 30 | 64d | start no earlier than 2014-05-29 |
| 32 | 1.3.8 | **Develop Project Plan** | 9d? | 2014-05-20 | 2014-05-30 |  | 0d |  |
| 33 |  | Develop Project Plan | 0d? | 2014-05-20 | 2014-05-20 |  | 0d | must start on 2014-05-20 |
| 34 |  | Develop Project Plan | 0d? | 2014-05-30 | 2014-05-30 |  | 0d | must finish on 2014-05-30 |
| 35 |  | Develop project definition | 1d | 2014-05-20 | 2014-05-21 | 17 | 2.25d | start no earlier than 2014-05-20 |
| 36 |  | Work BreakDown Structure | 0.5d | 2014-05-22 | 2014-05-22 | 35 | 1.5d | start no earlier than 2014-05-22 |
| 37 |  | Create project schedule | 1d | 2014-05-23 | 2014-05-23 | 36 | 1d | start no earlier than 2014-05-23 |
| 38 | 1.3.8.6 | **Develop report no.2: Project management Plan** | 5d? | 2014-05-24 | 2014-05-30 |  | 0d |  |
| 39 |  | Develop report no.2: Project management Plan | 0d? | 2014-05-24 | 2014-05-24 |  | 0d | must start on 2014-05-24 |
| 40 |  | Develop report no.2: Project management Plan | 0d? | 2014-05-30 | 2014-05-30 |  | 0d | must finish on 2014-05-30 |
| 41 |  | Create Project plan first version | 2d | 2014-05-26 | 2014-05-27 | 37 | 1d | start no earlier than 2014-05-24 |
| 42 |  | Submit report no.2 first version | 0d | 2014-05-27 | 2014-05-27 | 41 | 1d | start no earlier than 2014-05-27 |
| 43 |  | Revise after got comments for report no.2 | 2d | 2014-05-28 | 2014-05-29 | 42 | 1d | start no earlier than 2014-05-28 |
| 44 |  | Submit report no.2 final version | 0d | 2014-05-30 | 2014-05-30 | 43 | 1d | start no earlier than 2014-05-30 |
| 45 | 1.4 | **Solution** | 22d? | 2014-06-02 | 2014-07-01 |  | 0d |  |
| 46 |  | Solution | 0d? | 2014-06-02 | 2014-06-02 |  | 0d | must start on 2014-06-02 |
| 47 |  | Solution | 0d? | 2014-07-01 | 2014-07-01 |  | 0d | must finish on 2014-07-01 |
| 48 | 1.4.3 | **Project Management** | 3d? | 2014-06-02 | 2014-06-04 |  | 0d |  |
| 49 |  | Project Management | 0d? | 2014-06-02 | 2014-06-02 |  | 0d | must start on 2014-06-02 |
| 50 |  | Project Management | 0d? | 2014-06-04 | 2014-06-04 |  | 0d | must finish on 2014-06-04 |
| 51 |  | Refine project plan | 2d | 2014-06-02 | 2014-06-03 | 44 | 41d | start no earlier than 2014-06-02 |
| 52 | 1.4.4 | **Technologies** | 7d? | 2014-06-02 | 2014-06-10 |  | 0d |  |
| 53 |  | Technologies | 0d? | 2014-06-02 | 2014-06-02 |  | 0d | must start on 2014-06-02 |
| 54 |  | Technologies | 0d? | 2014-06-10 | 2014-06-10 |  | 0d | must finish on 2014-06-10 |
| 55 |  | Design database models | 1d | 2014-06-02 | 2014-06-02 | 44 | 36d | start no earlier than 2014-06-02 |
| 56 |  | Coding prototypes | 6d | 2014-06-03 | 2014-06-10 | 55 | 36d | start no earlier than 2014-06-03 |
| 57 | 1.4.5 | **User Requirements Specification** | 5d? | 2014-06-02 | 2014-06-06 |  | 0d |  |
| 58 |  | User Requirements Specification | 0d? | 2014-06-02 | 2014-06-02 |  | 0d | must start on 2014-06-02 |
| 59 |  | User Requirements Specification | 0d? | 2014-06-06 | 2014-06-06 |  | 0d | must finish on 2014-06-06 |
| 60 |  | Create draft requirements | 2d | 2014-06-02 | 2014-06-03 | 44 | 0d | start no earlier than 2014-06-02 |
| 61 |  | Complete draft requirements | 0d | 2014-06-04 | 2014-06-04 | 60 | 0d | start no earlier than 2014-06-04 |
| 62 |  | Develop Use-case model | 1d | 2014-06-04 | 2014-06-04 | 61 | 0d | start no earlier than 2014-06-04 |
| 63 |  | Develop main functions and processes | 2d | 2014-06-05 | 2014-06-06 | 62 | 0d | start no earlier than 2014-06-05 |
| 64 | 1.4.6 | **Software Requirements Specification** | 12d? | 2014-06-09 | 2014-06-24 |  | 0d |  |
| 65 |  | Software Requirements Specification | 0d? | 2014-06-09 | 2014-06-09 |  | 0d | must start on 2014-06-09 |
| 66 |  | Software Requirements Specification | 0d? | 2014-06-24 | 2014-06-24 |  | 0d | must finish on 2014-06-24 |
| 67 | 1.4.6.3 | **Functional Requirement Specification** | 8.5d? | 2014-06-09 | 2014-06-19 |  | 0d |  |
| 68 |  | Functional Requirement Specification | 0d? | 2014-06-09 | 2014-06-09 |  | 0d | must start on 2014-06-09 |
| 69 |  | Functional Requirement Specification | 0d? | 2014-06-18 | 2014-06-18 |  | 0d | must finish on 2014-06-18 |
| 70 | 1.4.6.3.3 | **Phase 1** | 5.5d? | 2014-06-09 | 2014-06-16 |  | 0d |  |

| ID | WBS | Task | Duration | Start | Finish | Predecessors | Total float | Constraint |
| --- | --- | --- | --- | --- | --- | --- | --- | --- |
| 71 |  | Phase 1 | 0d? | 2014-06-09 | 2014-06-09 |  | 0d | must start on 2014-06-09 |
| 72 |  | Phase 1 | 0d? | 2014-06-14 | 2014-06-14 |  | 0d | must finish on 2014-06-14 |
| 73 |  | Homepage Module | 1d | 2014-06-09 | 2014-06-09 | 57 | 3.5d | start no earlier than 2014-06-09 |
| 74 | 1.4.6.3.3.4 | **Admin Module** | 4d? | 2014-06-10 | 2014-06-13 |  | 0d |  |
| 75 |  | Admin Module | 0d? | 2014-06-10 | 2014-06-10 |  | 0d | must start on 2014-06-10 |
| 76 |  | Admin Module | 0d? | 2014-06-13 | 2014-06-13 |  | 0d | must finish on 2014-06-13 |
| 77 |  | Admin Manage Account Module | 0.5d | 2014-06-10 | 2014-06-10 | 73 | 3.5d | start no earlier than 2014-06-10 |
| 78 |  | Member's account management Module | 0.5d | 2014-06-10 | 2014-06-10 | 77 | 3.5d | start no earlier than 2014-06-10 |
| 79 |  | Contribute Opinion, Database Management Module | 1d | 2014-06-11 | 2014-06-11 | 78 | 3.5d | start no earlier than 2014-06-11 |
| 80 |  | Data Management Module | 1.5d | 2014-06-12 | 2014-06-13 | 79 | 3.5d | start no earlier than 2014-06-12 |
| 81 | 1.4.6.3.3.5 | **Search Module** | 3d? | 2014-06-10 | 2014-06-12 |  | 0d |  |
| 82 |  | Search Module | 0d? | 2014-06-10 | 2014-06-10 |  | 0d | must start on 2014-06-10 |
| 83 |  | Search Module | 0d? | 2014-06-12 | 2014-06-12 |  | 0d | must finish on 2014-06-12 |
| 84 |  | Search Sentences Module | 0.5d | 2014-06-10 | 2014-06-10 | 73 | 3.5d | start no earlier than 2014-06-10 |
| 85 |  | Search Conversation Module | 0.5d | 2014-06-10 | 2014-06-10 | 84 | 3.5d | start no earlier than 2014-06-10 |
| 86 |  | Search Video Module | 0.5d | 2014-06-11 | 2014-06-11 | 85 | 3.5d | start no earlier than 2014-06-11 |
| 87 |  | Search Grammar Module | 0.5d | 2014-06-11 | 2014-06-11 | 86 | 3.5d | start no earlier than 2014-06-11 |
| 88 |  | Search Specialized Japanese Module | 0.5d | 2014-06-12 | 2014-06-12 | 87 | 3.5d | start no earlier than 2014-06-12 |
| 89 |  | Login/Logout Module | 1d | 2014-06-12 | 2014-06-13 | 88 | 3.5d | start no earlier than 2014-06-12 |
| 90 |  | Register Account Module | 1d | 2014-06-13 | 2014-06-16 | 89 | 3.5d | start no earlier than 2014-06-13 |
| 91 |  | Contribute Opinion, Database Module | 1d | 2014-06-13 | 2014-06-16 | 80 | 3.5d | start no earlier than 2014-06-13 |
| 92 | 1.4.6.3.4 | **Phase 2** | 3.5d? | 2014-06-16 | 2014-06-19 |  | 0d |  |
| 93 |  | Phase 2 | 0d? | 2014-06-16 | 2014-06-16 |  | 0d | must start on 2014-06-16 |
| 94 |  | Phase 2 | 0d? | 2014-06-18 | 2014-06-18 |  | 0d | must finish on 2014-06-18 |
| 95 |  | Change Password Module | 1d | 2014-06-16 | 2014-06-17 | 91 | 28d | start no earlier than 2014-06-16 |
| 96 |  | Forgot Password Module | 0.5d | 2014-06-17 | 2014-06-17 | 95 | 28d | start no earlier than 2014-06-17 |
| 97 |  | Reading Document Module | 1d | 2014-06-16 | 2014-06-17 | 90 | 26.5d | start no earlier than 2014-06-16 |
| 98 |  | Training Listening Module | 0.5d | 2014-06-17 | 2014-06-17 | 97 | 26.5d | start no earlier than 2014-06-17 |
| 99 |  | Listening Conversation Module | 0.5d | 2014-06-18 | 2014-06-18 | 98 | 26.5d | start no earlier than 2014-06-17 |
| 100 |  | Doing Test Module | 1d | 2014-06-18 | 2014-06-19 | 99 | 26.5d | start no earlier than 2014-06-18 |
| 101 | 1.4.6.4 | **Non-functional Requirements Specification** | 4d? | 2014-06-19 | 2014-06-24 |  | 0d |  |
| 102 |  | Non-functional Requirements Specification | 0d? | 2014-06-19 | 2014-06-19 |  | 0d | must start on 2014-06-19 |
| 103 |  | Non-functional Requirements Specification | 0d? | 2014-06-24 | 2014-06-24 |  | 0d | must finish on 2014-06-24 |
| 104 |  | Develop User Interface requirements | 1d | 2014-06-19 | 2014-06-20 | 67 | 26.5d | start no earlier than 2014-06-19 |
| 105 |  | Develop Performance requirements | 1d | 2014-06-20 | 2014-06-23 | 104 | 26.5d | start no earlier than 2014-06-20 |
| 106 |  | Submit report no.3 First version | 0d | 2014-06-23 | 2014-06-23 | 105 | 26.5d | start no earlier than 2014-06-21 |
| 107 |  | Revise after got comments of Report no.3 | 1d | 2014-06-23 | 2014-06-24 | 106 | 26.5d | start no earlier than 2014-06-23 |
| 108 |  | Submit report no.3 final version | 0d | 2014-06-24 | 2014-06-24 | 107 | 26.5d | start no earlier than 2014-06-24 |
| 109 | 1.4.7 | **Design** | 17d? | 2014-06-09 | 2014-07-01 |  | 0d |  |
| 110 |  | Design | 0d? | 2014-06-09 | 2014-06-09 |  | 0d | must start on 2014-06-09 |
| 111 |  | Design | 0d? | 2014-07-01 | 2014-07-01 |  | 0d | must finish on 2014-07-01 |
| 112 |  | Create Design Overview | 1d | 2014-06-09 | 2014-06-09 | 57 | 37d | start no earlier than 2014-06-09 |
| 113 | 1.4.7.4 | **System Architectural Design** | 4d? | 2014-06-09 | 2014-06-12 | 57 | 0d |  |
| 114 |  | System Architectural Design | 0d? | 2014-06-09 | 2014-06-09 |  | 0d | must start on 2014-06-09 |
| 115 |  | System Architectural Design | 0d? | 2014-06-12 | 2014-06-12 |  | 0d | must finish on 2014-06-12 |
| 116 |  | Define the system structure and collect system features | 1d | 2014-06-09 | 2014-06-09 |  | 34.5d | start no earlier than 2014-06-09 |
| 117 |  | Study the common System Architeture | 1d | 2014-06-10 | 2014-06-10 | 116 | 34.5d | start no earlier than 2014-06-10 |
| 118 |  | Choice of System Architeture | 0.5d | 2014-06-11 | 2014-06-11 | 117 | 34.5d | start no earlier than 2014-06-11 |
| 119 |  | Discussion of Alternative Design | 1d | 2014-06-11 | 2014-06-12 | 118 | 34.5d | start no earlier than 2014-06-11 |
| 120 | 1.4.7.5 | **Detailed Design** | 16d? | 2014-06-09 | 2014-06-30 |  | 0d |  |
| 121 |  | Detailed Design | 0d? | 2014-06-09 | 2014-06-09 |  | 0d | must start on 2014-06-09 |
| 122 |  | Detailed Design | 0d? | 2014-06-30 | 2014-06-30 |  | 0d | must finish on 2014-06-30 |
| 123 | 1.4.7.5.3 | **Component Diagram** | 3d? | 2014-06-09 | 2014-06-11 |  | 0d |  |
| 124 |  | Component Diagram | 0d? | 2014-06-09 | 2014-06-09 |  | 0d | must start on 2014-06-09 |
| 125 |  | Component Diagram | 0d? | 2014-06-11 | 2014-06-11 |  | 0d | must finish on 2014-06-11 |
| 126 |  | Define the component | 1d | 2014-06-09 | 2014-06-09 | 57 | 22d | start no earlier than 2014-06-09 |
| 127 |  | General component diagram | 0.5d | 2014-06-10 | 2014-06-10 | 126 | 22d | start no earlier than 2014-06-10 |
| 128 |  | Detail component diagram | 0.5d | 2014-06-10 | 2014-06-10 | 127 | 22d | start no earlier than 2014-06-10 |
| 129 |  | Detail Database Design | 1d | 2014-06-11 | 2014-06-11 | 128 | 22d | start no earlier than 2014-06-11 |
| 130 | 1.4.7.5.4 | **User Interface Design** | 14d? | 2014-06-11 | 2014-06-30 |  | 0d |  |
| 131 |  | User Interface Design | 0d? | 2014-06-11 | 2014-06-11 |  | 0d | must start on 2014-06-11 |
| 132 |  | User Interface Design | 0d? | 2014-06-30 | 2014-06-30 |  | 0d | must finish on 2014-06-30 |
| 133 | 1.4.7.5.4.3 | **Phase 1** | 8d? | 2014-06-11 | 2014-06-20 |  | 0d |  |
| 134 |  | Phase 1 | 0d? | 2014-06-11 | 2014-06-11 |  | 0d | must start on 2014-06-11 |
| 135 |  | Phase 1 | 0d? | 2014-06-20 | 2014-06-20 |  | 0d | must finish on 2014-06-20 |
| 136 |  | Homepage Module | 1d | 2014-06-12 | 2014-06-12 | 129 | 22d | start no earlier than 2014-06-12 |
| 137 | 1.4.7.5.4.3.4 | **Admin Module** | 4d? | 2014-06-13 | 2014-06-18 |  | 0d |  |
| 138 |  | Admin Module | 0d? | 2014-06-13 | 2014-06-13 |  | 0d | must start on 2014-06-13 |
| 139 |  | Admin Module | 0d? | 2014-06-18 | 2014-06-18 |  | 0d | must finish on 2014-06-18 |
| 140 |  | Admin Manage Account Module | 1d | 2014-06-13 | 2014-06-13 | 136 | 28d | start no earlier than 2014-06-13 |

| ID | WBS | Task | Duration | Start | Finish | Predecessors | Total float | Constraint |
| --- | --- | --- | --- | --- | --- | --- | --- | --- |
| 141 |  | Member's account management Module | 1d | 2014-06-16 | 2014-06-16 | 140 | 28d | start no earlier than 2014-06-16 |
| 142 |  | Contribute Opinion, Database Management Module | 1d | 2014-06-17 | 2014-06-17 | 141 | 28d | start no earlier than 2014-06-17 |
| 143 |  | Data Management Module | 1d | 2014-06-18 | 2014-06-18 | 142 | 28d | start no earlier than 2014-06-18 |
| 144 | 1.4.7.5.4.3.5 | **Search Module** | 6d? | 2014-06-13 | 2014-06-20 |  | 0d |  |
| 145 |  | Search Module | 0d? | 2014-06-13 | 2014-06-13 |  | 0d | must start on 2014-06-13 |
| 146 |  | Search Module | 0d? | 2014-06-20 | 2014-06-20 |  | 0d | must finish on 2014-06-20 |
| 147 |  | Search Sentences Module | 1d | 2014-06-13 | 2014-06-13 | 136 | 22d | start no earlier than 2014-06-13 |
| 148 |  | Search Conversation Module | 1d | 2014-06-16 | 2014-06-16 | 147 | 22d | start no earlier than 2014-06-16 |
| 149 |  | Search Video Module | 1d | 2014-06-17 | 2014-06-17 | 148 | 22d | start no earlier than 2014-06-17 |
| 150 |  | Search Grammar Module | 1d | 2014-06-18 | 2014-06-18 | 149 | 22d | start no earlier than 2014-06-18 |
| 151 |  | Search Specialized Japanese Module | 1d | 2014-06-19 | 2014-06-19 | 150 | 22d | start no earlier than 2014-06-19 |
| 152 |  | Login/Logout Module | 0.5d | 2014-06-20 | 2014-06-20 | 151 | 22d | start no earlier than 2014-06-20 |
| 153 |  | Register Account Module | 0.5d | 2014-06-20 | 2014-06-20 | 152 | 22d | start no earlier than 2014-06-20 |
| 154 |  | Contribute Opinion, Database Module | 1d | 2014-06-19 | 2014-06-19 | 143 | 28d | start no earlier than 2014-06-19 |
| 155 | 1.4.7.5.4.4 | **Phase 2** | 5d? | 2014-06-21 | 2014-06-28 |  | 0d |  |
| 156 |  | Phase 2 | 0d? | 2014-06-21 | 2014-06-21 |  | 0d | must start on 2014-06-21 |
| 157 |  | Phase 2 | 0d? | 2014-06-28 | 2014-06-28 |  | 0d | must finish on 2014-06-28 |
| 158 |  | Change Password Module | 0.5d | 2014-06-23 | 2014-06-23 | 154 | 27d | start no earlier than 2014-06-21 |
| 159 |  | Forgot Password Module | 0.5d | 2014-06-23 | 2014-06-23 | 158 | 27d | start no earlier than 2014-06-23 |
| 160 |  | Reading Document Module | 1d | 2014-06-23 | 2014-06-23 | 153 | 22d | start no earlier than 2014-06-23 |
| 161 |  | Training Listening Module | 1d | 2014-06-24 | 2014-06-24 | 160 | 22d | start no earlier than 2014-06-24 |
| 162 |  | Listening Conversation Module | 1d | 2014-06-25 | 2014-06-25 | 161 | 22d | start no earlier than 2014-06-25 |
| 163 |  | Doing Test Module | 2d | 2014-06-26 | 2014-06-27 | 162 | 22d | start no earlier than 2014-06-26 |
| 164 |  | Submit report no.4 First version | 0d | 2014-06-28 | 2014-06-28 | 163 | 22d | start no earlier than 2014-06-28 |
| 165 |  | Review and update comments report #4 | 1d | 2014-06-30 | 2014-06-30 | 164 | 22d | start no earlier than 2014-06-30 |
| 166 |  | Submit report no.4 final version | 0d | 2014-07-01 | 2014-07-01 | 165 | 22d | start no earlier than 2014-07-01 |
| 167 | 1.5 | **Construction** | 46d? | 2014-06-16 | 2014-08-18 |  | 0d |  |
| 168 |  | Construction | 0d? | 2014-08-18 | 2014-08-18 |  | 0d | must finish on 2014-08-18 |
| 169 | 1.5.2 | **Requirements & Design** | 2d? | 2014-07-02 | 2014-07-03 |  | 0d |  |
| 170 |  | Requirements & Design | 0d? | 2014-07-02 | 2014-07-02 |  | 0d | must start on 2014-07-02 |
| 171 |  | Requirements & Design | 0d? | 2014-07-03 | 2014-07-03 |  | 0d | must finish on 2014-07-03 |
| 172 |  | Refine requirement documents | 1d | 2014-07-02 | 2014-07-02 | 45 | 21d | start no earlier than 2014-07-02 |
| 173 |  | Refine design documents | 0.5d | 2014-07-03 | 2014-07-03 | 172 | 21d | start no earlier than 2014-07-03 |
| 174 | 1.5.3 | **Coding & Unit Test** | 20d? | 2014-07-03 | 2014-07-30 |  | 0d |  |
| 175 |  | Coding & Unit Test | 0d? | 2014-07-03 | 2014-07-03 |  | 0d | must start on 2014-07-03 |
| 176 |  | Coding & Unit Test | 0d? | 2014-07-29 | 2014-07-29 |  | 0d | must finish on 2014-07-29 |
| 177 | 1.5.3.3 | **Phase 1** | 13.5d? | 2014-07-03 | 2014-07-22 |  | 1.5d |  |
| 178 |  | Homepage Module | 1.5d | 2014-07-03 | 2014-07-04 | 173 | 21d | start no earlier than 2014-07-03 |
| 179 | 1.5.3.3.2 | **Admin Module** | 10d? | 2014-07-05 | 2014-07-18 |  | 0d |  |
| 180 |  | Admin Module | 0d? | 2014-07-05 | 2014-07-05 |  | 0d | must start on 2014-07-05 |
| 181 |  | Admin Module | 0d? | 2014-07-17 | 2014-07-17 |  | 0d | must finish on 2014-07-17 |
| 182 |  | Admin Manage Account Module | 2d | 2014-07-07 | 2014-07-08 | 178 | 25d | start no earlier than 2014-07-05 |
| 183 |  | Member's account management Module | 2d | 2014-07-09 | 2014-07-10 | 182 | 25d | start no earlier than 2014-07-08 |
| 184 |  | Contribute Opinion, Database Management Module | 1d | 2014-07-11 | 2014-07-11 | 183 | 25d | start no earlier than 2014-07-10 |
| 185 |  | Data Management Module | 5d | 2014-07-14 | 2014-07-18 | 184 | 25d | start no earlier than 2014-07-11 |
| 186 | 1.5.3.3.3 | **Search Module** | 9d? | 2014-07-05 | 2014-07-17 |  | 0d |  |
| 187 |  | Search Module | 0d? | 2014-07-05 | 2014-07-05 |  | 0d | must start on 2014-07-05 |
| 188 |  | Search Module | 0d? | 2014-07-16 | 2014-07-16 |  | 0d | must finish on 2014-07-16 |
| 189 |  | Search Sentences Module | 2d | 2014-07-07 | 2014-07-08 | 178 | 21d | start no earlier than 2014-07-05 |
| 190 |  | Search Conversation Module | 2d | 2014-07-09 | 2014-07-10 | 189 | 21d | start no earlier than 2014-07-08 |
| 191 |  | Search Video Module | 1d | 2014-07-11 | 2014-07-11 | 190 | 21d | start no earlier than 2014-07-10 |
| 192 |  | Search Grammar Module | 2d | 2014-07-14 | 2014-07-15 | 191 | 21d | start no earlier than 2014-07-11 |
| 193 |  | Search Specialized Japanese Module | 2d | 2014-07-16 | 2014-07-17 | 192 | 21d | start no earlier than 2014-07-15 |
| 194 |  | Login/Logout Module | 1d | 2014-07-21 | 2014-07-21 | 185 | 25d | start no earlier than 2014-07-18 |
| 195 |  | Register Account Module | 1d | 2014-07-22 | 2014-07-22 | 194 | 25d | start no earlier than 2014-07-21 |
| 196 |  | Contribute Opinion, Database Module | 2d | 2014-07-18 | 2014-07-21 | 193 | 21d | start no earlier than 2014-07-17 |
| 197 | 1.5.3.4 | **Phase 2** | 8d? | 2014-07-21 | 2014-07-30 |  | 0d |  |
| 198 |  | Phase 2 | 0d? | 2014-07-21 | 2014-07-21 |  | 0d | must start on 2014-07-21 |
| 199 |  | Phase 2 | 0d? | 2014-07-29 | 2014-07-29 |  | 0d | must finish on 2014-07-29 |
| 200 |  | Change Password Module | 1d | 2014-07-23 | 2014-07-23 | 195 | 25d | start no earlier than 2014-07-22 |
| 201 |  | Forgot Password Module | 1d | 2014-07-24 | 2014-07-24 | 200 | 25d | start no earlier than 2014-07-23 |
| 202 |  | Reading Document Module | 2d | 2014-07-22 | 2014-07-23 | 196 | 21d | start no earlier than 2014-07-21 |
| 203 |  | Training Listening Module | 1d | 2014-07-24 | 2014-07-24 | 202 | 21d | start no earlier than 2014-07-23 |
| 204 |  | Listening Conversation Module | 1d | 2014-07-25 | 2014-07-25 | 203 | 21d | start no earlier than 2014-07-24 |
| 205 |  | Doing Test Module | 3d | 2014-07-28 | 2014-07-30 | 204 | 21d | start no earlier than 2014-07-25 |
| 206 | 1.5.4 | **Testing** | 45d? | 2014-06-16 | 2014-08-15 |  | 0d |  |
| 207 |  | Testing | 0d? | 2014-06-16 | 2014-06-16 |  | 0d | must start on 2014-06-16 |
| 208 |  | Testing | 0d? | 2014-08-15 | 2014-08-15 |  | 0d | must finish on 2014-08-15 |
| 209 | 1.5.4.3 | **Create test documents (Report 5)** | 25d? | 2014-06-16 | 2014-07-19 |  | 0d |  |
| 210 |  | Create test documents (Report 5) | 0d? | 2014-06-16 | 2014-06-16 |  | 0d | must start on 2014-06-16 |

| ID | WBS | Task | Duration | Start | Finish | Predecessors | Total float | Constraint |
| --- | --- | --- | --- | --- | --- | --- | --- | --- |
| 211 |  | Create test documents (Report 5) | 0d? | 2014-07-19 | 2014-07-19 |  | 0d | must finish on 2014-07-19 |
| 212 |  | Create test plan | 6d | 2014-06-16 | 2014-06-24 | 70 | 3.5d | start no earlier than 2014-06-16 |
| 213 |  | Review and update Test Plan | 1d | 2014-06-24 | 2014-06-25 | 212 | 3.5d | start no earlier than 2014-06-24 |
| 214 | 1.5.4.3.5 | **Create test cases** | 13d? | 2014-06-25 | 2014-07-11 |  | 0d |  |
| 215 |  | Create test cases | 0d? | 2014-06-25 | 2014-06-25 |  | 0d | must start on 2014-06-25 |
| 216 |  | Create test cases | 0d? | 2014-07-11 | 2014-07-11 |  | 0d | must finish on 2014-07-11 |
| 217 |  | Create Unit Test Case | 7d | 2014-06-25 | 2014-07-04 | 213 | 3.5d | start no earlier than 2014-06-25 |
| 218 |  | Create Integration Test Case | 2d | 2014-07-04 | 2014-07-08 | 217 | 3.5d | start no earlier than 2014-07-04 |
| 219 |  | Create System Test Case | 1d | 2014-07-08 | 2014-07-09 | 218 | 3.5d | start no earlier than 2014-07-08 |
| 220 |  | Create test checklist | 2d | 2014-07-09 | 2014-07-11 | 219 | 3.5d | start no earlier than 2014-07-09 |
| 221 |  | Review test documents | 1d | 2014-07-11 | 2014-07-14 | 220 | 3.5d | start no earlier than 2014-07-11 |
| 222 |  | Submit report no.5 First version | 0d | 2014-07-14 | 2014-07-14 | 221 | 3.5d | start no earlier than 2014-07-14 |
| 223 |  | Review report no.5 | 1d | 2014-07-15 | 2014-07-15 | 222 | 3d | start no earlier than 2014-07-15 |
| 224 |  | Submit report no.5 final version | 0d | 2014-07-16 | 2014-07-16 | 223 | 3d | start no earlier than 2014-07-16 |
| 225 | 1.5.4.4 | **Execute test** | 15d? | 2014-07-21 | 2014-08-08 |  | 0d |  |
| 226 |  | Execute test | 0d? | 2014-07-21 | 2014-07-21 |  | 0d | must start on 2014-07-21 |
| 227 |  | Execute test | 0d? | 2014-08-08 | 2014-08-08 |  | 0d | must finish on 2014-08-08 |
| 228 | 1.5.4.4.3 | **Execute Test Phase 1** | 8d? | 2014-07-21 | 2014-07-30 |  | 0d |  |
| 229 |  | Execute Test Phase 1 | 0d? | 2014-07-21 | 2014-07-21 |  | 0d | must start on 2014-07-21 |
| 230 |  | Execute Test Phase 1 | 0d? | 2014-07-30 | 2014-07-30 |  | 0d | must finish on 2014-07-30 |
| 231 |  | Execute Unit Test | 5d | 2014-07-21 | 2014-07-25 | 224 | 0d | start no earlier than 2014-07-21 |
| 232 |  | Fix bug Unit Test | 1d | 2014-07-28 | 2014-07-28 | 231 | 0d | start no earlier than 2014-07-28 |
| 233 |  | Execute Integration Test | 1d | 2014-07-29 | 2014-07-29 | 232 | 0d | start no earlier than 2014-07-29 |
| 234 |  | Fix bug Integration Test | 1d | 2014-07-30 | 2014-07-30 | 233 | 0d | start no earlier than 2014-07-30 |
| 235 | 1.5.4.4.4 | **Execute Test Phase 2** | 8d? | 2014-07-30 | 2014-08-08 |  | 0d |  |
| 236 |  | Execute Test Phase 2 | 0d? | 2014-07-30 | 2014-07-30 |  | 0d | must start on 2014-07-30 |
| 237 |  | Execute Test Phase 2 | 0d? | 2014-08-08 | 2014-08-08 |  | 0d | must finish on 2014-08-08 |
| 238 |  | Execute Unit Test | 4d | 2014-07-31 | 2014-08-05 | 234 | 0d | start no earlier than 2014-07-31 |
| 239 |  | Fix bug Unit Test | 1d | 2014-08-06 | 2014-08-06 | 238 | 0d | start no earlier than 2014-08-06 |
| 240 |  | Execute Integration Test | 1d | 2014-08-07 | 2014-08-07 | 239 | 0d | start no earlier than 2014-08-07 |
| 241 |  | Fix bug Integration Test | 0.5d | 2014-08-08 | 2014-08-08 | 240 | 0d | start no earlier than 2014-08-08 |
| 242 |  | Execute System Test | 0.5d | 2014-08-08 | 2014-08-08 | 241 | 0d | start no earlier than 2014-08-08 |
| 243 |  | Create report no.6 -Software User's Manual | 3d | 2014-08-11 | 2014-08-13 | 242 | 0d | start no earlier than 2014-08-11 |
| 244 |  | Submit report no.6 First version | 0d | 2014-08-14 | 2014-08-14 | 243 | 0d | start no earlier than 2014-08-14 |
| 245 |  | Review & update report no.6 | 1d | 2014-08-14 | 2014-08-14 | 244 | 0d | start no earlier than 2014-08-14 |
| 246 |  | Submit report no.6 final version | 0d | 2014-08-15 | 2014-08-15 | 245 | 0d | start no earlier than 2014-08-15 |
| 247 | 1.6 | **Transition** | 10d? | 2014-08-15 | 2014-08-28 |  | 0d |  |
| 248 |  | Transition | 0d? | 2014-08-15 | 2014-08-15 |  | 0d | must start on 2014-08-15 |
| 249 |  | Transition | 0d? | 2014-08-27 | 2014-08-27 |  | 0d | must finish on 2014-08-27 |
| 250 | 1.6.3 | **Preclosing** | 8d? | 2014-08-15 | 2014-08-26 |  | 0d |  |
| 251 |  | Preclosing | 0d? | 2014-08-15 | 2014-08-15 |  | 0d | must start on 2014-08-15 |
| 252 |  | Preclosing | 0d? | 2014-08-26 | 2014-08-26 |  | 0d | must finish on 2014-08-26 |
| 253 |  | Conduct project review-lessons learned | 2d | 2014-08-15 | 2014-08-18 | 246 | 0d | start no earlier than 2014-08-15 |
| 254 |  | Complete program and documents | 4d | 2014-08-19 | 2014-08-22 | 253 | 0d | start no earlier than 2014-08-18 |
| 255 |  | Submit the last document and CD source code | 0d | 2014-08-22 | 2014-08-22 | 254 | 0d | start no earlier than 2014-08-22 |
| 256 | 1.6.4 | **Closing** | 4d? | 2014-08-25 | 2014-08-28 |  | 0d |  |
| 257 |  | Closing | 0d? | 2014-08-27 | 2014-08-27 |  | 0d | must finish on 2014-08-27 |
| 258 |  | Prepare for presentation | 2d | 2014-08-25 | 2014-08-26 | 255 | 0d | start no earlier than 2014-08-22 |
| 259 |  | Represent capstone project | 2d | 2014-08-27 | 2014-08-28 | 258 | 0d | start no earlier than 2014-08-25 |
| 260 |  | Project completed | 0d | 2014-08-28 | 2014-08-28 | 259 | 0d | start no earlier than 2014-08-27 |

## Version 2 (saved 2014-06-07, file MS_2013_UJD_VN_Project_Schedule.mpp)

Last finish 2014-08-28 → 2014-08-27 (-1d).

Added:

| ID | Task | Duration | Start | Finish |
| --- | --- | --- | --- | --- |
| 97 | **Part 1** | 6d | 2014-06-12 08:00 | 2014-06-19 17:00 |

Removed: 30 Complete first screen prototypes; 39 Develop report no.2: Project management Plan; 40 Develop report no.2: Project management Plan; 58 User Requirements Specification; 66 Software Requirements Specification; 72 Phase 1; 110 Design; 112 Create Design Overview; 121 Detailed Design; 125 Component Diagram; 131 User Interface Design; 133 Phase 1; 134 Phase 1; 135 Phase 1; 138 Admin Module; 139 Admin Module; 145 Search Module; 146 Search Module; 156 Phase 2; 157 Phase 2; 168 Construction; 170 Requirements & Design; 171 Requirements & Design; 175 Coding & Unit Test; 176 Coding & Unit Test; 179 Admin Module; 180 Admin Module; 181 Admin Module; 182 Admin Manage Account Module; 183 Member's account management Module; 184 Contribute Opinion, Database Management Module; 185 Data Management Module; 187 Search Module; 188 Search Module; 198 Phase 2; 199 Phase 2; 207 Testing; 208 Testing; 210 Create test documents (Report 5); 211 Create test documents (Report 5); 215 Create test cases; 216 Create test cases; 226 Execute test; 227 Execute test; 229 Execute Test Phase 1; 230 Execute Test Phase 1; 236 Execute Test Phase 2; 237 Execute Test Phase 2; 248 Transition; 249 Transition; 251 Preclosing; 252 Preclosing; 257 Closing

Changed:

| ID | Task | Start | Finish | Duration | Total float | Predecessors | Other |
| --- | --- | --- | --- | --- | --- | --- | --- |
| 1 | **UJD_VN** | 2014-05-12 → 2014-05-12 08:00 | 2014-08-28 → 2014-08-27 17:00 (-1d) | 79d? → 78d | 0d → none |  |  |
| 2 | **Initiation** | 2014-05-12 → 2014-05-12 08:00 | 2014-05-30 → 2014-05-30 17:00 | 15d? → 15d | 1d → 0d |  |  |
| 3 | Develop project Idea | 2014-05-12 → 2014-05-12 08:00 | 2014-05-12 → 2014-05-12 17:00 |  | 2.25d → none |  | constraint start no earlier than 2014-05-12 → none |
| 4 | Prepare project | 2014-05-13 → 2014-05-13 08:00 | 2014-05-13 → 2014-05-13 12:00 |  | 77.5d → none |  | constraint start no earlier than 2014-05-13 → none |
| 5 | Q & A Management | 2014-05-20 → 2014-05-13 13:00 (-7d) | 2014-05-20 → 2014-05-13 17:00 (-7d) |  | 72.25d → none | 13 → 4 | constraint start no earlier than 2014-05-20 → none |
| 6 | **Develop report no.1: Introduction** | 2014-05-13 → 2014-05-13 08:00 | 2014-05-19 → 2014-05-20 17:00 (+1d) | 5d? → 6d | 0d → none |  |  |
| 7 | System feasible study | 2014-05-13 → 2014-05-13 08:00 | 2014-05-13 → 2014-05-13 17:00 |  | 2.25d → none |  | constraint start no earlier than 2014-05-13 → none |
| 8 | Define business situation | 2014-05-13 → 2014-05-13 08:00 | 2014-05-13 → 2014-05-13 17:00 |  | 2.25d → none |  | constraint start no earlier than 2014-05-13 → none |
| 9 | Define project and system scope | 2014-05-14 → 2014-05-14 08:00 | 2014-05-14 → 2014-05-14 17:00 |  | 2.25d → none |  | constraint start no earlier than 2014-05-14 → none |
| 10 | Review & update report no.1 : Draft vesion | 2014-05-15 → 2014-05-15 08:00 | 2014-05-15 → 2014-05-15 12:00 |  | 2.25d → none |  | constraint start no earlier than 2014-05-15 → none |
| 11 | Submit report no.1 first version | 2014-05-15 → 2014-05-15 13:00 | 2014-05-15 → 2014-05-15 17:00 |  | 2.25d → none |  | constraint start no earlier than 2014-05-15 → none |
| 12 | Revise after got comments for report no.1 | 2014-05-16 → 2014-05-16 08:00 | 2014-05-16 → 2014-05-16 17:00 |  | 2.25d → none |  | constraint start no earlier than 2014-05-16 → none |
| 13 | Kick-off meeting | 2014-05-20 → 2014-05-19 08:00 (-1d) | 2014-05-20 → 2014-05-19 08:00 (-1d) | 0.25d → 0d | 2.25d → none | 15 → 12 | constraint start no earlier than 2014-05-20 → none |
| 14 | Progress Report 1 | 2014-05-19 → 2014-05-19 08:00 | 2014-05-19 → 2014-05-19 17:00 | 0d? → 1d | 0d → none | none → 12 | was named Develop report no.1: Introduction; constraint must finish on 2014-05-19 → none; resources none → TuanNN |
| 15 | Submit report no.1 final version | 2014-05-19 → 2014-05-20 08:00 (+1d) | 2014-05-19 → 2014-05-20 08:00 (+1d) | 1d → 0d | 2.25d → none | 12 → 13 | constraint start no earlier than 2014-05-19 → none |
| 16 | **Technologies** | 2014-05-15 → 2014-05-15 08:00 | 2014-05-27 → 2014-05-27 17:00 | 9d? → 9d | 0d → none |  |  |
| 17 | Research development technology | 2014-05-15 → 2014-05-15 08:00 | 2014-05-16 → 2014-05-16 17:00 |  | 67.5d → none |  | constraint start no earlier than 2014-05-15 → none |
| 18 | Install and configuration PHP with Xampp | 2014-05-19 → 2014-05-19 08:00 | 2014-05-19 → 2014-05-19 12:00 |  | 67.5d → none |  | constraint start no earlier than 2014-05-19 → none |
| 19 | Study Xampp and MYSQL | 2014-05-19 → 2014-05-19 13:00 | 2014-05-27 → 2014-05-27 12:00 |  | 67.5d → none |  | constraint start no earlier than 2014-05-19 → none |
| 20 | **Requirements** | 2014-05-20 → 2014-05-20 08:00 | 2014-05-30 → 2014-05-30 17:00 | 9d? → 9d | 0d → none |  |  |
| 21 | Collect business requirements and processes | 2014-05-20 → 2014-05-20 08:00 | 2014-05-20 → 2014-05-20 17:00 |  | 64d → none |  | constraint start no earlier than 2014-05-20 → none |
| 22 | Create draft screen prototypes | 2014-05-21 → 2014-05-21 08:00 | 2014-05-28 → 2014-05-28 17:00 |  | 64d → none |  | constraint start no earlier than 2014-05-21 → none |
| 23 | Review and edit screen prototypes | 2014-05-29 → 2014-05-29 08:00 | 2014-05-30 → 2014-05-29 17:00 (-1d) | 2d → 1d | 64d → none | Complete first screen prototypes → 22 | was named Review and edit sceen prototypes; constraint start no earlier than 2014-05-29 → none |
| 24 | Complete screen prototype | 2014-08-27 → 2014-05-30 08:00 (-89d) | 2014-08-27 → 2014-05-30 08:00 (-89d) | 0d? → 0d | 0d → none | none → 23 | was named UJD_VN; constraint must finish on 2014-08-27 → none |
| 25 | **Develop Project Plan** | 2014-05-20 → 2014-05-20 08:00 | 2014-05-30 → 2014-05-30 17:00 | 9d? → 9d | 0d → none |  |  |
| 26 | Develop project definition | 2014-05-20 → 2014-05-20 10:00 | 2014-05-21 → 2014-05-21 10:00 |  | 2.25d → none |  | constraint start no earlier than 2014-05-20 → none |
| 27 | Work BreakDown Structure | 2014-05-22 → 2014-05-22 08:00 | 2014-05-22 → 2014-05-22 12:00 |  | 1.5d → none |  | constraint start no earlier than 2014-05-22 → none |
| 28 | Create project schedule | 2014-05-23 → 2014-05-23 08:00 | 2014-05-23 → 2014-05-23 17:00 |  | 1d → none |  | constraint start no earlier than 2014-05-23 → none |
| 29 | **Develop report no.2: Project management Plan** | 2014-05-24 → 2014-05-24 08:00 | 2014-05-30 → 2014-05-30 17:00 | 5d? → 6d | 0d → none |  |  |
| 30 | Create Project plan first version | 2014-05-26 → 2014-05-24 08:00 (-2d) | 2014-05-27 → 2014-05-26 17:00 (-1d) |  | 1d → none |  | constraint start no earlier than 2014-05-24 → none |
| 31 | Submit report no.2 first version | 2014-05-27 → 2014-05-27 08:00 | 2014-05-27 → 2014-05-27 08:00 |  | 1d → none |  | constraint start no earlier than 2014-05-27 → none |
| 32 | Revise after got comments for report no.2 | 2014-05-28 → 2014-05-28 08:00 | 2014-05-29 → 2014-05-29 17:00 |  | 1d → none |  | constraint start no earlier than 2014-05-28 → none; resources NamLD → NamLD; MinhPT |
| 33 | Progress Report | 2014-05-12 → 2014-05-24 08:00 (+12d) | 2014-05-12 → 2014-05-24 17:00 (+12d) | 0d? → 1d? | 0d → none |  | was named UJD_VN; constraint must start on 2014-05-12 → none |
| 34 | Submit report no.2 final version | 2014-05-30 → 2014-05-30 08:00 | 2014-05-30 → 2014-05-30 08:00 |  | 1d → none |  | constraint start no earlier than 2014-05-30 → none |
| 35 | **Solution** | 2014-06-02 → 2014-06-02 08:00 | 2014-07-01 → 2014-07-01 17:00 | 22d? → 22d | 0d → none |  |  |
| 36 | **Project Management** | 2014-06-02 → 2014-06-02 08:00 | 2014-06-04 → 2014-06-04 17:00 | 3d? → 3d | 0d → none |  |  |
| 37 | Refine project plan | 2014-06-02 → 2014-06-02 08:00 | 2014-06-03 → 2014-06-03 17:00 |  | 41d → none |  | constraint start no earlier than 2014-06-02 → none |
| 38 | **Technologies** | 2014-06-02 → 2014-06-02 08:00 | 2014-06-10 → 2014-06-10 17:00 | 7d? → 7d | 0d → none |  |  |
| 39 | Design database models | 2014-06-02 → 2014-06-02 08:00 | 2014-06-02 → 2014-06-02 17:00 |  | 36d → none |  | constraint start no earlier than 2014-06-02 → none |
| 40 | Coding prototypes | 2014-06-03 → 2014-06-03 08:00 | 2014-06-10 → 2014-06-10 17:00 |  | 36d → none |  | constraint start no earlier than 2014-06-03 → none |
| 41 | **User Requirements Specification** | 2014-06-02 → 2014-06-02 08:00 | 2014-06-06 → 2014-06-06 17:00 | 5d? → 5d | 0d → none |  |  |
| 42 | Create draft requirements | 2014-06-02 → 2014-06-02 08:00 | 2014-06-03 → 2014-06-03 17:00 |  | 0d → none |  | constraint start no earlier than 2014-06-02 → none; resources MinhPT; NamLD → MinhPT; TuanNN |
| 43 | Complete draft requirements | 2014-06-04 → 2014-06-04 08:00 | 2014-06-04 → 2014-06-04 08:00 |  | 0d → none |  | constraint start no earlier than 2014-06-04 → none |
| 44 | Develop Use-case model | 2014-06-04 → 2014-06-04 08:00 | 2014-06-04 → 2014-06-04 17:00 |  | 0d → none |  | constraint start no earlier than 2014-06-04 → none |
| 45 | Develop main functions and processes | 2014-06-05 → 2014-06-05 08:00 | 2014-06-06 → 2014-06-06 17:00 |  | 0d → none |  | constraint start no earlier than 2014-06-05 → none |
| 46 | **Software Requirements Specification** | 2014-06-09 → 2014-06-09 08:00 | 2014-06-24 → 2014-06-20 17:00 (-4d) | 12d? → 10d | 0d → none |  |  |
| 47 | **Functional Requirement Specification** | 2014-06-09 → 2014-06-09 08:00 | 2014-06-19 → 2014-06-20 17:00 (+1d) | 8.5d? → 10d | 0d → none |  |  |
| 48 | **Part 1** | 2014-06-09 → 2014-06-09 08:00 | 2014-06-16 → 2014-06-16 17:00 | 5.5d? → 6d | 0d → none |  | was named Phase 1 |
| 49 | Homepage Module | 2014-06-09 → 2014-06-09 08:00 | 2014-06-09 → 2014-06-09 17:00 |  | 3.5d → none |  | constraint start no earlier than 2014-06-09 → none; resources NamLD; DatPT → TuanNN |
| 50 | **Admin Module** | 2014-06-10 → 2014-06-10 08:00 | 2014-06-13 → 2014-06-16 17:00 (+3d) | 4d? → 5d | 0d → none |  |  |
| 51 | Admin’s account management Module | 2014-06-10 → 2014-06-10 08:00 | 2014-06-10 → 2014-06-10 12:00 |  | 3.5d → none |  | was named Admin Manage Account Module; constraint start no earlier than 2014-06-10 → none; resources NamLD → TuanNN |
| 52 | Management Member’s account Module | 2014-06-10 → 2014-06-10 13:00 | 2014-06-10 → 2014-06-10 17:00 |  | 3.5d → none |  | was named Member's account management Module; constraint start no earlier than 2014-06-10 → none; resources NamLD → TuanNN |
| 53 | Vocabulary Management Module | 2014-06-11 → 2014-06-11 08:00 | 2014-06-11 → 2014-06-11 12:00 | 1d → 0.5d | 3.5d → none |  | was named Contribute Opinion, Database Management Module; constraint start no earlier than 2014-06-11 → none; resources NamLD → TuanNN |
| 54 | Grammar Management Module | 2014-06-12 → 2014-06-11 13:00 (-1d) | 2014-06-13 → 2014-06-11 17:00 (-2d) | 1.5d → 0.5d | 3.5d → none |  | was named Data Management Module; constraint start no earlier than 2014-06-12 → none; resources NamLD → TuanNN |
| 55 | Reading Document Management Module | 2014-05-27 → 2014-06-12 08:00 (+16d) | 2014-05-27 → 2014-06-12 12:00 (+16d) | 0d? → 0.5d | 0d → none | none → 54 | was named Technologies; constraint must finish on 2014-05-27 → none; resources none → TuanNN |
| 56 | Conversation management Module | 2014-05-15 → 2014-06-12 13:00 (+28d) | 2014-05-15 → 2014-06-12 17:00 (+28d) | 0d? → 0.5d | 0d → none | none → 55 | was named Technologies; constraint must start on 2014-05-15 → none; resources none → TuanNN |
| 57 | Video Management Module | 2014-05-30 → 2014-06-13 08:00 (+14d) | 2014-05-30 → 2014-06-13 12:00 (+14d) | 0d? → 0.5d | 0d → none | none → 56 | was named Requirements; constraint must finish on 2014-05-30 → none; resources none → TuanNN |
| 58 | Listening Article Management Module | 2014-05-20 → 2014-06-13 13:00 (+24d) | 2014-05-20 → 2014-06-13 17:00 (+24d) | 0d? → 0.5d | 0d → none | none → 57 | was named Requirements; constraint must start on 2014-05-20 → none; resources none → TuanNN |
| 59 | Doing test management Module | 2014-05-30 → 2014-06-16 08:00 (+17d) | 2014-05-30 → 2014-06-16 12:00 (+17d) | 0d? → 0.5d | 0d → none | none → 58 | was named Develop Project Plan; constraint must finish on 2014-05-30 → none; resources none → TuanNN |
| 60 | Contact's content management Module | 2014-05-20 → 2014-06-16 13:00 (+27d) | 2014-05-20 → 2014-06-16 17:00 (+27d) | 0d? → 0.5d | 0d → none | none → 59 | was named Develop Project Plan; constraint must start on 2014-05-20 → none; resources none → TuanNN |
| 61 | **Search Module** | 2014-06-10 → 2014-06-10 08:00 | 2014-06-12 → 2014-06-12 17:00 | 3d? → 3d | 0d → none |  |  |
| 62 | Search Sentences Module | 2014-06-10 → 2014-06-10 08:00 | 2014-06-10 → 2014-06-10 12:00 |  | 3.5d → none |  | constraint start no earlier than 2014-06-10 → none; resources DatPT → MinhPT |
| 63 | Search Conversation Module | 2014-06-10 → 2014-06-10 13:00 | 2014-06-10 → 2014-06-10 17:00 |  | 3.5d → none |  | constraint start no earlier than 2014-06-10 → none; resources DatPT → MinhPT |
| 64 | Search Video Module | 2014-06-11 → 2014-06-11 08:00 | 2014-06-11 → 2014-06-11 12:00 |  | 3.5d → none |  | constraint start no earlier than 2014-06-11 → none; resources DatPT → MinhPT |
| 65 | Search Grammar Module | 2014-06-11 → 2014-06-11 13:00 | 2014-06-11 → 2014-06-11 17:00 |  | 3.5d → none |  | constraint start no earlier than 2014-06-11 → none; resources DatPT → MinhPT |
| 66 | Search Specialized Japanese Module | 2014-06-12 → 2014-06-12 08:00 | 2014-06-12 → 2014-06-12 12:00 |  | 3.5d → none |  | constraint start no earlier than 2014-06-12 → none; resources DatPT → MinhPT |
| 67 | Login/Logout Module | 2014-06-12 → 2014-06-12 13:00 | 2014-06-13 → 2014-06-12 17:00 (-1d) | 1d → 0.5d | 3.5d → none |  | constraint start no earlier than 2014-06-12 → none; resources DatPT → MinhPT |
| 68 | Register Account Module | 2014-06-13 → 2014-06-13 08:00 | 2014-06-16 → 2014-06-13 12:00 (-3d) | 1d → 0.5d | 3.5d → none |  | constraint start no earlier than 2014-06-13 → none; resources DatPT → MinhPT |
| 69 | Edit Profile Module | 2014-06-13 → 2014-06-13 13:00 | 2014-06-16 → 2014-06-13 17:00 (-3d) | 1d → 0.5d | 3.5d → none | 54 → 68 | was named Contribute Opinion, Database Module; constraint start no earlier than 2014-06-13 → none; resources NamLD → MinhPT |
| 70 | Forgot Password Module | 2014-06-17 → 2014-06-16 08:00 (-1d) | 2014-06-17 → 2014-06-16 12:00 (-1d) |  | 28d → none | 72 → 69 | constraint start no earlier than 2014-06-17 → none; resources NamLD → MinhPT |

| ID | Task | Start | Finish | Duration | Total float | Predecessors | Other |
| --- | --- | --- | --- | --- | --- | --- | --- |
| 71 | **Part 2** | 2014-06-16 → 2014-06-16 08:00 | 2014-06-19 → 2014-06-20 17:00 (+1d) | 3.5d? → 5d | 0d → none |  | was named Phase 2 |
| 72 | Contact Admin Module | 2014-06-16 → 2014-06-17 08:00 (+1d) | 2014-06-17 → 2014-06-18 12:00 (+1d) | 1d → 1.5d | 28d → none | 69 → 60 | was named Change Password Module; constraint start no earlier than 2014-06-16 → none; resources NamLD → TuanNN |
| 73 | Doing Test Module | 2014-06-18 → 2014-06-18 13:00 | 2014-06-19 → 2014-06-18 17:00 (-1d) | 1d → 0.5d | 26.5d → none | 76 → 72 | constraint start no earlier than 2014-06-18 → none; resources DatPT → TuanNN |
| 74 | Reading Document Module | 2014-06-16 → 2014-06-19 08:00 (+3d) | 2014-06-17 → 2014-06-19 12:00 (+2d) | 1d → 0.5d | 26.5d → none | 68 → 73 | constraint start no earlier than 2014-06-16 → none; resources DatPT → TuanNN |
| 75 | Training Listening Module | 2014-06-17 → 2014-06-19 13:00 (+2d) | 2014-06-17 → 2014-06-19 17:00 (+2d) |  | 26.5d → none |  | constraint start no earlier than 2014-06-17 → none; resources DatPT → TuanNN |
| 76 | Listening Conversation Module | 2014-06-18 → 2014-06-20 08:00 (+2d) | 2014-06-18 → 2014-06-20 10:00 (+2d) | 0.5d → 0.25d | 26.5d → none |  | constraint start no earlier than 2014-06-17 → none; resources DatPT → TuanNN |
| 77 | **Non-functional Requirements Specification** | 2014-06-19 → 2014-06-09 08:00 (-10d) | 2014-06-24 → 2014-06-09 17:00 (-15d) | 4d? → 1d | 0d → none |  |  |
| 78 | Develop User Interface requirements | 2014-06-19 → 2014-06-09 08:00 (-10d) | 2014-06-20 → 2014-06-09 17:00 (-11d) |  | 26.5d → none | 47 → 45 | constraint start no earlier than 2014-06-19 → none; resources MinhPT → DatPT |
| 79 | Develop Performance requirements | 2014-06-20 → 2014-06-09 08:00 (-11d) | 2014-06-23 → 2014-06-09 17:00 (-14d) |  | 26.5d → none | 78 → 44 | constraint start no earlier than 2014-06-20 → none; resources TuanNN → MinhPT |
| 80 | Submit report no.3 First version | 2014-06-23 → 2014-06-20 10:00 (-3d) | 2014-06-23 → 2014-06-20 10:00 (-3d) |  | 26.5d → none | 79 → 76 | constraint start no earlier than 2014-06-21 → none; resources NamLD → TuanNN |
| 81 | Revise after got comments of Report no.3 | 2014-06-23 → 2014-06-20 10:00 (-3d) | 2014-06-24 → 2014-06-20 12:00 (-4d) | 1d → 0.25d | 26.5d → none |  | constraint start no earlier than 2014-06-23 → none; resources NamLD; MinhPT; TuanNN → TuanNN |
| 82 | Progress Report 3 | 2014-05-13 → 2014-06-20 13:00 (+38d) | 2014-05-13 → 2014-06-20 15:00 (+38d) | 0d? → 0.25d | 0d → none | none → 81 | was named Develop report no.1: Introduction; constraint must start on 2014-05-13 → none; resources none → TuanNN |
| 83 | Submit report no.3 final version | 2014-06-24 → 2014-06-20 15:00 (-4d) | 2014-06-24 → 2014-06-20 15:00 (-4d) |  | 26.5d → none | 81 → 82 | constraint start no earlier than 2014-06-24 → none; resources NamLD → TuanNN |
| 84 | **Design** | 2014-06-09 → 2014-06-09 08:00 | 2014-07-01 → 2014-07-01 17:00 | 17d? → 17d | 0d → none |  |  |
| 85 | **System Architectural Design** | 2014-06-09 → 2014-06-09 08:00 | 2014-06-12 → 2014-06-12 17:00 | 4d? → 4d | 0d → none |  |  |
| 86 | Define the system structure and collect system features | 2014-06-09 → 2014-06-09 08:00 | 2014-06-09 → 2014-06-09 17:00 |  | 34.5d → none | none → 45 | constraint start no earlier than 2014-06-09 → none; resources DatPT; NamLD → NamLD |
| 87 | Study the common System Architeture | 2014-06-10 → 2014-06-10 08:00 | 2014-06-10 → 2014-06-10 17:00 |  | 34.5d → none |  | constraint start no earlier than 2014-06-10 → none; resources DatPT; NamLD → NamLD |
| 88 | Choice of System Architeture | 2014-06-11 → 2014-06-11 08:00 | 2014-06-11 → 2014-06-11 17:00 | 0.5d → 1d | 34.5d → none |  | constraint start no earlier than 2014-06-11 → none |
| 89 | Discussion of Alternative Design | 2014-06-11 → 2014-06-12 08:00 (+1d) | 2014-06-12 → 2014-06-12 17:00 |  | 34.5d → none |  | constraint start no earlier than 2014-06-11 → none; resources DatPT → NamLD |
| 90 | **Detailed Design** | 2014-06-09 → 2014-06-10 08:00 (+1d) | 2014-06-30 → 2014-07-01 17:00 (+1d) | 16d? → 16d | 0d → none |  |  |
| 91 | **Component Diagram** | 2014-06-09 → 2014-06-10 08:00 (+1d) | 2014-06-11 → 2014-06-11 17:00 | 3d? → 2d | 0d → none |  |  |
| 92 | Define the component | 2014-06-09 → 2014-06-10 08:00 (+1d) | 2014-06-09 → 2014-06-10 12:00 (+1d) | 1d → 0.5d | 22d → none | 41 → 78 | constraint start no earlier than 2014-06-09 → none; resources DatPT; NamLD → DatPT |
| 93 | General component diagram | 2014-06-10 → 2014-06-10 13:00 | 2014-06-10 → 2014-06-10 17:00 |  | 22d → none |  | constraint start no earlier than 2014-06-10 → none; resources NamLD → DatPT |
| 94 | Detail component diagram | 2014-06-10 → 2014-06-11 08:00 (+1d) | 2014-06-10 → 2014-06-11 12:00 (+1d) |  | 22d → none |  | constraint start no earlier than 2014-06-10 → none; resources NamLD → DatPT |
| 95 | Detail Database Design | 2014-06-11 → 2014-06-11 13:00 | 2014-06-11 → 2014-06-11 17:00 | 1d → 0.5d | 22d → none |  | constraint start no earlier than 2014-06-11 → none; resources DatPT; NamLD → DatPT |
| 96 | **User Interface Design** | 2014-06-11 → 2014-06-12 08:00 (+1d) | 2014-06-30 → 2014-06-26 17:00 (-4d) | 14d? → 11d |  |  |  |
| 98 | Homepage Module | 2014-06-12 → 2014-06-12 08:00 | 2014-06-12 → 2014-06-12 17:00 |  | 22d → none |  | constraint start no earlier than 2014-06-12 → none; resources NamLD; DatPT → DatPT |
| 99 | **Admin Module** | 2014-06-13 → 2014-06-13 08:00 | 2014-06-18 → 2014-06-19 17:00 (+1d) | 4d? → 5d | 0d → none |  |  |
| 100 | Admin’s account management Module | 2014-06-13 → 2014-06-13 08:00 | 2014-06-13 → 2014-06-13 12:00 | 1d → 0.5d | 28d → none | 98 → 89 | was named Admin Manage Account Module; constraint start no earlier than 2014-06-13 → none |
| 101 | Management Member’s account Module | 2014-06-16 → 2014-06-13 13:00 (-3d) | 2014-06-16 → 2014-06-13 17:00 (-3d) | 1d → 0.5d | 28d → none |  | was named Member's account management Module; constraint start no earlier than 2014-06-16 → none |
| 102 | Vocabulary Management Module | 2014-06-17 → 2014-06-16 08:00 (-1d) | 2014-06-17 → 2014-06-16 12:00 (-1d) | 1d → 0.5d | 28d → none |  | was named Contribute Opinion, Database Management Module; constraint start no earlier than 2014-06-17 → none |
| 103 | Grammar Management Module | 2014-06-18 → 2014-06-16 13:00 (-2d) | 2014-06-18 → 2014-06-16 17:00 (-2d) | 1d → 0.5d | 28d → none |  | was named Data Management Module; constraint start no earlier than 2014-06-18 → none |
| 104 | Reading Document Management Module | 2014-07-01 → 2014-06-17 08:00 (-14d) | 2014-07-01 → 2014-06-17 12:00 (-14d) | 0d? → 0.5d | 0d → none | none → 103 | was named Solution; constraint must finish on 2014-07-01 → none; resources none → NamLD |
| 105 | Conversation management Module | 2014-06-02 → 2014-06-17 13:00 (+15d) | 2014-06-02 → 2014-06-17 17:00 (+15d) | 0d? → 0.5d | 0d → none | none → 104 | was named Solution; constraint must start on 2014-06-02 → none; resources none → NamLD |
| 106 | Video Management Module | 2014-06-04 → 2014-06-18 08:00 (+14d) | 2014-06-04 → 2014-06-18 12:00 (+14d) | 0d? → 0.5d | 0d → none | none → 105 | was named Project Management; constraint must finish on 2014-06-04 → none; resources none → NamLD |
| 107 | Listening Article Management Module | 2014-06-02 → 2014-06-18 13:00 (+16d) | 2014-06-02 → 2014-06-18 17:00 (+16d) | 0d? → 0.5d | 0d → none | none → 106 | was named Project Management; constraint must start on 2014-06-02 → none; resources none → NamLD |
| 108 | Doing test management Module | 2014-06-10 → 2014-06-19 08:00 (+9d) | 2014-06-10 → 2014-06-19 12:00 (+9d) | 0d? → 0.5d | 0d → none | none → 107 | was named Technologies; constraint must finish on 2014-06-10 → none; resources none → NamLD |
| 109 | Contact's content management Module | 2014-06-02 → 2014-06-19 13:00 (+17d) | 2014-06-02 → 2014-06-19 17:00 (+17d) | 0d? → 0.5d | 0d → none | none → 108 | was named Technologies; constraint must start on 2014-06-02 → none; resources none → NamLD |
| 110 | **Search Module** | 2014-06-13 → 2014-06-13 08:00 | 2014-06-20 → 2014-06-19 17:00 (-1d) | 6d? → 5d | 0d → none |  |  |
| 111 | Search Sentences Module | 2014-06-13 → 2014-06-13 08:00 | 2014-06-13 → 2014-06-13 12:00 | 1d → 0.5d | 22d → none |  | constraint start no earlier than 2014-06-13 → none |
| 112 | Search Conversation Module | 2014-06-16 → 2014-06-13 13:00 (-3d) | 2014-06-16 → 2014-06-13 17:00 (-3d) | 1d → 0.5d | 22d → none |  | constraint start no earlier than 2014-06-16 → none |
| 113 | Search Video Module | 2014-06-17 → 2014-06-16 08:00 (-1d) | 2014-06-17 → 2014-06-16 12:00 (-1d) | 1d → 0.5d | 22d → none |  | constraint start no earlier than 2014-06-17 → none |
| 114 | Search Grammar Module | 2014-06-18 → 2014-06-16 13:00 (-2d) | 2014-06-18 → 2014-06-16 17:00 (-2d) | 1d → 0.5d | 22d → none |  | constraint start no earlier than 2014-06-18 → none |
| 115 | Search Specialized Japanese Module | 2014-06-19 → 2014-06-17 08:00 (-2d) | 2014-06-19 → 2014-06-17 12:00 (-2d) | 1d → 0.5d | 22d → none |  | constraint start no earlier than 2014-06-19 → none |
| 116 | Login/Logout Module | 2014-06-20 → 2014-06-17 13:00 (-3d) | 2014-06-20 → 2014-06-17 17:00 (-3d) |  | 22d → none |  | constraint start no earlier than 2014-06-20 → none |
| 117 | Register Account Module | 2014-06-20 → 2014-06-18 08:00 (-2d) | 2014-06-20 → 2014-06-18 12:00 (-2d) |  | 22d → none |  | constraint start no earlier than 2014-06-20 → none |
| 118 | Edit Profile Module | 2014-06-19 → 2014-06-18 13:00 (-1d) | 2014-06-19 → 2014-06-18 17:00 (-1d) | 1d → 0.5d | 28d → none | 103 → 117 | was named Contribute Opinion, Database Module; constraint start no earlier than 2014-06-19 → none; resources NamLD → DatPT |
| 119 | Forgot Password Module | 2014-06-06 → 2014-06-19 08:00 (+13d) | 2014-06-06 → 2014-06-19 12:00 (+13d) | 0d? → 0.5d | 0d → none | none → 118 | was named User Requirements Specification; constraint must finish on 2014-06-06 → none; resources none → DatPT |
| 120 | **Part 2** | 2014-06-21 → 2014-06-19 08:00 (-2d) | 2014-06-28 → 2014-06-26 17:00 (-2d) | 5d? → 6d | 0d → none |  | was named Phase 2 |
| 121 | Change Password Module | 2014-06-23 → 2014-06-19 13:00 (-4d) | 2014-06-23 → 2014-06-19 17:00 (-4d) |  | 27d → none | 118 → 119 | constraint start no earlier than 2014-06-21 → none; resources NamLD → DatPT |
| 122 | Forgot Password Module | 2014-06-23 → 2014-06-20 08:00 (-3d) | 2014-06-23 → 2014-06-20 12:00 (-3d) |  | 27d → none |  | constraint start no earlier than 2014-06-23 → none; resources NamLD → DatPT |
| 123 | Reading Document Module | 2014-06-23 → 2014-06-20 13:00 (-3d) | 2014-06-23 → 2014-06-23 12:00 |  | 22d → none | 117 → 122 | constraint start no earlier than 2014-06-23 → none |
| 124 | Training Listening Module | 2014-06-24 → 2014-06-23 13:00 (-1d) | 2014-06-24 → 2014-06-23 17:00 (-1d) | 1d → 0.5d | 22d → none |  | constraint start no earlier than 2014-06-24 → none |
| 125 | Listening Conversation Module | 2014-06-25 → 2014-06-24 08:00 (-1d) | 2014-06-25 → 2014-06-24 17:00 (-1d) |  | 22d → none |  | constraint start no earlier than 2014-06-25 → none |
| 126 | Doing Test Module | 2014-06-26 → 2014-06-25 08:00 (-1d) | 2014-06-27 → 2014-06-26 17:00 (-1d) |  | 22d → none |  | constraint start no earlier than 2014-06-26 → none |
| 127 | Submit report no.4 First version | 2014-06-28 → 2014-06-28 08:00 | 2014-06-28 → 2014-06-28 08:00 |  | 22d → none |  | constraint start no earlier than 2014-06-28 → none; resources NamLD → MinhPT |
| 128 | Review and update comments report #4 | 2014-06-30 → 2014-06-30 08:00 | 2014-06-30 → 2014-06-30 12:00 | 1d → 0.5d | 22d → none |  | constraint start no earlier than 2014-06-30 → none; resources NamLD → MinhPT |
| 129 | Submit report no.4 final version | 2014-07-01 → 2014-06-30 13:00 (-1d) | 2014-07-01 → 2014-06-30 13:00 (-1d) |  | 22d → none |  | constraint start no earlier than 2014-07-01 → none; resources NamLD → MinhPT |
| 130 | **Coding** | 2014-06-09 → 2014-06-20 08:00 (+11d) | 2014-06-09 → 2014-07-01 17:00 (+22d) | 0d? → 8d | 0d → none |  | was named Software Requirements Specification; constraint must start on 2014-06-09 → none |
| 131 | **Part 1** | 2014-06-18 → 2014-06-20 08:00 (+2d) | 2014-06-18 → 2014-07-01 17:00 (+13d) | 0d? → 8d |  |  | was named Functional Requirement Specification; constraint must finish on 2014-06-18 → none |
| 132 | Admin’s account management Module | 2014-06-09 → 2014-06-20 08:00 (+11d) | 2014-06-09 → 2014-06-20 17:00 (+11d) | 0d? → 1d | 0d → none | none → 99 | was named Phase 1; constraint must start on 2014-06-09 → none; resources none → NamLD |
| 133 | Management Member’s account Module | 2014-06-13 → 2014-06-23 08:00 (+10d) | 2014-06-13 → 2014-06-23 17:00 (+10d) | 0d? → 1d | 0d → none | none → 132 | was named Admin Module; constraint must finish on 2014-06-13 → none; resources none → NamLD |
| 134 | Vocabulary Management Module | 2014-06-10 → 2014-06-24 08:00 (+14d) | 2014-06-10 → 2014-06-24 12:00 (+14d) | 0d? → 0.5d | 0d → none | none → 133 | was named Admin Module; constraint must start on 2014-06-10 → none; resources none → NamLD |
| 135 | Grammar Management Module | 2014-06-12 → 2014-06-24 13:00 (+12d) | 2014-06-12 → 2014-06-24 17:00 (+12d) | 0d? → 0.5d | 0d → none | none → 134 | was named Search Module; constraint must finish on 2014-06-12 → none; resources none → NamLD |
| 136 | Reading Document Management Module | 2014-06-10 → 2014-06-25 08:00 (+15d) | 2014-06-10 → 2014-06-25 17:00 (+15d) | 0d? → 1d | 0d → none | none → 135 | was named Search Module; constraint must start on 2014-06-10 → none; resources none → NamLD |
| 137 | Conversation management Module | 2014-06-18 → 2014-06-26 08:00 (+8d) | 2014-06-18 → 2014-06-26 17:00 (+8d) | 0d? → 1d | 0d → none | none → 136 | was named Phase 2; constraint must finish on 2014-06-18 → none; resources none → NamLD |
| 138 | Video Management Module | 2014-06-16 → 2014-06-27 08:00 (+11d) | 2014-06-16 → 2014-06-27 12:00 (+11d) | 0d? → 0.5d | 0d → none | none → 137 | was named Phase 2; constraint must start on 2014-06-16 → none; resources none → NamLD |
| 139 | Listening Article Management Module | 2014-06-24 → 2014-06-27 13:00 (+3d) | 2014-06-24 → 2014-06-27 17:00 (+3d) | 0d? → 0.5d | 0d → none | none → 138 | was named Non-functional Requirements Specification; constraint must finish on 2014-06-24 → none; resources none → NamLD |
| 140 | Doing test management Module | 2014-06-19 → 2014-06-30 08:00 (+11d) | 2014-06-19 → 2014-06-30 17:00 (+11d) | 0d? → 1d | 0d → none | none → 139 | was named Non-functional Requirements Specification; constraint must start on 2014-06-19 → none; resources none → NamLD |
| 141 | Contact's content management Module | 2014-07-01 → 2014-07-01 08:00 | 2014-07-01 → 2014-07-01 17:00 | 0d? → 1d | 0d → none | none → 140 | was named Design; constraint must finish on 2014-07-01 → none; resources none → NamLD |

| ID | Task | Start | Finish | Duration | Total float | Predecessors | Other |
| --- | --- | --- | --- | --- | --- | --- | --- |
| 142 | **Testing** | 2014-06-09 → 2014-06-16 08:00 (+7d) | 2014-06-09 → 2014-07-01 17:00 (+22d) | 0d? → 12d | 0d → none |  | was named Functional Requirement Specification; constraint must start on 2014-06-09 → none |
| 143 | **Create Test Document (Report 5)** | 2014-06-12 → 2014-06-16 13:00 (+4d) | 2014-06-12 → 2014-06-23 13:00 (+11d) | 0d? → 5d |  |  | was named System Architectural Design; constraint must finish on 2014-06-12 → none |
| 144 | Create test plan | 2014-06-16 → 2014-06-16 13:00 | 2014-06-24 → 2014-06-20 17:00 (-4d) | 6d → 4.5d | 3.5d → none | 48 → 70 | constraint start no earlier than 2014-06-16 → none; resources MinhPT; TuanNN → MinhPT |
| 145 | Review and update Test Plan | 2014-06-24 → 2014-06-23 08:00 (-1d) | 2014-06-25 → 2014-06-23 12:00 (-2d) | 1d → 0.5d | 3.5d → none |  | constraint start no earlier than 2014-06-24 → none; resources MinhPT; TuanNN → MinhPT |
| 146 | Submit Final Test Plan | 2014-06-09 → 2014-06-23 13:00 (+14d) | 2014-06-09 → 2014-06-23 13:00 (+14d) | 0d? → 0d | 0d → none | none → 145 | was named System Architectural Design; constraint must start on 2014-06-09 → none; resources none → MinhPT |
| 147 | **Create Test Case** | 2014-06-30 → 2014-06-23 08:00 (-7d) | 2014-06-30 → 2014-06-28 17:00 (-2d) | 0d? → 6d | 0d → none |  | was named Detailed Design; constraint must finish on 2014-06-30 → none |
| 148 | Create Unit Test Case | 2014-06-25 → 2014-06-23 13:00 (-2d) | 2014-07-04 → 2014-06-28 17:00 (-6d) | 7d → 5.5d | 3.5d → none | 145 → 146 | constraint start no earlier than 2014-06-25 → none |
| 149 | **Construction** | 2014-06-16 → 2014-07-02 08:00 (+16d) | 2014-08-18 → 2014-08-08 17:00 (-10d) | 46d? → 28d | 0d → none |  |  |
| 150 | **Requirements & Design** | 2014-07-02 → 2014-07-02 08:00 | 2014-07-03 → 2014-07-03 17:00 | 2d? → 2d | 0d → none |  |  |
| 151 | Refine requirement documents | 2014-07-02 → 2014-07-02 08:00 | 2014-07-02 → 2014-07-02 17:00 |  | 21d → none |  | constraint start no earlier than 2014-07-02 → none; resources NamLD; MinhPT → MinhPT |
| 152 | Refine design documents | 2014-07-03 → 2014-07-03 08:00 | 2014-07-03 → 2014-07-03 12:00 |  | 21d → none |  | constraint start no earlier than 2014-07-03 → none; resources DatPT; NamLD → NamLD |
| 153 | **Coding & Unit Test** | 2014-07-03 → 2014-07-03 08:00 | 2014-07-30 → 2014-07-29 17:00 (-1d) | 20d? → 19d | 0d → none |  |  |
| 154 | **Part 1 (Continue)** | 2014-07-03 → 2014-07-03 13:00 | 2014-07-22 → 2014-07-14 17:00 (-8d) | 13.5d? → 7.5d | 1.5d → none |  | was named Phase 1 |
| 155 | Homepage Module | 2014-07-03 → 2014-07-03 13:00 | 2014-07-04 → 2014-07-04 17:00 |  | 21d → none |  | constraint start no earlier than 2014-07-03 → none; resources DatPT; NamLD → NamLD |
| 156 | **Search Module** | 2014-07-05 → 2014-07-05 08:00 | 2014-07-17 → 2014-07-14 17:00 (-3d) | 9d? → 7d | 0d → none |  |  |
| 157 | Search Sentences Module | 2014-07-07 → 2014-07-05 08:00 (-2d) | 2014-07-08 → 2014-07-07 17:00 (-1d) |  | 21d → none |  | constraint start no earlier than 2014-07-05 → none |
| 158 | Search Conversation Module | 2014-07-09 → 2014-07-08 08:00 (-1d) | 2014-07-10 → 2014-07-08 17:00 (-2d) | 2d → 1d | 21d → none |  | constraint start no earlier than 2014-07-08 → none |
| 159 | Search Video Module | 2014-07-11 → 2014-07-10 08:00 (-1d) | 2014-07-11 → 2014-07-10 17:00 (-1d) |  | 21d → none |  | constraint start no earlier than 2014-07-10 → none |
| 160 | Search Grammar Module | 2014-07-14 → 2014-07-11 08:00 (-3d) | 2014-07-15 → 2014-07-11 17:00 (-4d) | 2d → 1d | 21d → none |  | constraint start no earlier than 2014-07-11 → none |
| 161 | Search Specialized Japanese Module | 2014-07-16 → 2014-07-14 08:00 (-2d) | 2014-07-17 → 2014-07-14 17:00 (-3d) | 2d → 1d | 21d → none |  | constraint start no earlier than 2014-07-15 → none |
| 162 | Login/Logout Module | 2014-07-21 → 2014-07-07 08:00 (-14d) | 2014-07-21 → 2014-07-07 17:00 (-14d) |  | 25d → none | Data Management Module → 155 | constraint start no earlier than 2014-07-18 → none |
| 163 | Register Account Module | 2014-07-22 → 2014-07-08 08:00 (-14d) | 2014-07-22 → 2014-07-08 17:00 (-14d) |  | 25d → none |  | constraint start no earlier than 2014-07-21 → none |
| 164 | Edit Profile Module | 2014-07-18 → 2014-07-09 08:00 (-9d) | 2014-07-21 → 2014-07-09 17:00 (-12d) | 2d → 1d | 21d → none | 161 → 163 | was named Contribute Opinion, Database Module; constraint start no earlier than 2014-07-17 → none; resources DatPT → NamLD |
| 165 | Forgot Password Module | 2014-06-09 → 2014-07-10 08:00 (+31d) | 2014-06-09 → 2014-07-10 17:00 (+31d) | 0d? → 1d | 0d → none | none → 164 | was named Component Diagram; constraint must start on 2014-06-09 → none; resources none → NamLD |
| 166 | **Part 2** | 2014-07-21 → 2014-07-21 08:00 | 2014-07-30 → 2014-07-28 17:00 (-2d) | 8d? → 6d | 0d → none |  | was named Phase 2 |
| 167 | Change Password Module | 2014-07-23 → 2014-07-21 08:00 (-2d) | 2014-07-23 → 2014-07-21 17:00 (-2d) |  | 25d → none | 163 → 161 | constraint start no earlier than 2014-07-22 → none; resources NamLD → DatPT |
| 168 | Forgot Password Module | 2014-07-24 → 2014-07-22 08:00 (-2d) | 2014-07-24 → 2014-07-22 17:00 (-2d) |  | 25d → none |  | constraint start no earlier than 2014-07-23 → none; resources NamLD → DatPT |
| 169 | Reading Document Module | 2014-07-22 → 2014-07-23 08:00 (+1d) | 2014-07-23 → 2014-07-24 17:00 (+1d) |  | 21d → none |  | constraint start no earlier than 2014-07-21 → none |
| 170 | Training Listening Module | 2014-07-24 → 2014-07-25 08:00 (+1d) | 2014-07-24 → 2014-07-25 17:00 (+1d) |  | 21d → none |  | constraint start no earlier than 2014-07-23 → none |
| 171 | Listening Conversation Module | 2014-07-25 → 2014-07-23 08:00 (-2d) | 2014-07-25 → 2014-07-23 17:00 (-2d) |  | 21d → none | 170 → 188 | constraint start no earlier than 2014-07-24 → none; resources DatPT → NamLD |
| 172 | Doing Test Module | 2014-07-28 → 2014-07-24 08:00 (-4d) | 2014-07-30 → 2014-07-28 17:00 (-2d) |  | 21d → none |  | constraint start no earlier than 2014-07-25 → none; resources DatPT → NamLD |
| 173 | **Testing** | 2014-06-16 → 2014-07-02 08:00 (+16d) | 2014-08-15 → 2014-08-06 17:00 (-9d) | 45d? → 26d | 0d → none |  |  |
| 174 | **Create test documents (Continue)** | 2014-06-16 → 2014-07-02 08:00 (+16d) | 2014-07-19 → 2014-07-10 17:00 (-9d) | 25d? → 7d | 0d → none |  | was named Create test documents (Report 5) |
| 175 | **Create test cases** | 2014-06-25 → 2014-07-02 08:00 (+7d) | 2014-07-11 → 2014-07-07 17:00 (-4d) | 13d? → 4d | 0d → none |  |  |
| 176 | Create Integration Test Case | 2014-07-04 → 2014-07-03 08:00 (-1d) | 2014-07-08 → 2014-07-04 17:00 (-4d) |  | 3.5d → none | 148 → 151 | constraint start no earlier than 2014-07-04 → none |
| 177 | Create System Test Case | 2014-07-08 → 2014-07-07 08:00 (-1d) | 2014-07-09 → 2014-07-07 17:00 (-2d) |  | 3.5d → none |  | constraint start no earlier than 2014-07-08 → none |
| 178 | Create test checklist | 2014-07-09 → 2014-07-08 08:00 (-1d) | 2014-07-11 → 2014-07-08 17:00 (-3d) | 2d → 1d | 3.5d → none |  | constraint start no earlier than 2014-07-09 → none |
| 179 | Review test documents | 2014-07-11 → 2014-07-09 08:00 (-2d) | 2014-07-14 → 2014-07-09 12:00 (-5d) | 1d → 0.5d | 3.5d → none |  | constraint start no earlier than 2014-07-11 → none |
| 180 | Submit report no.5 First version | 2014-07-14 → 2014-07-09 13:00 (-5d) | 2014-07-14 → 2014-07-09 13:00 (-5d) |  | 3.5d → none |  | constraint start no earlier than 2014-07-14 → none; resources NamLD → MinhPT |
| 181 | Review report no.5 | 2014-07-15 → 2014-07-09 13:00 (-6d) | 2014-07-15 → 2014-07-09 17:00 (-6d) | 1d → 0.5d | 3d → none |  | constraint start no earlier than 2014-07-15 → none |
| 182 | Submit report no.5 final version | 2014-07-16 → 2014-07-10 08:00 (-6d) | 2014-07-16 → 2014-07-10 08:00 (-6d) |  | 3d → none |  | constraint start no earlier than 2014-07-16 → none; resources NamLD → MinhPT |
| 183 | **Execute test** | 2014-07-21 → 2014-07-11 08:00 (-10d) | 2014-08-08 → 2014-08-06 17:00 (-2d) | 15d? → 19d | 0d → none |  |  |
| 184 | **Execute Test Part 1** | 2014-07-21 → 2014-07-11 08:00 (-10d) | 2014-07-30 → 2014-07-22 17:00 (-8d) | 8d? → 8d | 0d → none |  | was named Execute Test Phase 1 |
| 185 | Execute Unit Test | 2014-07-21 → 2014-07-11 08:00 (-10d) | 2014-07-25 → 2014-07-17 17:00 (-8d) |  | 0d → none |  | constraint start no earlier than 2014-07-21 → none |
| 186 | Fix bug Unit Test | 2014-07-28 → 2014-07-18 08:00 (-10d) | 2014-07-28 → 2014-07-18 17:00 (-10d) |  | 0d → none |  | constraint start no earlier than 2014-07-28 → none |
| 187 | Execute Integration Test | 2014-07-29 → 2014-07-21 08:00 (-8d) | 2014-07-29 → 2014-07-21 17:00 (-8d) |  | 0d → none |  | constraint start no earlier than 2014-07-29 → none |
| 188 | Fix bug Integration Test | 2014-07-30 → 2014-07-22 08:00 (-8d) | 2014-07-30 → 2014-07-22 17:00 (-8d) |  | 0d → none |  | constraint start no earlier than 2014-07-30 → none; resources DatPT; NamLD → NamLD |
| 189 | **Execute Test Part 2** | 2014-07-30 → 2014-07-29 08:00 (-1d) | 2014-08-08 → 2014-08-05 17:00 (-3d) | 8d? → 6d | 0d → none |  | was named Execute Test Phase 2 |
| 190 | Execute Unit Test | 2014-07-31 → 2014-07-29 08:00 (-2d) | 2014-08-05 → 2014-07-31 17:00 (-5d) | 4d → 3d | 0d → none |  | constraint start no earlier than 2014-07-31 → none |
| 191 | Fix bug Unit Test | 2014-08-06 → 2014-08-01 08:00 (-5d) | 2014-08-06 → 2014-08-01 17:00 (-5d) |  | 0d → none |  | constraint start no earlier than 2014-08-06 → none |
| 192 | Execute Integration Test | 2014-08-07 → 2014-08-04 08:00 (-3d) | 2014-08-07 → 2014-08-04 17:00 (-3d) |  | 0d → none |  | constraint start no earlier than 2014-08-07 → none |
| 193 | Fix bug Integration Test | 2014-08-08 → 2014-08-05 08:00 (-3d) | 2014-08-08 → 2014-08-05 12:00 (-3d) |  | 0d → none |  | constraint start no earlier than 2014-08-08 → none; resources none → DatPT; NamLD |
| 194 | Execute System Test | 2014-08-08 → 2014-08-05 13:00 (-3d) | 2014-08-08 → 2014-08-05 17:00 (-3d) |  | 0d → none |  | constraint start no earlier than 2014-08-08 → none |
| 195 | Complete Testing | 2014-06-30 → 2014-08-06 08:00 (+37d) | 2014-06-30 → 2014-08-06 08:00 (+37d) | 0d? → 0d | 0d → none | none → 194 | was named User Interface Design; constraint must finish on 2014-06-30 → none; resources none → Project Team |
| 196 | Create report no.6 -Software User's Manual | 2014-08-11 → 2014-08-06 08:00 (-5d) | 2014-08-13 → 2014-08-07 12:00 (-6d) | 3d → 1.5d | 0d → none |  | constraint start no earlier than 2014-08-11 → none |
| 197 | Submit report no.6 First version | 2014-08-14 → 2014-08-07 13:00 (-7d) | 2014-08-14 → 2014-08-07 13:00 (-7d) |  | 0d → none |  | constraint start no earlier than 2014-08-14 → none |
| 198 | Review & update report no.6 | 2014-08-14 → 2014-08-07 13:00 (-7d) | 2014-08-14 → 2014-08-07 17:00 (-7d) | 1d → 0.5d | 0d → none |  | constraint start no earlier than 2014-08-14 → none |
| 199 | Submit report no.6 final version | 2014-08-15 → 2014-08-08 08:00 (-7d) | 2014-08-15 → 2014-08-08 08:00 (-7d) |  | 0d → none |  | constraint start no earlier than 2014-08-15 → none |
| 200 | Submit the last document and CD source code | 2014-08-22 → 2014-08-08 08:00 (-14d) | 2014-08-22 → 2014-08-08 12:00 (-14d) | 0d → 0.5d | 0d → none | 204 → 199 | constraint start no earlier than 2014-08-22 → none |
| 201 | **Transition** | 2014-08-15 → 2014-08-11 08:00 (-4d) | 2014-08-28 → 2014-08-22 17:00 (-6d) | 10d? → 10d | 0d → none |  |  |
| 202 | **Preclosing** | 2014-08-15 → 2014-08-11 08:00 (-4d) | 2014-08-26 → 2014-08-18 17:00 (-8d) | 8d? → 6d | 0d → none |  |  |
| 203 | Conduct project review-lessons learned | 2014-08-15 → 2014-08-11 08:00 (-4d) | 2014-08-18 → 2014-08-12 17:00 (-6d) |  | 0d → none |  | constraint start no earlier than 2014-08-15 → none |
| 204 | Complete program and documents | 2014-08-19 → 2014-08-13 08:00 (-6d) | 2014-08-22 → 2014-08-18 17:00 (-4d) |  | 0d → none |  | constraint start no earlier than 2014-08-18 → none |
| 205 | **Closing** | 2014-08-25 → 2014-08-18 08:00 (-7d) | 2014-08-28 → 2014-08-22 17:00 (-6d) | 4d? → 5d | 0d → none |  |  |
| 206 | Prepare for presentation | 2014-08-25 → 2014-08-18 08:00 (-7d) | 2014-08-26 → 2014-08-19 17:00 (-7d) |  | 0d → none | 200 → none | constraint start no earlier than 2014-08-22 → none |
| 207 | Represent capstone project | 2014-08-27 → 2014-08-20 08:00 (-7d) | 2014-08-28 → 2014-08-21 17:00 (-7d) |  | 0d → none |  | constraint start no earlier than 2014-08-25 → none |
| 208 | Project completed | 2014-08-28 → 2014-08-22 08:00 (-6d) | 2014-08-28 → 2014-08-22 08:00 (-6d) |  | 0d → none |  | constraint start no earlier than 2014-08-27 → none |

## Version 3 (saved 2014-06-11, file MS_2013_UJD_VN_Project_Schedule.mpp)

Last finish stays 2014-08-27.

Added:

| ID | Task | Duration | Start | Finish | Predecessors | Resources |
| --- | --- | --- | --- | --- | --- | --- |
| 33 | Complete Project Plan Final Version | 0d | 2014-05-28 08:00 | 2014-05-28 08:00 | 32 | NamLD |
| 83 | Complete SRS Final Version | 0d | 2014-06-20 13:00 | 2014-06-20 13:00 | 82 | TuanNN |
| 131 | Progress Report 4 | 0.5d | 2014-06-30 10:00 | 2014-06-30 15:00 | 130 | TuanNN |
| 178 | Complete Coding | 0d | 2014-07-29 15:00 | 2014-07-29 15:00 | 177 | NamLD |
| 188 | Progress Report 5 | 0.5d | 2014-07-09 13:00 | 2014-07-09 17:00 | 186 | TuanNN |
| 195 | Execute System Test | 0.5d | 2014-07-22 08:00 | 2014-07-22 12:00 | 194 | MinhPT; TuanNN |
| 196 | Fix bug System Test | 0.5d | 2014-07-22 13:00 | 2014-07-22 17:00 | 195 | NamLD |
| 202 | Fix bug System Test | 0.5d | 2014-08-04 08:00 | 2014-08-04 12:00 | 201 | NamLD |
| 207 | Progress Report 6 | 0.5d | 2014-08-08 08:00 | 2014-08-08 12:00 | 206 | TuanNN |

Changed:

| ID | Task | Start | Finish | Duration | Predecessors | Other |
| --- | --- | --- | --- | --- | --- | --- |
| 10 | Review & update report no.1 : Draft vesion |  |  |  |  | resources NamLD → MinhPT; TuanNN |
| 11 | Submit report no.1 first version |  |  |  |  | resources NamLD → MinhPT; TuanNN |
| 12 | Revise after got comments for report no.1 |  |  |  |  | resources NamLD → MinhPT; TuanNN |
| 15 | Submit report no.1 final version |  |  |  |  | resources NamLD → MinhPT |
| 18 | Install and configuration PHP with Xampp |  |  |  |  | resources NamLD → NamLD; DatPT |
| 21 | Collect business requirements and processes |  |  |  |  | resources MinhPT; NamLD → MinhPT; TuanNN |
| 24 | Complete screen prototype |  |  |  |  | resources none → DatPT; TuanNN |
| 32 | Revise after got comments for report no.2 | 2014-05-28 08:00 → 2014-05-27 08:00 (-1d) | 2014-05-29 17:00 → 2014-05-27 17:00 (-2d) | 2d → 1d |  |  |
| 34 | Progress Report 2 | 2014-05-24 08:00 → 2014-05-29 08:00 (+5d) | 2014-05-24 17:00 → 2014-05-29 17:00 (+5d) | 1d? → 1d | none → 32 | was named Progress Report; resources none → TuanNN |
| 129 | Submit report no.4 First version | 2014-06-28 08:00 → 2014-06-29 08:00 (+1d) | 2014-06-28 08:00 → 2014-06-29 08:00 (+1d) |  |  |  |
| 130 | Review and update comments report #4 |  | 2014-06-30 12:00 → 2014-06-30 10:00 | 0.5d → 0.25d |  |  |
| 169 | Execute Unit Test |  | 2014-07-17 17:00 → 2014-07-16 17:00 (-1d) | 5d → 4d | 189 → 168 |  |
| 170 | **Part 2** | 2014-07-21 08:00 → 2014-07-18 08:00 (-3d) | 2014-07-28 17:00 → 2014-07-25 17:00 (-3d) |  |  |  |
| 171 | Change Password Module | 2014-07-21 08:00 → 2014-07-18 08:00 (-3d) | 2014-07-21 17:00 → 2014-07-18 17:00 (-3d) |  |  |  |
| 172 | Forgot Password Module | 2014-07-22 08:00 → 2014-07-21 08:00 (-1d) | 2014-07-22 17:00 → 2014-07-21 17:00 (-1d) |  |  |  |
| 173 | Reading Document Module | 2014-07-23 08:00 → 2014-07-22 08:00 (-1d) | 2014-07-24 17:00 → 2014-07-23 12:00 (-1d) | 2d → 1.5d | 167 → 172 |  |
| 174 | Training Listening Module | 2014-07-25 08:00 → 2014-07-23 13:00 (-2d) | 2014-07-25 17:00 → 2014-07-23 17:00 (-2d) | 1d → 0.5d |  |  |
| 175 | Listening Conversation Module |  |  |  | 194 → 196 |  |
| 176 | Doing Test Module |  | 2014-07-28 17:00 → 2014-07-25 12:00 (-3d) | 3d → 1.5d |  |  |
| 177 | Execute Unit Test | 2014-07-29 08:00 → 2014-07-25 13:00 (-4d) | 2014-07-31 17:00 → 2014-07-29 15:00 (-2d) | 3d → 2.25d | 194 → 176 |  |
| 179 | **Testing** |  | 2014-08-06 17:00 → 2014-08-04 17:00 (-2d) | 26d → 24d |  |  |
| 190 | **Execute test** | 2014-07-11 08:00 → 2014-07-17 08:00 (+6d) | 2014-08-06 17:00 → 2014-08-04 17:00 (-2d) | 19d → 13d |  |  |
| 191 | **Execute Test Part 1** | 2014-07-11 08:00 → 2014-07-17 08:00 (+6d) |  | 8d → 4d |  |  |
| 192 | Fix bug Unit Test | 2014-07-18 08:00 → 2014-07-17 08:00 (-1d) | 2014-07-18 17:00 → 2014-07-17 17:00 (-1d) |  |  |  |
| 193 | Execute Integration Test | 2014-07-21 08:00 → 2014-07-18 08:00 (-3d) | 2014-07-21 17:00 → 2014-07-18 17:00 (-3d) |  |  |  |
| 194 | Fix bug Integration Test | 2014-07-22 08:00 → 2014-07-21 08:00 (-1d) | 2014-07-22 17:00 → 2014-07-21 17:00 (-1d) |  |  |  |
| 197 | **Execute Test Part 2** | 2014-07-29 08:00 → 2014-07-30 08:00 (+1d) | 2014-08-05 17:00 → 2014-08-04 17:00 (-1d) | 6d → 4d |  |  |
| 198 | Fix bug Unit Test | 2014-08-01 08:00 → 2014-07-30 08:00 (-2d) | 2014-08-01 17:00 → 2014-07-30 17:00 (-2d) |  |  |  |
| 199 | Execute Integration Test | 2014-08-04 08:00 → 2014-07-31 08:00 (-4d) | 2014-08-04 17:00 → 2014-07-31 17:00 (-4d) |  |  |  |
| 200 | Fix bug Integration Test | 2014-08-05 08:00 → 2014-08-01 08:00 (-4d) | 2014-08-05 12:00 → 2014-08-01 12:00 (-4d) |  |  |  |
| 201 | Execute System Test | 2014-08-05 13:00 → 2014-08-01 13:00 (-4d) | 2014-08-05 17:00 → 2014-08-01 17:00 (-4d) |  |  |  |
| 203 | Complete Testing | 2014-08-06 08:00 → 2014-08-04 08:00 (-2d) | 2014-08-06 08:00 → 2014-08-04 08:00 (-2d) |  |  |  |
| 204 | Create report no.6 -Software User's Manual | 2014-08-06 08:00 → 2014-08-05 08:00 (-1d) | 2014-08-07 12:00 → 2014-08-06 12:00 (-1d) |  |  |  |

## Version 4 (saved 2014-08-12, file UJD_VN_Project_Schedule_v1.0.mpp)

Last finish 2014-08-27 → 2014-08-30 (+3d). Complete tasks 0 → 161.

Added:

| ID | Task | Duration | Start | Finish | Predecessors | Resources |
| --- | --- | --- | --- | --- | --- | --- |
| 29 | Q & A Management | 1d | 2014-05-22 13:00 A | 2014-05-23 12:00 | 27 | TuanNN |
| 63 | Kanji Management Module | 0.5d | 2014-06-17 08:00 A | 2014-06-17 12:00 A | 62 | TuanNN |
| 64 | Sentence Management Module | 0.5d | 2014-06-17 13:00 A | 2014-06-17 17:00 A | 63 | TuanNN |
| 84 | Q & A Management | 0.25d | 2014-06-10 08:00 A | 2014-06-10 10:00 | 83 | TuanNN |
| 96 | Q & A Management | 0.25d | 2014-06-11 08:00 A | 2014-06-11 10:00 | 93 | TuanNN |
| 117 | Kanji Management Module | 0.5d | 2014-06-20 08:00 A | 2014-06-20 12:00 A | 116 | NamLD |
| 118 | Sentence Management Module | 0.5d | 2014-06-20 13:00 A | 2014-06-20 17:00 A | 117 | NamLD |
| 136 | Q & A Management | 0.25d | 2014-06-27 08:00 A | 2014-06-27 10:00 | 135 | TuanNN |
| 191 | Q & A Management | 0.5d | 2014-07-11 13:00 A | 2014-07-11 17:00 | 190 | TuanNN |
| 208 | Q & A Management | 0.5d | 2014-07-31 08:00 A | 2014-07-31 12:00 A | 207 | TuanNN |
| 214 | Prepare Final Report and Source Code | 7d | 2014-08-12 08:00 A | 2014-08-20 17:00 A | 213 | DatPT; MinhPT; NamLD; TuanNN |

Removed: 155 Refine design documents; 169 Execute Unit Test; 177 Execute Unit Test; 192 Fix bug Unit Test; 198 Fix bug Unit Test; 213 Complete program and documents; 217 Project completed

Changed:

| ID | Task | Start | Finish | Duration | Complete | Other |
| --- | --- | --- | --- | --- | --- | --- |
| 1 | **UJD_VN** | 2014-05-12 08:00 A | 2014-08-27 17:00 → 2014-08-30 17:00 (+3d) | 78d → 81d | 0% → 97% | baseline start none → 2014-05-12 08:00; baseline finish none → 2014-08-22 17:00 |
| 2 | **Initiation** | 2014-05-12 08:00 A |  |  | 0% → 96% | baseline start none → 2014-05-12 08:00; baseline finish none → 2014-05-30 17:00 |
| 3 | Develop project Idea | 2014-05-12 08:00 A | 2014-05-12 17:00 A |  | 0% → 100% | resources Project Team → DatPT; MinhPT; NamLD; TuanNN; baseline start none → 2014-05-12 08:00; baseline finish none → 2014-05-12 17:00 |
| 4 | Prepare project | 2014-05-13 08:00 A | 2014-05-13 12:00 A |  | 0% → 100% | resources Project Team → DatPT; MinhPT; NamLD; TuanNN; baseline start none → 2014-05-13 08:00; baseline finish none → 2014-05-13 12:00 |
| 5 | Q & A Management | 2014-05-13 13:00 A |  |  | 0% → 30% | baseline start none → 2014-05-13 13:00; baseline finish none → 2014-05-13 17:00 |
| 6 | **Develop report no.1: Introduction** | 2014-05-13 08:00 A |  |  | 0% → 100% | baseline start none → 2014-05-13 08:00; baseline finish none → 2014-05-20 17:00 |
| 7 | System feasible study | 2014-05-13 08:00 A | 2014-05-13 17:00 A |  | 0% → 100% | resources Project Team → DatPT; MinhPT; NamLD; TuanNN; baseline start none → 2014-05-13 08:00; baseline finish none → 2014-05-13 17:00 |
| 8 | Define business situation | 2014-05-13 08:00 A | 2014-05-13 17:00 A |  | 0% → 100% | resources Project Team → DatPT; MinhPT; NamLD; TuanNN; baseline start none → 2014-05-13 08:00; baseline finish none → 2014-05-13 17:00 |
| 9 | Define project and system scope | 2014-05-14 08:00 A | 2014-05-14 17:00 A |  | 0% → 100% | resources Project Team → DatPT; MinhPT; NamLD; TuanNN; baseline start none → 2014-05-14 08:00; baseline finish none → 2014-05-14 17:00 |
| 10 | Review & update report no.1 : Draft vesion | 2014-05-15 08:00 A | 2014-05-15 12:00 A |  | 0% → 100% | baseline start none → 2014-05-15 08:00; baseline finish none → 2014-05-15 12:00 |
| 11 | Submit report no.1 first version | 2014-05-15 13:00 A | 2014-05-15 17:00 A |  | 0% → 100% | baseline start none → 2014-05-15 13:00; baseline finish none → 2014-05-15 17:00 |
| 12 | Revise after got comments for report no.1 | 2014-05-16 08:00 A | 2014-05-16 17:00 A |  | 0% → 100% | baseline start none → 2014-05-16 08:00; baseline finish none → 2014-05-16 17:00 |
| 13 | Kick-off meeting | 2014-05-19 08:00 A | 2014-05-19 08:00 A |  | 0% → 100% | baseline start none → 2014-05-19 08:00; baseline finish none → 2014-05-19 08:00 |
| 14 | Progress Report 1 | 2014-05-19 08:00 A | 2014-05-19 17:00 A |  | 0% → 100% | resources TuanNN → TuanNN; MinhPT; baseline start none → 2014-05-19 08:00; baseline finish none → 2014-05-19 17:00 |
| 15 | Submit report no.1 final version | 2014-05-20 08:00 A | 2014-05-20 08:00 A |  | 0% → 100% | baseline start none → 2014-05-20 08:00; baseline finish none → 2014-05-20 08:00 |
| 16 | **Technologies** | 2014-05-15 08:00 A |  |  | 0% → 100% | baseline start none → 2014-05-15 08:00; baseline finish none → 2014-05-27 17:00 |
| 17 | Research development technology | 2014-05-15 08:00 A | 2014-05-16 17:00 A |  | 0% → 100% | baseline start none → 2014-05-15 08:00; baseline finish none → 2014-05-16 17:00 |
| 18 | Install and configuration PHP with Xampp | 2014-05-19 08:00 A | 2014-05-19 12:00 A |  | 0% → 100% | baseline start none → 2014-05-19 08:00; baseline finish none → 2014-05-19 12:00 |
| 19 | Study Xampp and PHP, MYSQL | 2014-05-19 13:00 A | 2014-05-27 12:00 A |  | 0% → 100% | was named Study Xampp and MYSQL; baseline start none → 2014-05-19 13:00; baseline finish none → 2014-05-27 12:00 |
| 20 | **Requirements** | 2014-05-20 08:00 A |  |  | 0% → 100% | baseline start none → 2014-05-20 08:00; baseline finish none → 2014-05-30 17:00 |
| 21 | Collect business requirements and processes | 2014-05-20 08:00 A | 2014-05-20 17:00 A |  | 0% → 100% | baseline start none → 2014-05-20 08:00; baseline finish none → 2014-05-20 17:00 |
| 22 | Create draft screen prototypes | 2014-05-21 08:00 A | 2014-05-28 17:00 A |  | 0% → 100% | baseline start none → 2014-05-21 08:00; baseline finish none → 2014-05-28 17:00 |
| 23 | Review and edit screen prototypes | 2014-05-29 08:00 A | 2014-05-29 17:00 A |  | 0% → 100% | resources DatPT; TuanNN → DatPT; TuanNN; MinhPT; NamLD; baseline start none → 2014-05-29 08:00; baseline finish none → 2014-05-29 17:00 |
| 24 | Complete screen prototype | 2014-05-30 08:00 A | 2014-05-30 08:00 A |  | 0% → 100% | baseline start none → 2014-05-30 08:00; baseline finish none → 2014-05-30 08:00 |
| 25 | **Develop Project Plan** |  |  |  | 0% → 87% | baseline start none → 2014-05-20 08:00; baseline finish none → 2014-05-30 17:00 |
| 26 | Develop project definition | 2014-05-20 10:00 A | 2014-05-21 10:00 A |  | 0% → 100% | resources NamLD → NamLD; MinhPT; baseline start none → 2014-05-20 10:00; baseline finish none → 2014-05-21 10:00 |
| 27 | Work BreakDown Structure | 2014-05-22 08:00 A | 2014-05-22 12:00 A |  | 0% → 100% | resources NamLD → NamLD; MinhPT; baseline start none → 2014-05-22 08:00; baseline finish none → 2014-05-22 12:00 |
| 28 | Create project schedule | 2014-05-23 08:00 A | 2014-05-23 17:00 A |  | 0% → 100% | resources NamLD → NamLD; MinhPT; baseline start none → 2014-05-23 08:00; baseline finish none → 2014-05-23 17:00 |
| 30 | **Develop report no.2: Project management Plan** |  |  |  | 0% → 89% | baseline start none → 2014-05-24 08:00; baseline finish none → 2014-05-30 17:00 |
| 31 | Create Project plan first version | 2014-05-24 08:00 → 2014-05-26 08:00 A (+2d) | 2014-05-26 17:00 → 2014-05-27 17:00 (+1d) |  | 0% → 80% | resources NamLD → NamLD; MinhPT; baseline start none → 2014-05-24 08:00; baseline finish none → 2014-05-26 17:00 |
| 32 | Submit report no.2 first version | 2014-05-27 08:00 → 2014-05-28 08:00 A (+1d) | 2014-05-27 08:00 → 2014-05-28 08:00 A (+1d) |  | 0% → 100% | baseline start none → 2014-05-27 08:00; baseline finish none → 2014-05-27 08:00 |
| 33 | Revise after got comments for report no.2 | 2014-05-27 08:00 → 2014-05-28 08:00 A (+1d) | 2014-05-27 17:00 → 2014-05-28 12:00 A (+1d) | 1d → 0.5d | 0% → 100% | baseline start none → 2014-05-27 08:00; baseline finish none → 2014-05-27 17:00 |
| 34 | Complete Project Plan Final Version | 2014-05-28 08:00 → 2014-05-29 08:00 A (+1d) | 2014-05-28 08:00 → 2014-05-29 12:00 A (+1d) | 0d → 0.5d | 0% → 100% | baseline start none → 2014-05-28 08:00; baseline finish none → 2014-05-28 08:00 |
| 35 | Progress Report 2 | 2014-05-29 08:00 A | 2014-05-29 17:00 → 2014-05-29 12:00 A | 1d → 0.5d | 0% → 100% | resources TuanNN → TuanNN; MinhPT; baseline start none → 2014-05-29 08:00; baseline finish none → 2014-05-29 17:00 |
| 36 | Submit report no.2 final version | 2014-05-30 08:00 A | 2014-05-30 08:00 A |  | 0% → 100% | baseline start none → 2014-05-30 08:00; baseline finish none → 2014-05-30 08:00 |
| 37 | **Solution** | 2014-06-02 08:00 A | 2014-07-01 17:00 → 2014-07-03 17:00 (+2d) | 22d → 24d | 0% → 98% | baseline start none → 2014-06-02 08:00; baseline finish none → 2014-07-01 17:00 |
| 38 | **Project Management** | 2014-06-02 08:00 A |  |  | 0% → 100% | baseline start none → 2014-06-02 08:00; baseline finish none → 2014-06-04 17:00 |
| 39 | Refine project plan | 2014-06-02 08:00 A | 2014-06-03 17:00 A |  | 0% → 100% | resources NamLD → NamLD; MinhPT; baseline start none → 2014-06-02 08:00; baseline finish none → 2014-06-03 17:00 |
| 40 | **Technologies** | 2014-06-02 08:00 A |  |  | 0% → 97% | baseline start none → 2014-06-02 08:00; baseline finish none → 2014-06-10 17:00 |
| 41 | Design database models | 2014-06-02 08:00 A |  |  | 0% → 80% | baseline start none → 2014-06-02 08:00; baseline finish none → 2014-06-02 17:00 |
| 42 | Coding prototypes | 2014-06-03 08:00 A | 2014-06-10 17:00 A |  | 0% → 100% | resources DatPT; NamLD → DatPT; NamLD; TuanNN; baseline start none → 2014-06-03 08:00; baseline finish none → 2014-06-10 17:00 |
| 43 | **User Requirements Specification** | 2014-06-02 08:00 A |  |  | 0% → 92% | baseline start none → 2014-06-02 08:00; baseline finish none → 2014-06-06 17:00 |
| 44 | Create draft requirements | 2014-06-02 08:00 A |  |  | 0% → 90% | baseline start none → 2014-06-02 08:00; baseline finish none → 2014-06-03 17:00 |
| 45 | Complete draft requirements | 2014-06-04 08:00 A | 2014-06-04 08:00 A |  | 0% → 100% | baseline start none → 2014-06-04 08:00; baseline finish none → 2014-06-04 08:00 |
| 46 | Develop Use-case model | 2014-06-04 08:00 A |  |  | 0% → 80% | baseline start none → 2014-06-04 08:00; baseline finish none → 2014-06-04 17:00 |
| 47 | Develop main functions and processes | 2014-06-05 08:00 A | 2014-06-06 17:00 A |  | 0% → 100% | resources DatPT; NamLD → DatPT; NamLD; MinhPT; TuanNN; baseline start none → 2014-06-05 08:00; baseline finish none → 2014-06-06 17:00 |
| 48 | **Software Requirements Specification** | 2014-06-09 08:00 A |  |  | 0% → 99% | baseline start none → 2014-06-09 08:00; baseline finish none → 2014-06-20 17:00 |
| 49 | **Functional Requirement Specification** | 2014-06-09 08:00 A |  |  | 0% → 100% | baseline start none → 2014-06-09 08:00; baseline finish none → 2014-06-20 17:00 |
| 50 | **Part 1** | 2014-06-09 08:00 A | 2014-06-16 17:00 → 2014-06-17 17:00 A (+1d) | 6d → 7d | 0% → 100% | baseline start none → 2014-06-09 08:00; baseline finish none → 2014-06-16 17:00 |
| 51 | Homepage Module | 2014-06-09 08:00 A | 2014-06-09 17:00 A |  | 0% → 100% | baseline start none → 2014-06-09 08:00; baseline finish none → 2014-06-09 17:00 |
| 52 | **Admin Module** | 2014-06-10 08:00 A | 2014-06-16 17:00 → 2014-06-17 17:00 A (+1d) | 5d → 6d | 0% → 100% | baseline start none → 2014-06-10 08:00; baseline finish none → 2014-06-16 17:00 |
| 53 | Admin’s account management Module | 2014-06-10 08:00 A | 2014-06-10 12:00 A |  | 0% → 100% | baseline start none → 2014-06-10 08:00; baseline finish none → 2014-06-10 12:00 |
| 54 | Management Member’s account Module | 2014-06-10 13:00 A | 2014-06-10 17:00 A |  | 0% → 100% | baseline start none → 2014-06-10 13:00; baseline finish none → 2014-06-10 17:00 |
| 55 | Vocabulary Management Module | 2014-06-11 08:00 A | 2014-06-11 12:00 A |  | 0% → 100% | baseline start none → 2014-06-11 08:00; baseline finish none → 2014-06-11 12:00 |
| 56 | Grammar Management Module | 2014-06-11 13:00 A | 2014-06-11 17:00 A |  | 0% → 100% | baseline start none → 2014-06-11 13:00; baseline finish none → 2014-06-11 17:00 |
| 57 | Reading Document Management Module | 2014-06-12 08:00 A | 2014-06-12 12:00 A |  | 0% → 100% | baseline start none → 2014-06-12 08:00; baseline finish none → 2014-06-12 12:00 |
| 58 | Conversation management Module | 2014-06-12 13:00 A | 2014-06-12 17:00 A |  | 0% → 100% | baseline start none → 2014-06-12 13:00; baseline finish none → 2014-06-12 17:00 |
| 59 | Video Management Module | 2014-06-13 08:00 A | 2014-06-13 12:00 A |  | 0% → 100% | baseline start none → 2014-06-13 08:00; baseline finish none → 2014-06-13 12:00 |
| 60 | Training Listening Management Module | 2014-06-13 13:00 A | 2014-06-13 17:00 A |  | 0% → 100% | was named Listening Article Management Module; baseline start none → 2014-06-13 13:00; baseline finish none → 2014-06-13 17:00 |
| 61 | Test management Module | 2014-06-16 08:00 A | 2014-06-16 12:00 A |  | 0% → 100% | was named Doing test management Module; baseline start none → 2014-06-16 08:00; baseline finish none → 2014-06-16 12:00 |
| 62 | Contact's content management Module | 2014-06-16 13:00 A | 2014-06-16 17:00 A |  | 0% → 100% | baseline start none → 2014-06-16 13:00; baseline finish none → 2014-06-16 17:00 |
| 65 | **Search Module** | 2014-06-10 08:00 A |  |  | 0% → 100% | baseline start none → 2014-06-10 08:00; baseline finish none → 2014-06-12 17:00 |
| 66 | Search Sentences Module | 2014-06-10 08:00 A | 2014-06-10 12:00 A |  | 0% → 100% | baseline start none → 2014-06-10 08:00; baseline finish none → 2014-06-10 12:00 |
| 67 | Search Conversation Module | 2014-06-10 13:00 A | 2014-06-10 17:00 A |  | 0% → 100% | baseline start none → 2014-06-10 13:00; baseline finish none → 2014-06-10 17:00 |
| 68 | Search Video Module | 2014-06-11 08:00 A | 2014-06-11 12:00 A |  | 0% → 100% | baseline start none → 2014-06-11 08:00; baseline finish none → 2014-06-11 12:00 |
| 69 | Search Grammar Module | 2014-06-11 13:00 A | 2014-06-11 17:00 A |  | 0% → 100% | baseline start none → 2014-06-11 13:00; baseline finish none → 2014-06-11 17:00 |
| 70 | Search Specialized Japanese Module | 2014-06-12 08:00 A | 2014-06-12 12:00 A |  | 0% → 100% | baseline start none → 2014-06-12 08:00; baseline finish none → 2014-06-12 12:00 |
| 71 | Login/Logout Module | 2014-06-12 13:00 A | 2014-06-12 17:00 A |  | 0% → 100% | baseline start none → 2014-06-12 13:00; baseline finish none → 2014-06-12 17:00 |
| 72 | Register Account Module | 2014-06-13 08:00 A | 2014-06-13 12:00 A |  | 0% → 100% | baseline start none → 2014-06-13 08:00; baseline finish none → 2014-06-13 12:00 |
| 73 | Edit Profile Module | 2014-06-13 13:00 A | 2014-06-13 17:00 A |  | 0% → 100% | baseline start none → 2014-06-13 13:00; baseline finish none → 2014-06-13 17:00 |

| ID | Task | Start | Finish | Duration | Complete | Total float | Other |
| --- | --- | --- | --- | --- | --- | --- | --- |
| 74 | Forgot Password Module | 2014-06-16 08:00 A | 2014-06-16 12:00 A |  | 0% → 100% |  | baseline start none → 2014-06-16 08:00; baseline finish none → 2014-06-16 12:00 |
| 75 | **Part 2** |  |  |  | 0% → 100% |  | baseline start none → 2014-06-16 08:00; baseline finish none → 2014-06-20 17:00 |
| 76 | Contact Admin Module | 2014-06-17 08:00 A | 2014-06-18 12:00 A |  | 0% → 100% |  | baseline start none → 2014-06-17 08:00; baseline finish none → 2014-06-18 12:00 |
| 77 | Doing Test Module | 2014-06-18 13:00 A | 2014-06-18 17:00 A |  | 0% → 100% |  | baseline start none → 2014-06-18 13:00; baseline finish none → 2014-06-18 17:00 |
| 78 | Reading Document Module | 2014-06-19 08:00 A | 2014-06-19 12:00 A |  | 0% → 100% |  | baseline start none → 2014-06-19 08:00; baseline finish none → 2014-06-19 12:00 |
| 79 | Training Listening Module | 2014-06-19 13:00 A | 2014-06-19 17:00 A |  | 0% → 100% |  | baseline start none → 2014-06-19 13:00; baseline finish none → 2014-06-19 17:00 |
| 80 | Conversation Module | 2014-06-20 08:00 A | 2014-06-20 10:00 A |  | 0% → 100% |  | was named Listening Conversation Module; baseline start none → 2014-06-20 08:00; baseline finish none → 2014-06-20 10:00 |
| 81 | **Non-functional Requirements Specification** | 2014-06-09 08:00 A | 2014-06-09 17:00 A |  | 0% → 100% |  | baseline start none → 2014-06-09 08:00; baseline finish none → 2014-06-09 17:00 |
| 82 | Develop User Interface requirements | 2014-06-09 08:00 A | 2014-06-09 17:00 A |  | 0% → 100% |  | baseline start none → 2014-06-09 08:00; baseline finish none → 2014-06-09 17:00 |
| 83 | Develop Performance requirements | 2014-06-09 08:00 A | 2014-06-09 17:00 A |  | 0% → 100% |  | baseline start none → 2014-06-09 08:00; baseline finish none → 2014-06-09 17:00 |
| 85 | Submit report no.3 First version | 2014-06-20 10:00 A |  |  | 0% → 90% |  | baseline start none → 2014-06-20 10:00; baseline finish none → 2014-06-20 10:00 |
| 86 | Revise after got comments of Report no.3 | 2014-06-20 10:00 A | 2014-06-20 12:00 A |  | 0% → 100% |  | baseline start none → 2014-06-20 10:00; baseline finish none → 2014-06-20 12:00 |
| 87 | Complete SRS Version 1.0 | 2014-06-20 13:00 A | 2014-06-20 13:00 A |  | 0% → 100% |  | was named Complete SRS Final Version; baseline start none → 2014-06-20 13:00; baseline finish none → 2014-06-20 13:00 |
| 88 | Progress Report 3 | 2014-06-20 13:00 A | 2014-06-20 15:00 A |  | 0% → 100% |  | baseline start none → 2014-06-20 13:00; baseline finish none → 2014-06-20 15:00 |
| 89 | Submit report no.3 final version | 2014-06-20 15:00 A | 2014-06-20 15:00 A |  | 0% → 100% |  | baseline start none → 2014-06-20 15:00; baseline finish none → 2014-06-20 15:00 |
| 90 | **Design** | 2014-06-09 08:00 A |  |  | 0% → 99% |  | baseline start none → 2014-06-09 08:00; baseline finish none → 2014-07-01 17:00 |
| 91 | **System Architectural Design** | 2014-06-09 08:00 A |  |  | 0% → 98% |  | baseline start none → 2014-06-09 08:00; baseline finish none → 2014-06-12 17:00 |
| 92 | Define the system structure and collect system features | 2014-06-09 08:00 A | 2014-06-09 17:00 A |  | 0% → 100% |  | baseline start none → 2014-06-09 08:00; baseline finish none → 2014-06-09 17:00 |
| 93 | Study the common System Architeture | 2014-06-10 08:00 A | 2014-06-10 17:00 A |  | 0% → 100% |  | baseline start none → 2014-06-10 08:00; baseline finish none → 2014-06-10 17:00 |
| 94 | Choice of System Architeture | 2014-06-11 08:00 A | 2014-06-11 17:00 A |  | 0% → 100% |  | resources NamLD → NamLD; DatPT; baseline start none → 2014-06-11 08:00; baseline finish none → 2014-06-11 17:00 |
| 95 | Discussion of Alternative Design | 2014-06-12 08:00 A | 2014-06-12 17:00 A |  | 0% → 100% |  | resources NamLD → NamLD; DatPT; baseline start none → 2014-06-12 08:00; baseline finish none → 2014-06-12 17:00 |
| 97 | **Detailed Design** | 2014-06-10 08:00 A |  |  | 0% → 100% |  | baseline start none → 2014-06-10 08:00; baseline finish none → 2014-07-01 17:00 |
| 98 | **Component Diagram** | 2014-06-10 08:00 A | 2014-06-11 17:00 A |  | 0% → 100% |  | baseline start none → 2014-06-10 08:00; baseline finish none → 2014-06-11 17:00 |
| 99 | Define the component | 2014-06-10 08:00 A | 2014-06-10 12:00 A |  | 0% → 100% |  | baseline start none → 2014-06-10 08:00; baseline finish none → 2014-06-10 12:00 |
| 100 | General component diagram | 2014-06-10 13:00 A | 2014-06-10 17:00 A |  | 0% → 100% |  | baseline start none → 2014-06-10 13:00; baseline finish none → 2014-06-10 17:00 |
| 101 | Detail component diagram | 2014-06-11 08:00 A | 2014-06-11 12:00 A |  | 0% → 100% |  | resources DatPT → DatPT; NamLD; baseline start none → 2014-06-11 08:00; baseline finish none → 2014-06-11 12:00 |
| 102 | Detail Database Design | 2014-06-11 13:00 A | 2014-06-11 17:00 A |  | 0% → 100% |  | resources DatPT → DatPT; NamLD; baseline start none → 2014-06-11 13:00; baseline finish none → 2014-06-11 17:00 |
| 103 | **User Interface Design** | 2014-06-12 08:00 A | 2014-06-26 17:00 A |  | 0% → 100% | 0d → none | baseline start none → 2014-06-12 08:00; baseline finish none → 2014-06-26 17:00 |
| 104 | **Part 1** | 2014-06-12 08:00 A | 2014-06-19 17:00 → 2014-06-20 17:00 A (+1d) | 6d → 7d | 0% → 100% |  | baseline start none → 2014-06-12 08:00; baseline finish none → 2014-06-19 17:00 |
| 105 | Homepage Module | 2014-06-12 08:00 A | 2014-06-12 17:00 A |  | 0% → 100% |  | baseline start none → 2014-06-12 08:00; baseline finish none → 2014-06-12 17:00 |
| 106 | **Admin Module** | 2014-06-13 08:00 A | 2014-06-19 17:00 → 2014-06-20 17:00 A (+1d) | 5d → 6d | 0% → 100% |  | baseline start none → 2014-06-13 08:00; baseline finish none → 2014-06-19 17:00 |
| 107 | Admin’s account management Module | 2014-06-13 08:00 A | 2014-06-13 12:00 A |  | 0% → 100% |  | baseline start none → 2014-06-13 08:00; baseline finish none → 2014-06-13 12:00 |
| 108 | Management Member’s account Module | 2014-06-13 13:00 A | 2014-06-13 17:00 A |  | 0% → 100% |  | baseline start none → 2014-06-13 13:00; baseline finish none → 2014-06-13 17:00 |
| 109 | Vocabulary Management Module | 2014-06-16 08:00 A | 2014-06-16 12:00 A |  | 0% → 100% |  | baseline start none → 2014-06-16 08:00; baseline finish none → 2014-06-16 12:00 |
| 110 | Grammar Management Module | 2014-06-16 13:00 A | 2014-06-16 17:00 A |  | 0% → 100% |  | baseline start none → 2014-06-16 13:00; baseline finish none → 2014-06-16 17:00 |
| 111 | Reading Document Management Module | 2014-06-17 08:00 A | 2014-06-17 12:00 A |  | 0% → 100% |  | baseline start none → 2014-06-17 08:00; baseline finish none → 2014-06-17 12:00 |
| 112 | Conversation management Module | 2014-06-17 13:00 A | 2014-06-17 17:00 A |  | 0% → 100% |  | baseline start none → 2014-06-17 13:00; baseline finish none → 2014-06-17 17:00 |
| 113 | Video Management Module | 2014-06-18 08:00 A | 2014-06-18 12:00 A |  | 0% → 100% |  | baseline start none → 2014-06-18 08:00; baseline finish none → 2014-06-18 12:00 |
| 114 | Listening Article Management Module | 2014-06-18 13:00 A | 2014-06-18 17:00 A |  | 0% → 100% |  | baseline start none → 2014-06-18 13:00; baseline finish none → 2014-06-18 17:00 |
| 115 | Doing test management Module | 2014-06-19 08:00 A | 2014-06-19 12:00 A |  | 0% → 100% |  | baseline start none → 2014-06-19 08:00; baseline finish none → 2014-06-19 12:00 |
| 116 | Contact's content management Module | 2014-06-19 13:00 A | 2014-06-19 17:00 A |  | 0% → 100% |  | baseline start none → 2014-06-19 13:00; baseline finish none → 2014-06-19 17:00 |
| 119 | **Search Module** | 2014-06-13 08:00 A |  |  | 0% → 100% |  | baseline start none → 2014-06-13 08:00; baseline finish none → 2014-06-19 17:00 |
| 120 | Search Sentences Module | 2014-06-13 08:00 A | 2014-06-13 12:00 A |  | 0% → 100% |  | baseline start none → 2014-06-13 08:00; baseline finish none → 2014-06-13 12:00 |
| 121 | Search Conversation Module | 2014-06-13 13:00 A | 2014-06-13 17:00 A |  | 0% → 100% |  | baseline start none → 2014-06-13 13:00; baseline finish none → 2014-06-13 17:00 |
| 122 | Search Video Module | 2014-06-16 08:00 A | 2014-06-16 12:00 A |  | 0% → 100% |  | baseline start none → 2014-06-16 08:00; baseline finish none → 2014-06-16 12:00 |
| 123 | Search Grammar Module | 2014-06-16 13:00 A | 2014-06-16 17:00 A |  | 0% → 100% |  | baseline start none → 2014-06-16 13:00; baseline finish none → 2014-06-16 17:00 |
| 124 | Search Specialized Japanese Module | 2014-06-17 08:00 A | 2014-06-17 12:00 A |  | 0% → 100% |  | baseline start none → 2014-06-17 08:00; baseline finish none → 2014-06-17 12:00 |
| 125 | Login/Logout Module | 2014-06-17 13:00 A | 2014-06-17 17:00 A |  | 0% → 100% |  | baseline start none → 2014-06-17 13:00; baseline finish none → 2014-06-17 17:00 |
| 126 | Register Account Module | 2014-06-18 08:00 A | 2014-06-18 12:00 A |  | 0% → 100% |  | baseline start none → 2014-06-18 08:00; baseline finish none → 2014-06-18 12:00 |
| 127 | Edit Profile Module | 2014-06-18 13:00 A | 2014-06-18 17:00 A |  | 0% → 100% |  | baseline start none → 2014-06-18 13:00; baseline finish none → 2014-06-18 17:00 |
| 128 | Forgot Password Module | 2014-06-19 08:00 A | 2014-06-19 12:00 A |  | 0% → 100% |  | baseline start none → 2014-06-19 08:00; baseline finish none → 2014-06-19 12:00 |
| 129 | **Part 2** |  | 2014-06-26 17:00 A |  | 0% → 100% |  | baseline start none → 2014-06-19 08:00; baseline finish none → 2014-06-26 17:00 |
| 130 | Change Password Module | 2014-06-19 13:00 A | 2014-06-19 17:00 A |  | 0% → 100% |  | baseline start none → 2014-06-19 13:00; baseline finish none → 2014-06-19 17:00 |
| 131 | Forgot Password Module | 2014-06-20 08:00 A | 2014-06-20 12:00 A |  | 0% → 100% |  | baseline start none → 2014-06-20 08:00; baseline finish none → 2014-06-20 12:00 |
| 132 | Reading Document Module | 2014-06-20 13:00 A | 2014-06-23 12:00 A |  | 0% → 100% |  | baseline start none → 2014-06-20 13:00; baseline finish none → 2014-06-23 12:00 |
| 133 | Training Listening Module | 2014-06-23 13:00 A | 2014-06-23 17:00 A |  | 0% → 100% |  | baseline start none → 2014-06-23 13:00; baseline finish none → 2014-06-23 17:00 |
| 134 | Listening Conversation Module | 2014-06-24 08:00 A | 2014-06-24 17:00 A |  | 0% → 100% |  | baseline start none → 2014-06-24 08:00; baseline finish none → 2014-06-24 17:00 |
| 135 | Doing Test Module | 2014-06-25 08:00 A | 2014-06-26 17:00 A |  | 0% → 100% |  | baseline start none → 2014-06-25 08:00; baseline finish none → 2014-06-26 17:00 |
| 137 | Submit report no.4 First version | 2014-06-29 08:00 → 2014-06-27 08:00 A (-2d) | 2014-06-29 08:00 → 2014-06-27 08:00 A (-2d) |  | 0% → 100% |  | baseline start none → 2014-06-29 08:00; baseline finish none → 2014-06-29 08:00 |
| 138 | Review and update comments report #4 | 2014-06-30 08:00 A | 2014-06-30 10:00 A |  | 0% → 100% |  | baseline start none → 2014-06-30 08:00; baseline finish none → 2014-06-30 10:00 |
| 139 | Progress Report 4 | 2014-06-30 10:00 A | 2014-06-30 15:00 A |  | 0% → 100% |  | baseline start none → 2014-06-30 10:00; baseline finish none → 2014-06-30 15:00 |
| 140 | Submit report no.4 final version | 2014-06-30 13:00 A | 2014-06-30 13:00 A |  | 0% → 100% |  | baseline start none → 2014-06-30 13:00; baseline finish none → 2014-06-30 13:00 |
| 141 | **Coding and Unit Test** | 2014-06-20 08:00 → 2014-06-23 08:00 A (+3d) | 2014-07-01 17:00 → 2014-07-03 17:00 (+2d) | 8d → 9d | 0% → 100% |  | was named Coding; baseline start none → 2014-06-20 08:00; baseline finish none → 2014-07-01 17:00 |
| 142 | **Part 1** | 2014-06-20 08:00 → 2014-06-23 08:00 A (+3d) | 2014-07-01 17:00 → 2014-07-03 17:00 (+2d) | 8d → 9d | 0% → 100% | 0d → none | baseline start none → 2014-06-20 08:00; baseline finish none → 2014-07-01 17:00 |
| 143 | Admin’s account management Module | 2014-06-20 08:00 → 2014-06-23 08:00 A (+3d) | 2014-06-20 17:00 → 2014-06-23 17:00 A (+3d) |  | 0% → 100% |  | baseline start none → 2014-06-20 08:00; baseline finish none → 2014-06-20 17:00 |
| 144 | Management Member’s account Module | 2014-06-23 08:00 → 2014-06-24 08:00 A (+1d) | 2014-06-23 17:00 → 2014-06-24 17:00 A (+1d) |  | 0% → 100% |  | baseline start none → 2014-06-23 08:00; baseline finish none → 2014-06-23 17:00 |
| 145 | Vocabulary Management Module | 2014-06-24 08:00 → 2014-06-25 08:00 A (+1d) | 2014-06-24 12:00 → 2014-06-26 12:00 A (+2d) | 0.5d → 1.5d | 0% → 100% |  | baseline start none → 2014-06-24 08:00; baseline finish none → 2014-06-24 12:00 |
| 146 | Grammar Management Module | 2014-06-24 13:00 → 2014-06-26 08:00 A (+2d) | 2014-06-24 17:00 → 2014-06-26 12:00 A (+2d) |  | 0% → 100% |  | baseline start none → 2014-06-24 13:00; baseline finish none → 2014-06-24 17:00 |
| 147 | Reading Document Management Module | 2014-06-25 08:00 → 2014-06-27 08:00 A (+2d) | 2014-06-25 17:00 → 2014-06-27 17:00 A (+2d) |  | 0% → 100% |  | baseline start none → 2014-06-25 08:00; baseline finish none → 2014-06-25 17:00 |
| 148 | Conversation management Module | 2014-06-26 08:00 → 2014-06-30 08:00 A (+4d) | 2014-06-26 17:00 → 2014-06-30 17:00 A (+4d) |  | 0% → 100% |  | baseline start none → 2014-06-26 08:00; baseline finish none → 2014-06-26 17:00 |

| ID | Task | Start | Finish | Duration | Complete | Predecessors | Other |
| --- | --- | --- | --- | --- | --- | --- | --- |
| 149 | Video Management Module | 2014-06-27 08:00 → 2014-07-01 08:00 A (+4d) | 2014-06-27 12:00 → 2014-07-01 12:00 A (+4d) |  | 0% → 100% |  | baseline start none → 2014-06-27 08:00; baseline finish none → 2014-06-27 12:00 |
| 150 | Listening Article Management Module | 2014-06-27 13:00 → 2014-07-02 08:00 A (+5d) | 2014-06-27 17:00 → 2014-07-02 12:00 A (+5d) |  | 0% → 100% |  | baseline start none → 2014-06-27 13:00; baseline finish none → 2014-06-27 17:00 |
| 151 | Doing test management Module | 2014-06-30 08:00 → 2014-07-03 08:00 A (+3d) | 2014-06-30 17:00 → 2014-07-03 12:00 A (+3d) | 1d → 0.5d | 0% → 100% |  | baseline start none → 2014-06-30 08:00; baseline finish none → 2014-06-30 17:00 |
| 152 | Contact's content management Module | 2014-07-01 08:00 → 2014-07-03 08:00 A (+2d) | 2014-07-01 17:00 → 2014-07-03 12:00 A (+2d) | 1d → 0.5d | 0% → 100% |  | baseline start none → 2014-07-01 08:00; baseline finish none → 2014-07-01 17:00 |
| 153 | **Testing** |  |  |  | 0% → 91% |  | baseline start none → 2014-06-16 08:00; baseline finish none → 2014-07-01 17:00 |
| 154 | **Create Test Document (Report 5)** | 2014-06-16 13:00 A |  |  | 0% → 82% |  | baseline start none → 2014-06-16 13:00; baseline finish none → 2014-06-23 13:00 |
| 155 | Create test plan | 2014-06-16 13:00 A |  |  | 0% → 80% |  | baseline start none → 2014-06-16 13:00; baseline finish none → 2014-06-20 17:00 |
| 156 | Review and update Test Plan | 2014-06-23 08:00 A | 2014-06-23 12:00 A |  | 0% → 100% |  | baseline start none → 2014-06-23 08:00; baseline finish none → 2014-06-23 12:00 |
| 157 | Submit Final Test Plan | 2014-06-23 13:00 A | 2014-06-23 13:00 A |  | 0% → 100% |  | baseline start none → 2014-06-23 13:00; baseline finish none → 2014-06-23 13:00 |
| 158 | **Create Test Case** |  | 2014-06-28 17:00 A |  | 0% → 100% |  | baseline start none → 2014-06-23 08:00; baseline finish none → 2014-06-28 17:00 |
| 159 | Create Unit Test Case | 2014-06-23 13:00 A | 2014-06-28 17:00 A |  | 0% → 100% |  | baseline start none → 2014-06-23 13:00; baseline finish none → 2014-06-28 17:00 |
| 160 | **Construction** | 2014-07-02 08:00 → 2014-07-04 08:00 A (+2d) | 2014-08-08 17:00 → 2014-08-21 17:00 (+13d) | 28d → 35d | 0% → 99% |  | baseline start none → 2014-07-02 08:00; baseline finish none → 2014-08-11 17:00 |
| 161 | **Requirements & Design** | 2014-07-02 08:00 → 2014-07-04 08:00 A (+2d) | 2014-07-03 17:00 → 2014-07-08 17:00 (+5d) | 2d → 3d | 0% → 100% |  | baseline start none → 2014-07-02 08:00; baseline finish none → 2014-07-03 17:00 |
| 162 | Refine requirement & design documents | 2014-07-02 08:00 → 2014-07-04 08:00 A (+2d) | 2014-07-02 17:00 → 2014-07-04 10:00 A (+2d) | 1d → 0.25d | 0% → 100% |  | was named Refine requirement documents; resources MinhPT → MinhPT; TuanNN; NamLD; baseline start none → 2014-07-02 08:00; baseline finish none → 2014-07-02 17:00 |
| 163 | **Coding & Unit Test** | 2014-07-03 08:00 → 2014-07-04 08:00 A (+1d) | 2014-07-29 17:00 → 2014-07-24 17:00 A (-5d) | 19d → 15d | 0% → 100% |  | baseline start none → 2014-07-03 08:00; baseline finish none → 2014-07-22 17:00 |
| 164 | **Part 1 (Continue)** | 2014-07-03 13:00 → 2014-07-04 08:00 A (+1d) | 2014-07-14 17:00 → 2014-07-16 17:00 (+2d) | 7.5d → 9d | 0% → 100% |  | baseline start none → 2014-07-03 13:00; baseline finish none → 2014-07-14 17:00 |
| 165 | Homepage Module | 2014-07-03 13:00 → 2014-07-04 08:00 A (+1d) | 2014-07-04 17:00 → 2014-07-07 17:00 A (+3d) | 1.5d → 2d | 0% → 100% | Refine design documents → none | resources NamLD → NamLD; DatPT; baseline start none → 2014-07-03 13:00; baseline finish none → 2014-07-04 17:00 |
| 166 | **Search Module** | 2014-07-05 08:00 → 2014-07-08 08:00 A (+3d) | 2014-07-14 17:00 → 2014-07-16 17:00 (+2d) |  | 0% → 100% |  | baseline start none → 2014-07-05 08:00; baseline finish none → 2014-07-14 17:00 |
| 167 | Search Sentences Module | 2014-07-05 08:00 → 2014-07-08 08:00 A (+3d) | 2014-07-07 17:00 → 2014-07-09 17:00 A (+2d) |  | 0% → 100% |  | baseline start none → 2014-07-05 08:00; baseline finish none → 2014-07-07 17:00 |
| 168 | Search Conversation Module | 2014-07-08 08:00 → 2014-07-10 08:00 A (+2d) | 2014-07-08 17:00 → 2014-07-10 17:00 A (+2d) |  | 0% → 100% |  | baseline start none → 2014-07-08 08:00; baseline finish none → 2014-07-08 17:00 |
| 169 | Search Video Module | 2014-07-10 08:00 → 2014-07-11 08:00 A (+1d) | 2014-07-10 17:00 → 2014-07-11 17:00 A (+1d) |  | 0% → 100% |  | baseline start none → 2014-07-10 08:00; baseline finish none → 2014-07-10 17:00 |
| 170 | Search Grammar Module | 2014-07-11 08:00 → 2014-07-14 08:00 A (+3d) | 2014-07-11 17:00 → 2014-07-14 17:00 A (+3d) |  | 0% → 100% |  | baseline start none → 2014-07-11 08:00; baseline finish none → 2014-07-11 17:00 |
| 171 | Search Specialized Japanese Module | 2014-07-14 08:00 → 2014-07-15 08:00 A (+1d) | 2014-07-14 17:00 → 2014-07-15 17:00 A (+1d) |  | 0% → 100% |  | resources DatPT → DatPT; NamLD; baseline start none → 2014-07-14 08:00; baseline finish none → 2014-07-14 17:00 |
| 172 | Login/Logout Module | 2014-07-07 08:00 → 2014-07-08 08:00 A (+1d) | 2014-07-07 17:00 → 2014-07-08 17:00 A (+1d) |  | 0% → 100% |  | baseline start none → 2014-07-07 08:00; baseline finish none → 2014-07-07 17:00 |
| 173 | Register Account Module | 2014-07-08 08:00 → 2014-07-09 08:00 A (+1d) | 2014-07-08 17:00 → 2014-07-09 17:00 A (+1d) |  | 0% → 100% |  | baseline start none → 2014-07-08 08:00; baseline finish none → 2014-07-08 17:00 |
| 174 | Edit Profile Module | 2014-07-09 08:00 → 2014-07-10 08:00 A (+1d) | 2014-07-09 17:00 → 2014-07-10 17:00 A (+1d) |  | 0% → 100% |  | baseline start none → 2014-07-09 08:00; baseline finish none → 2014-07-09 17:00 |
| 175 | Forgot Password Module | 2014-07-10 08:00 → 2014-07-11 08:00 A (+1d) | 2014-07-10 17:00 → 2014-07-11 17:00 A (+1d) |  | 0% → 100% |  | baseline start none → 2014-07-10 08:00; baseline finish none → 2014-07-10 17:00 |
| 176 | **Part 2** | 2014-07-18 08:00 → 2014-07-15 08:00 (-3d) | 2014-07-25 17:00 → 2014-07-24 17:00 A (-1d) | 6d → 8d | 0% → 100% |  | baseline start none → 2014-07-15 08:00; baseline finish none → 2014-07-22 17:00 |
| 177 | Change Password Module | 2014-07-18 08:00 → 2014-07-16 08:00 A (-2d) | 2014-07-18 17:00 → 2014-07-16 17:00 A (-2d) |  | 0% → 100% |  | baseline start none → 2014-07-15 08:00; baseline finish none → 2014-07-15 17:00 |
| 178 | Forgot Password Module | 2014-07-21 08:00 → 2014-07-17 08:00 A (-4d) | 2014-07-21 17:00 → 2014-07-17 17:00 A (-4d) |  | 0% → 100% |  | baseline start none → 2014-07-16 08:00; baseline finish none → 2014-07-16 17:00 |
| 179 | Training Reading Document Module | 2014-07-22 08:00 → 2014-07-18 08:00 A (-4d) | 2014-07-23 12:00 → 2014-07-21 12:00 A (-2d) |  | 0% → 100% |  | was named Reading Document Module; baseline start none → 2014-07-17 08:00; baseline finish none → 2014-07-18 12:00 |
| 180 | Training Listening Module | 2014-07-23 13:00 → 2014-07-22 08:00 A (-1d) | 2014-07-23 17:00 → 2014-07-22 12:00 A (-1d) |  | 0% → 100% |  | baseline start none → 2014-07-18 13:00; baseline finish none → 2014-07-18 17:00 |
| 181 | Listening Conversation Module | 2014-07-23 08:00 → 2014-07-22 08:00 A (-1d) | 2014-07-23 17:00 → 2014-07-22 17:00 A (-1d) |  | 0% → 100% |  | resources NamLD → NamLD; DatPT; baseline start none → 2014-07-18 08:00; baseline finish none → 2014-07-18 17:00 |
| 182 | Doing Test Module | 2014-07-24 08:00 A | 2014-07-25 12:00 → 2014-07-24 17:00 A (-1d) | 1.5d → 1d | 0% → 100% |  | resources NamLD → NamLD; DatPT; baseline start none → 2014-07-21 08:00; baseline finish none → 2014-07-22 12:00 |
| 183 | Complete Coding | 2014-07-29 15:00 → 2014-07-24 08:00 A (-5d) | 2014-07-29 15:00 → 2014-07-24 08:00 A (-5d) |  | 0% → 100% | Execute Unit Test → 182 | baseline start none → 2014-07-22 13:00; baseline finish none → 2014-07-22 13:00 |
| 184 | **Testing** | 2014-07-02 08:00 → 2014-07-07 08:00 A (+5d) | 2014-08-04 17:00 → 2014-08-01 17:00 (-3d) | 24d → 20d | 0% → 99% |  | baseline start none → 2014-07-02 08:00; baseline finish none → 2014-07-29 17:00 |
| 185 | **Create test documents (Continue)** | 2014-07-02 08:00 → 2014-07-07 08:00 A (+5d) | 2014-07-10 17:00 → 2014-07-16 17:00 (+6d) | 7d → 8d | 0% → 99% |  | baseline start none → 2014-07-02 08:00; baseline finish none → 2014-07-10 17:00 |
| 186 | **Create test cases** | 2014-07-02 08:00 → 2014-07-07 08:00 A (+5d) | 2014-07-07 17:00 → 2014-07-09 17:00 (+2d) | 4d → 3d | 0% → 100% |  | baseline start none → 2014-07-02 08:00; baseline finish none → 2014-07-07 17:00 |
| 187 | Create Integration Test Case | 2014-07-03 08:00 → 2014-07-07 08:00 A (+4d) | 2014-07-04 17:00 → 2014-07-08 12:00 A (+4d) | 2d → 1.5d | 0% → 100% |  | baseline start none → 2014-07-03 08:00; baseline finish none → 2014-07-04 17:00 |
| 188 | Create System Test Case | 2014-07-07 08:00 → 2014-07-09 08:00 A (+2d) | 2014-07-07 17:00 → 2014-07-09 12:00 A (+2d) | 1d → 0.5d | 0% → 100% |  | baseline start none → 2014-07-07 08:00; baseline finish none → 2014-07-07 17:00 |
| 189 | Create test checklist | 2014-07-08 08:00 → 2014-07-10 08:00 A (+2d) | 2014-07-08 17:00 → 2014-07-10 17:00 A (+2d) |  | 0% → 100% |  | resources TuanNN → TuanNN; MinhPT; baseline start none → 2014-07-08 08:00; baseline finish none → 2014-07-08 17:00 |
| 190 | Review test documents | 2014-07-09 08:00 → 2014-07-11 08:00 A (+2d) | 2014-07-09 12:00 → 2014-07-11 12:00 A (+2d) |  | 0% → 100% |  | baseline start none → 2014-07-09 08:00; baseline finish none → 2014-07-09 12:00 |
| 192 | Submit report no.5 First version | 2014-07-09 13:00 → 2014-07-14 08:00 A (+5d) | 2014-07-09 13:00 → 2014-07-14 08:00 A (+5d) |  | 0% → 100% |  | baseline start none → 2014-07-09 13:00; baseline finish none → 2014-07-09 13:00 |
| 193 | Review report no.5 | 2014-07-09 13:00 → 2014-07-15 08:00 A (+6d) | 2014-07-09 17:00 → 2014-07-15 12:00 A (+6d) |  | 0% → 100% |  | baseline start none → 2014-07-09 13:00; baseline finish none → 2014-07-09 17:00 |
| 194 | Progress Report 5 | 2014-07-09 13:00 → 2014-07-15 08:00 A (+6d) | 2014-07-09 17:00 → 2014-07-15 12:00 A (+6d) |  | 0% → 100% |  | baseline start none → 2014-07-09 13:00; baseline finish none → 2014-07-09 17:00 |
| 195 | Submit report no.5 final version | 2014-07-10 08:00 → 2014-07-16 08:00 A (+6d) | 2014-07-10 08:00 → 2014-07-16 08:00 A (+6d) |  | 0% → 100% |  | baseline start none → 2014-07-10 08:00; baseline finish none → 2014-07-10 08:00 |
| 196 | **Execute test** | 2014-07-17 08:00 A | 2014-08-04 17:00 → 2014-07-31 17:00 (-4d) | 13d → 11d | 0% → 100% |  | baseline start none → 2014-07-15 08:00; baseline finish none → 2014-07-29 17:00 |
| 197 | **Execute Test Part 1** | 2014-07-17 08:00 A | 2014-07-22 17:00 → 2014-07-24 17:00 A (+2d) | 4d → 6d | 0% → 100% |  | baseline start none → 2014-07-15 08:00; baseline finish none → 2014-07-17 17:00 |
| 198 | Execute Integration Test | 2014-07-18 08:00 → 2014-07-17 08:00 A (-1d) | 2014-07-18 17:00 → 2014-07-21 17:00 A (+3d) | 1d → 3d | 0% → 100% | Fix bug Unit Test → 164 | baseline start none → 2014-07-15 08:00; baseline finish none → 2014-07-15 17:00 |
| 199 | Fix bug Integration Test | 2014-07-21 08:00 → 2014-07-22 08:00 A (+1d) | 2014-07-21 17:00 → 2014-07-22 17:00 A (+1d) |  | 0% → 100% |  | baseline start none → 2014-07-16 08:00; baseline finish none → 2014-07-16 17:00 |
| 200 | Execute System Test | 2014-07-22 08:00 → 2014-07-23 08:00 A (+1d) | 2014-07-22 12:00 → 2014-07-23 17:00 A (+1d) | 0.5d → 1d | 0% → 100% |  | baseline start none → 2014-07-17 08:00; baseline finish none → 2014-07-17 12:00 |
| 201 | Fix bug System Test | 2014-07-22 13:00 → 2014-07-24 08:00 A (+2d) | 2014-07-22 17:00 → 2014-07-24 17:00 A (+2d) | 0.5d → 1d | 0% → 100% |  | baseline start none → 2014-07-17 13:00; baseline finish none → 2014-07-17 17:00 |
| 202 | **Execute Test Part 2** | 2014-07-30 08:00 → 2014-07-25 08:00 A (-5d) | 2014-08-04 17:00 → 2014-07-31 17:00 (-4d) | 4d → 5d | 0% → 100% |  | baseline start none → 2014-07-23 08:00; baseline finish none → 2014-07-29 17:00 |
| 203 | Execute Integration Test | 2014-07-31 08:00 → 2014-07-25 08:00 A (-6d) | 2014-07-31 17:00 → 2014-07-25 17:00 A (-6d) |  | 0% → 100% | Fix bug Unit Test → 183 | baseline start none → 2014-07-22 13:00; baseline finish none → 2014-07-23 12:00 |
| 204 | Fix bug Integration Test | 2014-08-01 08:00 → 2014-07-28 08:00 A (-4d) | 2014-08-01 12:00 → 2014-07-28 17:00 A (-4d) | 0.5d → 1d | 0% → 100% |  | baseline start none → 2014-07-23 13:00; baseline finish none → 2014-07-24 12:00 |
| 205 | Execute System Test | 2014-08-01 13:00 → 2014-07-29 08:00 A (-3d) | 2014-08-01 17:00 → 2014-07-29 17:00 A (-3d) | 0.5d → 1d | 0% → 100% |  | baseline start none → 2014-07-24 13:00; baseline finish none → 2014-07-25 12:00 |
| 206 | Fix bug System Test | 2014-08-04 08:00 → 2014-07-30 08:00 A (-5d) | 2014-08-04 12:00 → 2014-07-30 17:00 A (-5d) | 0.5d → 1d | 0% → 100% |  | resources NamLD → NamLD; DatPT; baseline start none → 2014-07-25 13:00; baseline finish none → 2014-07-29 12:00 |
| 207 | Complete Testing | 2014-08-04 08:00 → 2014-07-31 08:00 A (-4d) | 2014-08-04 08:00 → 2014-07-31 08:00 A (-4d) |  | 0% → 100% | 205 → 206 | baseline start none → 2014-07-29 13:00; baseline finish none → 2014-07-29 13:00 |
| 209 | Create report no.6 -Software User's Manual | 2014-08-05 08:00 → 2014-08-01 08:00 A (-4d) | 2014-08-06 12:00 → 2014-08-05 17:00 A (-1d) | 1.5d → 3d | 0% → 100% | 205 → 205, 207 | resources NamLD → NamLD; DatPT; MinhPT; TuanNN; baseline start none → 2014-07-29 13:00; baseline finish none → 2014-07-31 12:00 |
| 210 | Submit report no.6 First version | 2014-08-07 13:00 → 2014-08-06 08:00 A (-1d) | 2014-08-07 13:00 → 2014-08-06 08:00 A (-1d) |  | 0% → 100% |  | baseline start none → 2014-07-31 13:00; baseline finish none → 2014-07-31 13:00 |
| 211 | Review & update report no.6 | 2014-08-07 13:00 → 2014-08-07 08:00 A | 2014-08-07 17:00 A | 0.5d → 1d | 0% → 100% |  | resources NamLD → NamLD; DatPT; MinhPT; TuanNN; baseline start none → 2014-07-31 13:00; baseline finish none → 2014-08-01 12:00 |
| 212 | Progress Report 6 | 2014-08-08 08:00 A | 2014-08-08 12:00 → 2014-08-08 17:00 A | 0.5d → 1d | 0% → 100% |  | resources TuanNN → TuanNN; NamLD; DatPT; MinhPT; baseline start none → 2014-08-01 13:00; baseline finish none → 2014-08-04 12:00 |
| 213 | Submit report no.6 final version | 2014-08-08 08:00 → 2014-08-11 08:00 A (+3d) | 2014-08-08 08:00 → 2014-08-11 08:00 A (+3d) |  | 0% → 100% | 211 → 211, 212 | baseline start none → 2014-08-04 13:00; baseline finish none → 2014-08-04 13:00 |
| 215 | Submit Final document and CD Source Code | 2014-08-08 08:00 → 2014-08-21 08:00 A (+13d) | 2014-08-08 12:00 → 2014-08-21 12:00 A (+13d) |  | 0% → 100% | 213 → 213, 214 | was named Submit the last document and CD source code; resources Project Team → NamLD; DatPT; MinhPT; TuanNN; baseline start none → 2014-08-11 13:00; baseline finish none → 2014-08-11 17:00 |
| 216 | **Termination** | 2014-08-11 08:00 → 2014-08-22 08:00 A (+11d) | 2014-08-22 17:00 → 2014-08-30 17:00 (+8d) | 10d → 7d | 0% → 83% |  | was named Transition; baseline start none → 2014-08-12 08:00; baseline finish none → 2014-08-22 17:00 |
| 217 | **Preclosing** | 2014-08-11 08:00 → 2014-08-22 08:00 A (+11d) | 2014-08-18 17:00 → 2014-08-25 17:00 A (+7d) | 6d → 2d | 0% → 100% |  | baseline start none → 2014-08-12 08:00; baseline finish none → 2014-08-18 17:00 |
| 218 | Conduct project review-lessons learned | 2014-08-11 08:00 → 2014-08-22 08:00 A (+11d) | 2014-08-12 17:00 → 2014-08-25 17:00 A (+13d) |  | 0% → 100% | 213 → 215 | resources Project Team → DatPT; MinhPT; NamLD; TuanNN; baseline start none → 2014-08-12 08:00; baseline finish none → 2014-08-13 17:00 |
| 219 | **Closing** | 2014-08-18 08:00 → 2014-08-26 08:00 A (+8d) | 2014-08-22 17:00 → 2014-08-30 17:00 (+8d) |  | 0% → 75% |  | baseline start none → 2014-08-18 08:00; baseline finish none → 2014-08-22 17:00 |
| 220 | Prepare for presentation | 2014-08-18 08:00 → 2014-08-26 08:00 A (+8d) | 2014-08-19 17:00 → 2014-08-28 17:00 A (+9d) | 2d → 3d | 0% → 100% |  | resources Project Team → DatPT; MinhPT; NamLD; TuanNN; baseline start none → 2014-08-19 08:00; baseline finish none → 2014-08-20 12:00 |
| 221 | Represent capstone project and completed | 2014-08-20 08:00 → 2014-08-30 08:00 (+10d) | 2014-08-21 17:00 → 2014-08-30 17:00 (+9d) | 2d → 1d |  |  | was named Represent capstone project; resources Project Team → DatPT; MinhPT; NamLD; TuanNN; baseline start none → 2014-08-20 13:00; baseline finish none → 2014-08-22 12:00 |

## Version 5 (saved 2014-08-12, file UJD_VN_Project_Schedule_v1.0.mpp)

Last finish 2014-08-30 → 2014-08-29 (-1d).

Changed:

| ID | Task | Start | Finish | Duration | Total float |
| --- | --- | --- | --- | --- | --- |
| 1 | **UJD_VN** |  | 2014-08-30 17:00 → 2014-08-29 17:00 (-1d) | 81d → 80d | none → 0d |
| 2 | **Initiation** |  | 2014-05-30 17:00 → 2014-05-30 08:00 | 15d → 14d | 0d → 66d |
| 6 | **Develop report no.1: Introduction** |  | 2014-05-20 17:00 → 2014-05-20 08:00 A | 6d → 5d |  |
| 16 | **Technologies** |  | 2014-05-27 17:00 → 2014-05-27 12:00 A | 9d → 8.5d |  |
| 20 | **Requirements** |  | 2014-05-30 17:00 → 2014-05-30 08:00 A | 9d → 8d |  |
| 25 | **Develop Project Plan** | 2014-05-20 08:00 → 2014-05-20 10:00 A | 2014-05-30 17:00 → 2014-05-30 08:00 | 9d → 7.75d | none → 66d |
| 30 | **Develop report no.2: Project management Plan** | 2014-05-24 08:00 → 2014-05-26 08:00 A (+2d) | 2014-05-30 17:00 → 2014-05-30 08:00 | 6d → 4d | none → 66d |
| 37 | **Solution** |  | 2014-07-03 17:00 → 2014-07-03 12:00 | 24d → 23.5d | none → 41.5d |
| 38 | **Project Management** |  | 2014-06-04 17:00 → 2014-06-03 17:00 A (-1d) | 3d → 2d |  |
| 48 | **Software Requirements Specification** |  | 2014-06-20 17:00 → 2014-06-20 15:00 | 10d → 9.75d | none → 50.25d |
| 49 | **Functional Requirement Specification** |  | 2014-06-20 17:00 → 2014-06-20 10:00 A | 10d → 9.25d |  |
| 65 | **Search Module** |  | 2014-06-12 17:00 → 2014-06-12 12:00 A | 3d → 2.5d |  |
| 75 | **Part 2** | 2014-06-16 08:00 → 2014-06-17 08:00 A (+1d) | 2014-06-20 17:00 → 2014-06-20 10:00 A | 5d → 3.25d |  |
| 90 | **Design** |  | 2014-07-01 17:00 → 2014-06-30 15:00 (-1d) | 17d → 15.75d | none → 44.25d |
| 97 | **Detailed Design** |  | 2014-07-01 17:00 → 2014-06-26 17:00 A (-5d) | 16d → 13d |  |
| 119 | **Search Module** |  | 2014-06-19 17:00 → 2014-06-17 12:00 A (-2d) | 5d → 2.5d |  |
| 129 | **Part 2** | 2014-06-19 08:00 → 2014-06-19 13:00 A |  | 6d → 5.5d |  |
| 141 | **Coding and Unit Test** |  | 2014-07-03 17:00 → 2014-07-03 12:00 A | 9d → 8.5d |  |
| 142 | **Part 1** |  | 2014-07-03 17:00 → 2014-07-03 12:00 A | 9d → 8.5d |  |
| 153 | **Testing** | 2014-06-16 08:00 → 2014-06-16 13:00 A | 2014-07-01 17:00 → 2014-06-28 17:00 (-3d) | 12d → 9.5d | none → 45d |
| 158 | **Create Test Case** | 2014-06-23 08:00 → 2014-06-23 13:00 A |  | 6d → 4.5d |  |
| 160 | **Construction** |  | 2014-08-21 17:00 → 2014-08-21 12:00 | 35d → 34.5d | none → 6.5d |
| 161 | **Requirements & Design** |  | 2014-07-08 17:00 → 2014-07-04 10:00 A (-4d) | 3d → 0.25d |  |
| 164 | **Part 1 (Continue)** |  | 2014-07-16 17:00 → 2014-07-15 17:00 A (-1d) | 9d → 8d |  |
| 166 | **Search Module** |  | 2014-07-16 17:00 → 2014-07-15 17:00 A (-1d) | 7d → 6d |  |
| 176 | **Part 2** | 2014-07-15 08:00 → 2014-07-16 08:00 A (+1d) |  | 8d → 7d |  |
| 184 | **Testing** |  | 2014-08-01 17:00 → 2014-07-31 12:00 (-1d) | 20d → 18.5d | none → 21.5d |
| 185 | **Create test documents (Continue)** |  | 2014-07-16 17:00 → 2014-07-16 08:00 | 8d → 7d | none → 33d |
| 186 | **Create test cases** |  | 2014-07-09 17:00 → 2014-07-09 12:00 A | 3d → 2.5d |  |
| 196 | **Execute test** |  | 2014-07-31 17:00 → 2014-07-31 12:00 A | 11d → 10.5d |  |
| 202 | **Execute Test Part 2** |  | 2014-07-31 17:00 → 2014-07-30 17:00 A (-1d) | 5d → 4d |  |
| 216 | **Termination** |  | 2014-08-30 17:00 → 2014-08-29 17:00 (-1d) | 7d → 6d | none → 0d |
| 219 | **Closing** |  | 2014-08-30 17:00 → 2014-08-29 17:00 (-1d) | 5d → 4d | none → 0d |
| 221 | Represent capstone project and completed | 2014-08-30 08:00 → 2014-08-29 08:00 (-1d) | 2014-08-30 17:00 → 2014-08-29 17:00 (-1d) |  | none → 0d |
